# Extension of the Existing Rail Monitoring System in HEET

How a schedule from Primavera P6 changed from version to version. A marks actual dates.

## Version 1 (data date 2026-11-16, saved 2026-11-23)

Note of the change: Remove MGT-1070 progress reporting LOE

| ID | WBS | Task | Duration | Start | Finish | Predecessors | Total float | Constraint |
| --- | --- | --- | --- | --- | --- | --- | --- | --- |
|  | 1.1 | **Project Milestones** |  | 2026-11-16 | 2027-11-15 |  |  |  |
| MS-001 |  | NTP - Notice to Proceed (16-Nov-2026; re-base if the actual NTP differs) | 0d | 2026-11-16 | 2026-11-16 |  | 0d | start on or after 2026-11-16 |
| MS-010 |  | Stage 1 complete - mobilization done, IFC approved & submittals issued | 0d | 2027-03-30 | 2027-03-30 | SUD-1010, SUD-1020, SUD-1035, MOB-1040, APR-1560, APR-1510, APR-1520, APR-1530, APR-1540, APR-1550 | 129d |  |
| MS-070 |  | Stage 2 complete - procurement, construction & installation complete | 0d | 2027-10-04 | 2027-10-04 | CIV-540, TDR-3520, WX-3620, COM-3720, CLD-3820, INT-4010, PWR-3430, MS-010, TST-4110, CIV-140, CIV-240, CIV-340, CIV-440 | 0d |  |
| MS-100 |  | Stage 3 complete - commissioning & performance validation complete | 0d | 2027-11-01 | 2027-11-01 | CMS-4320 | 3d |  |
| MS-120 |  | Taking-Over - planned completion (contract limit 15-Nov-2027 = NTP + 12 months) | 0d | 2027-11-15 | 2027-11-15 | HND-5090 | 0d |  |
| MS-130 |  | DLP Start - 12-month defects liability period begins at Taking-Over (BoQ item 29; no activity, no cost) | 0d | 2027-11-15 | 2027-11-15 | MS-120 | 0d |  |
|  | 1.2 | **PRELIMINARIES & GENERAL REQUIREMENTS** |  | 2026-11-16 | 2027-11-15 |  |  |  |
| MGT-1060 |  | Project management, QA/QC & HSE supervision and records (LOE) | 251d | 2026-11-16 | 2027-11-15 | MOB-1010 SS, HND-5090 FF | 0d |  |
| MOB-1010 |  | Kick-off meeting & project management set-up | 2d | 2026-11-16 | 2026-11-17 | MS-001 | 0d |  |
| MGT-1090 |  | Obtain SAR risk scores & confirm Section priority (SAR input) | 3d | 2026-11-18 | 2026-11-22 | MOB-1010 | 71d |  |
| MOB-1020 |  | Insurance (CAR / TPL) & performance bond issuance | 4d | 2026-11-18 | 2026-11-23 | MOB-1010 | 0d |  |
| MOB-1030 |  | PTS training & PO induction - batch 1 (initial team) | 3d | 2026-11-18 | 2026-11-22 | MOB-1010 | 2d |  |
| MOB-1050 |  | Site security, fencing & traffic management - mobilization & design period (LOE) | 90d | 2026-12-13 | 2027-04-22 | MOB-1040 SS, MOB-3010 FF | 0d |  |
| MOB-1080 |  | Protection Officer on site - mobilization & design period (LOE) | 90d | 2026-12-13 | 2027-04-22 | MOB-1040 SS, MOB-3010 FF | 0d |  |
| MOB-3005 |  | PTS training & PO induction - batch 2 (field crews) | 3d | 2026-12-14 | 2026-12-16 | APR-1520 | 81d |  |
| MOB-1051 |  | Site security, fencing & traffic management - construction period (LOE) | 102d | 2027-04-25 | 2027-09-19 | CIV-110 SS, CAB-560 FF | 0d |  |
| MOB-1081 |  | Protection Officer on site - construction period (LOE) | 102d | 2027-04-25 | 2027-09-19 | CIV-110 SS, CAB-560 FF | 0d |  |
| MOB-1052 |  | Site security, fencing & traffic management - testing & commissioning period (LOE) | 20d | 2027-10-05 | 2027-11-01 | TST-4210 SS, CMS-4320 FF | 0d |  |
| MOB-1082 |  | Protection Officer on site - testing & commissioning period (LOE) | 20d | 2027-10-05 | 2027-11-01 | TST-4210 SS, CMS-4320 FF | 0d |  |
| MOB-1053 |  | Site security, fencing & traffic management - handover period (LOE) | 10d | 2027-11-02 | 2027-11-15 | DOC-5010 SS, HND-5090 FF | 0d |  |
| MOB-1083 |  | Protection Officer on site - handover period (LOE) | 10d | 2027-11-02 | 2027-11-15 | DOC-5010 SS, HND-5090 FF | 0d |  |
|  | 1.2.1 | **Site Mobilization, Establishment & Demobilization** |  | 2026-12-13 | 2027-11-08 |  |  |  |
| MOB-1040 |  | Site establishment - offices & temporary facilities | 8d | 2026-12-13 | 2026-12-22 | PRM-1120 | 77d |  |
| MOB-3010 |  | Mobilize plant, equipment & labour; compound & logistics set-up | 5d | 2027-04-18 | 2027-04-22 | PRM-2120, APR-1520, APR-1510, SUD-1055, MOB-1040, MOB-3005 | 0d |  |
| DEM-5100 |  | Demobilization & site clearance | 5d | 2027-11-02 | 2027-11-08 | DOC-5040, CMS-4320 | 4d |  |
|  | 1.3 | **PROJECT START-UP DOCUMENTS & APPROVALS (Contract cl. 4.2, 5, 8, 10, 13)** |  | 2026-11-16 | 2026-12-13 |  |  |  |
| SUD-1010 |  | Performance Security (10% on-demand bank guarantee) - confirm issue & submit to SAR (due before Effective Date) | 1d | 2026-11-16 | 2026-11-16 | MS-001 | 220d |  |
| SUD-1020 |  | Submit contractor licences & certificates (CR, tax, MISA) to SAR | 1d | 2026-11-16 | 2026-11-16 | MS-001 | 220d |  |
| SUD-1030 |  | Baseline programme (Primavera P6) - prepare & submit within 14 days of Effective Date | 8d | 2026-11-16 | 2026-11-25 | MS-001 | 204d |  |
| SUB-1410 |  | QA/QC Plan, HSE Plan & Project Execution Plan - prepare & submit | 5d | 2026-11-18 | 2026-11-24 | MOB-1010 | 87d |  |
| SUB-1420 |  | Method statements & ITPs (survey, trenching, cable laying, OTDR/splicing, track crossing, equipment) - prepare & submit | 8d | 2026-11-18 | 2026-11-29 | MOB-1010 | 72d |  |
| SUD-1050 |  | Key Personnel CVs, manpower & Saudization schedule - submit to SAR | 3d | 2026-11-18 | 2026-11-22 | MOB-1010 | 89d |  |
| SUD-1060 |  | Sub-contractor & supplier approval request (cl. 5.7.2) - prepare & submit | 5d | 2026-11-18 | 2026-11-24 | MOB-1010 | 44d |  |
| SUD-1055 |  | SAR approval - Key Personnel & manpower schedule | 14d | 2026-11-23 | 2026-12-06 | SUD-1050 | 132d |  |
| SUD-1040 |  | Insurance certificates (CAR, marine cargo, professional indemnity, plant) - submit to SAR | 1d | 2026-11-24 | 2026-11-24 | MOB-1020 | 0d |  |
| APR-1510 |  | SAR review & approval - QA/QC, HSE & Execution Plans | 14d | 2026-11-25 | 2026-12-08 | SUB-1410 | 130d |  |
| SUD-1065 |  | SAR prior written approval - sub-contractors & suppliers | 14d | 2026-11-25 | 2026-12-08 | SUD-1060 | 62d |  |
| SUD-1035 |  | SAR review & approval - baseline programme | 14d | 2026-11-26 | 2026-12-09 | SUD-1030 | 299d |  |
| APR-1520 |  | SAR review & approval - method statements & ITPs | 14d | 2026-11-30 | 2026-12-13 | SUB-1420 | 107d |  |
|  | 1.4 | **PERMITS & AUTHORITY APPROVALS (PA)** |  | 2026-11-25 | 2027-04-15 |  |  |  |
|  | 1.4.1 | **Permit 1 - Site Access & Survey (before Survey)** |  | 2026-11-25 | 2026-12-10 |  |  |  |
| PRM-1110 |  | Permit 1 - prepare & submit work permit request for site access & survey (Work Permit Portal) | 2d | 2026-11-25 | 2026-11-26 | MOB-1020, MOB-1030, SUD-1040 | 0d |  |
| PRM-1120 |  | SAR review & issue Permit 1 (site access & survey) | 14d | 2026-11-27 | 2026-12-10 | PRM-1110 | 2d |  |
|  | 1.4.2 | **Permit 2 - Start of Execution (after IFC approved)** |  | 2027-03-31 | 2027-04-15 |  |  |  |
| PRM-2110 |  | Permit 2 - prepare & submit work permit request for execution (route works, crossings, station works; TTF02, PICOP, PTS register) | 2d | 2027-03-31 | 2027-04-01 | APR-1560, APR-1520, MOB-1030 | 0d |  |
| PRM-2120 |  | SAR review & issue Permit 2 (start of execution) | 14d | 2027-04-02 | 2027-04-15 | PRM-2110 | 2d |  |
|  | 1.5 | **ENGINEERING (E)** |  | 2026-11-18 | 2027-04-21 |  |  |  |
|  | 1.5.1 | **Survey, Survey Report & Existing System Assessment** |  | 2026-12-13 | 2027-01-25 |  |  |  |
| SRV-1210 |  | Existing system, power capacity & shelter assessment (incl. data correlation) | 5d | 2026-12-13 | 2026-12-17 | PRM-1120 | 2d |  |
| SRV-1220 |  | Topographic survey, GPR utilities detection & dilapidation survey (5.5 km route) | 7d | 2026-12-13 | 2026-12-21 | PRM-1120 | 0d |  |
| SRV-1231 |  | Survey Report part A - TDR baseline report (existing system) | 20d | 2026-12-22 | 2027-01-18 | SRV-1210, SRV-1220 | 0d |  |
| SRV-1232 |  | Survey Report part B - DAS seismic baseline report (existing system) | 20d | 2026-12-22 | 2027-01-18 | SRV-1210, SRV-1220 | 0d |  |
| SRV-1233 |  | Survey Report part C - DSS strain baseline report (existing system) | 20d | 2026-12-22 | 2027-01-18 | SRV-1210, SRV-1220 | 0d |  |
| SRV-1234 |  | Survey Report part D - weather station data baseline report (existing system) | 20d | 2026-12-22 | 2027-01-18 | SRV-1210, SRV-1220 | 0d |  |
| SRV-1230 |  | Survey Report - compile baseline of existing system (topographic, GPR, dilapidation, TDR, DAS, DSS, weather) | 5d | 2027-01-19 | 2027-01-25 | SRV-1231, SRV-1232, SRV-1233, SRV-1234 | 0d |  |
|  | 1.5.2 | **Design & Engineering (Concept / Preliminary / Detailed-IFC)** |  | 2026-11-18 | 2027-03-30 |  |  |  |
|  | 1.5.2.1 | **Concept Design** |  | 2026-11-18 | 2027-02-09 |  |  |  |
|  | 1.5.2.1.1 | **Concept - Design** |  | 2026-11-18 | 2026-11-24 |  |  |  |
| DSN-1305 |  | Concept design - basis of design, route, system architecture & sizing | 5d | 2026-11-18 | 2026-11-24 | MOB-1010 | 44d |  |
|  | 1.5.2.1.2 | **Concept - Submittal (Contractor)** |  | 2027-01-26 | 2027-01-26 |  |  |  |
| SUB-1305 |  | Concept design package + Survey Report - submit to SAR | 1d | 2027-01-26 | 2027-01-26 | DSN-1305, SRV-1230 | 0d |  |
|  | 1.5.2.1.3 | **Concept - SAR Approval** |  | 2027-01-27 | 2027-02-09 |  |  |  |
| APR-1305 |  | SAR review & approval - Concept design & Survey Report | 14d | 2027-01-27 | 2027-02-09 | SUB-1305 | 0d |  |
|  | 1.5.2.2 | **Preliminary Design** |  | 2027-02-10 | 2027-03-02 |  |  |  |
|  | 1.5.2.2.1 | **Preliminary - Design** |  | 2027-02-10 | 2027-02-15 |  |  |  |
| DSN-1307 |  | Preliminary design - route & cable layout, power/shelter sizing, interfaces, quantity check | 4d | 2027-02-10 | 2027-02-15 | APR-1305 | 0d |  |
|  | 1.5.2.2.2 | **Preliminary - Submittal (Contractor)** |  | 2027-02-16 | 2027-02-16 |  |  |  |
| SUB-1307 |  | Preliminary design package - submit to SAR | 1d | 2027-02-16 | 2027-02-16 | DSN-1307 | 0d |  |
|  | 1.5.2.2.3 | **Preliminary - SAR Approval** |  | 2027-02-17 | 2027-03-02 |  |  |  |

| ID | WBS | Task | Duration | Start | Finish | Predecessors | Total float |
| --- | --- | --- | --- | --- | --- | --- | --- |
| APR-1307 |  | SAR review & approval - Preliminary design | 14d | 2027-02-17 | 2027-03-02 | SUB-1307 | 0d |
|  | 1.5.2.3 | **Detailed Design / IFC** |  | 2027-03-03 | 2027-03-30 |  |  |
|  | 1.5.2.3.1 | **Detailed / IFC - Design** |  | 2027-03-03 | 2027-03-15 |  |  |
| DSN-1310 |  | Detailed design - IFC drawings, specifications & calculations | 5d | 2027-03-03 | 2027-03-15 | APR-1307, MGT-1090 | 0d |
|  | 1.5.2.3.2 | **Detailed / IFC - Submittal (Contractor)** |  | 2027-03-16 | 2027-03-16 |  |  |
| DSN-1320 |  | IFC package QA check & submission to SAR | 1d | 2027-03-16 | 2027-03-16 | DSN-1310 | 0d |
|  | 1.5.2.3.3 | **Detailed / IFC - SAR Approval** |  | 2027-03-17 | 2027-03-30 |  |  |
| APR-1560 |  | SAR review & approval - IFC package (IFC approved) | 14d | 2027-03-17 | 2027-03-30 | DSN-1320 | 0d |
|  | 1.5.3 | **Other Engineering Submittals (Contractor)** |  | 2026-12-10 | 2027-04-07 |  |  |
| SUB-1490 |  | FAT procedures & test plans (TDR, cables, weather, comms, UPS, cloud hardware) | 6d | 2026-12-10 | 2026-12-17 | APR-1540 | 65d |
| SUB-1480 |  | Interface Control Document - existing 1.5 km system & iSiteCentral | 8d | 2026-12-20 | 2026-12-29 | SRV-1210 | 171d |
| SUB-1470 |  | Cybersecurity (NCA ECC-1/CSCC-1/OTCC-1, SAR OT/ICS) & local-cloud architecture design package | 10d | 2027-02-10 | 2027-02-24 | SRV-1210, APR-1305 | 72d |
| SUB-1495 |  | SAT, commissioning & performance-validation procedures | 6d | 2027-03-31 | 2027-04-07 | APR-1560 | 114d |
|  | 1.5.4 | **SAR Reviews & Approvals - Other Engineering** |  | 2026-12-18 | 2027-04-21 |  |  |
| APR-1660 |  | SAR review & approval - FAT procedures (SAR witness notice incl.) | 14d | 2026-12-18 | 2026-12-31 | SUB-1490 | 99d |
| APR-1650 |  | SAR / system-owner review & approval - Interface Control Document | 14d | 2026-12-30 | 2027-01-12 | SUB-1480 | 252d |
| APR-1620 |  | SAR IT/OT & cybersecurity review & approval - architecture design | 14d | 2027-02-25 | 2027-03-10 | SUB-1470 | 112d |
| APR-1670 |  | SAR review & approval - SAT/commissioning procedures | 14d | 2027-04-08 | 2027-04-21 | SUB-1495 | 166d |
|  | 1.6 | **PROCUREMENT (P)** |  | 2026-11-18 | 2027-05-06 |  |  |
|  | 1.6.1 | **Material Submittals (Contractor)** |  | 2026-11-18 | 2026-11-25 |  |  |
| SUB-1430 |  | Material submittal - DSS cable NZS-DSS-C02, 48-core FO cable, TDR coaxial cable | 5d | 2026-11-18 | 2026-11-24 | MOB-1010 | 44d |
| SUB-1440 |  | Material submittal - TDR system, weather station, comms modules/SIM, UPS & electrical panels, cloud hardware | 6d | 2026-11-18 | 2026-11-25 | MOB-1010 | 69d |
| SUB-1450 |  | Material submittal - FO closures, handholes/manholes, steel & rigid conduits, marker posts, sweet sand | 5d | 2026-11-18 | 2026-11-24 | MOB-1010 | 79d |
|  | 1.6.2 | **SAR Material Approvals** |  | 2026-11-25 | 2026-12-09 |  |  |
| APR-1530 |  | SAR review & approval - cable materials (DSS, FO, TDR coax) | 14d | 2026-11-25 | 2026-12-08 | SUB-1430 | 62d |
| APR-1550 |  | SAR review & approval - civil materials (closures, handholes, conduits, markers, sand) | 14d | 2026-11-25 | 2026-12-08 | SUB-1450 | 118d |
| APR-1540 |  | SAR review & approval - equipment materials (TDR, weather, comms, UPS/panels, cloud HW) | 14d | 2026-11-26 | 2026-12-09 | SUB-1440 | 98d |
|  | 1.6.3 | **LONG-LEAD ITEMS (LL) - PO, Manufacture, FAT, Shipping, Customs & Delivery** |  | 2026-12-09 | 2027-05-06 |  |  |
|  | 1.6.3.1 | **LL-01 DSS cable NZS-DSS-C02** |  | 2026-12-09 | 2027-03-12 |  |  |
| PRC-DSS10 |  | [LL-01] Place PO & supplier kick-off - DSS cable NZS-DSS-C02 (5,500 LM) | 3d | 2026-12-09 | 2026-12-13 | APR-1530, SUD-1065 | 44d |
| PRC-DSS20 |  | [LL-01] Manufacture / supply - DSS cable NZS-DSS-C02 (5,500 LM) | 56d | 2026-12-14 | 2027-02-07 | PRC-DSS10 | 61d |
| FAT-DSS |  | [LL-01] FAT at manufacturer - DSS cable NZS-DSS-C02 (5,500 LM) | 2d | 2027-02-08 | 2027-02-09 | PRC-DSS20, APR-1660 | 61d |
| PRC-DSS30 |  | [LL-01] Shipping / import - DSS cable NZS-DSS-C02 (5,500 LM) | 21d | 2027-02-10 | 2027-03-02 | FAT-DSS | 61d |
| PRC-DSS40 |  | [LL-01] Customs clearance & SABER conformity - DSS cable NZS-DSS-C02 (5,500 LM) | 7d | 2027-03-03 | 2027-03-09 | PRC-DSS30 | 61d |
| PRC-DSS50 |  | [LL-01] Delivery to site (Heet) - DSS cable NZS-DSS-C02 (5,500 LM) | 3d | 2027-03-10 | 2027-03-12 | PRC-DSS40 | 61d |
|  | 1.6.3.2 | **LL-02 48-core FO cable (DAS)** |  | 2026-12-09 | 2027-02-12 |  |  |
| PRC-FO10 |  | [LL-02] Place PO & supplier kick-off - Outdoor 48-core FO cable - DAS (5,500 LM) | 3d | 2026-12-09 | 2026-12-13 | APR-1530, SUD-1065 | 69d |
| PRC-FO20 |  | [LL-02] Manufacture / supply - Outdoor 48-core FO cable - DAS (5,500 LM) | 35d | 2026-12-14 | 2027-01-17 | PRC-FO10 | 103d |
| FAT-FO |  | [LL-02] FAT at manufacturer - Outdoor 48-core FO cable - DAS (5,500 LM) | 2d | 2027-01-18 | 2027-01-19 | PRC-FO20, APR-1660 | 103d |
| PRC-FO30 |  | [LL-02] Shipping / import - Outdoor 48-core FO cable - DAS (5,500 LM) | 14d | 2027-01-20 | 2027-02-02 | FAT-FO | 103d |
| PRC-FO40 |  | [LL-02] Customs clearance & SABER conformity - Outdoor 48-core FO cable - DAS (5,500 LM) | 7d | 2027-02-03 | 2027-02-09 | PRC-FO30 | 103d |
| PRC-FO50 |  | [LL-02] Delivery to site (Heet) - Outdoor 48-core FO cable - DAS (5,500 LM) | 3d | 2027-02-10 | 2027-02-12 | PRC-FO40 | 103d |
|  | 1.6.3.3 | **LL-03 TDR coaxial cable** |  | 2026-12-09 | 2027-02-05 |  |  |
| PRC-TDRC10 |  | [LL-03] Place PO & supplier kick-off - TDR coaxial cable (5,500 LM) | 3d | 2026-12-09 | 2026-12-13 | APR-1530, SUD-1065 | 84d |
| PRC-TDRC20 |  | [LL-03] Manufacture / supply - TDR coaxial cable (5,500 LM) | 28d | 2026-12-14 | 2027-01-10 | PRC-TDRC10 | 123d |
| FAT-TDRC |  | [LL-03] FAT at manufacturer - TDR coaxial cable (5,500 LM) | 2d | 2027-01-11 | 2027-01-12 | PRC-TDRC20, APR-1660 | 123d |
| PRC-TDRC30 |  | [LL-03] Shipping / import - TDR coaxial cable (5,500 LM) | 14d | 2027-01-13 | 2027-01-26 | FAT-TDRC | 123d |
| PRC-TDRC40 |  | [LL-03] Customs clearance & SABER conformity - TDR coaxial cable (5,500 LM) | 7d | 2027-01-27 | 2027-02-02 | PRC-TDRC30 | 123d |
| PRC-TDRC50 |  | [LL-03] Delivery to site (Heet) - TDR coaxial cable (5,500 LM) | 3d | 2027-02-03 | 2027-02-05 | PRC-TDRC40 | 123d |
|  | 1.6.3.4 | **LL-04 TDR system** |  | 2026-12-10 | 2027-03-23 |  |  |
| PRC-TDR10 |  | [LL-04] Place PO & supplier kick-off - TDR system (interrogator, antenna & accessories) | 3d | 2026-12-10 | 2026-12-14 | APR-1540, SUD-1065 | 112d |
| PRC-TDR20 |  | [LL-04] Manufacture / supply - TDR system (interrogator, antenna & accessories) | 70d | 2026-12-15 | 2027-02-22 | PRC-TDR10 | 169d |
| FAT-TDR |  | [LL-04] FAT at manufacturer - TDR system (interrogator, antenna & accessories) | 5d | 2027-02-23 | 2027-02-27 | PRC-TDR20, APR-1660 | 169d |
| PRC-TDR30 |  | [LL-04] Shipping / import - TDR system (interrogator, antenna & accessories) | 14d | 2027-02-28 | 2027-03-13 | FAT-TDR | 169d |
| PRC-TDR40 |  | [LL-04] Customs clearance & SABER conformity - TDR system (interrogator, antenna & accessories) | 7d | 2027-03-14 | 2027-03-20 | PRC-TDR30 | 169d |
| PRC-TDR50 |  | [LL-04] Delivery to site (Heet) - TDR system (interrogator, antenna & accessories) | 3d | 2027-03-21 | 2027-03-23 | PRC-TDR40 | 169d |
|  | 1.6.3.5 | **LL-05 Weather station sensors** |  | 2026-12-10 | 2027-02-13 |  |  |
| PRC-WX10 |  | [LL-05] Place PO & supplier kick-off - Weather station sensors | 3d | 2026-12-10 | 2026-12-14 | APR-1540, SUD-1065 | 143d |
| PRC-WX20 |  | [LL-05] Manufacture / supply - Weather station sensors | 35d | 2026-12-15 | 2027-01-18 | PRC-WX10 | 212d |
| FAT-WX |  | [LL-05] FAT at manufacturer - Weather station sensors | 2d | 2027-01-19 | 2027-01-20 | PRC-WX20, APR-1660 | 212d |
| PRC-WX30 |  | [LL-05] Shipping / import - Weather station sensors | 14d | 2027-01-21 | 2027-02-03 | FAT-WX | 212d |
| PRC-WX40 |  | [LL-05] Customs clearance & SABER conformity - Weather station sensors | 7d | 2027-02-04 | 2027-02-10 | PRC-WX30 | 212d |
| PRC-WX50 |  | [LL-05] Delivery to site (Heet) - Weather station sensors | 3d | 2027-02-11 | 2027-02-13 | PRC-WX40 | 212d |
|  | 1.6.3.6 | **LL-06 Communication modules & SIM** |  | 2026-12-10 | 2027-02-02 |  |  |
| PRC-COM10 |  | [LL-06] Place PO & supplier kick-off - Communication modules & SIM hardware | 3d | 2026-12-10 | 2026-12-14 | APR-1540, SUD-1065 | 151d |
| PRC-COM20 |  | [LL-06] Manufacture / supply - Communication modules & SIM hardware | 28d | 2026-12-15 | 2027-01-11 | PRC-COM10 | 224d |
| FAT-COM |  | [LL-06] FAT at manufacturer - Communication modules & SIM hardware | 2d | 2027-01-12 | 2027-01-13 | PRC-COM20, APR-1660 | 224d |
| PRC-COM30 |  | [LL-06] Shipping / import - Communication modules & SIM hardware | 10d | 2027-01-14 | 2027-01-23 | FAT-COM | 224d |
| PRC-COM40 |  | [LL-06] Customs clearance & SABER conformity - Communication modules & SIM hardware | 7d | 2027-01-24 | 2027-01-30 | PRC-COM30 | 224d |
| PRC-COM50 |  | [LL-06] Delivery to site (Heet) - Communication modules & SIM hardware | 3d | 2027-01-31 | 2027-02-02 | PRC-COM40 | 224d |

| ID | WBS | Task | Duration | Start | Finish | Predecessors | Total float |
| --- | --- | --- | --- | --- | --- | --- | --- |
|  | 1.6.3.7 | **LL-07 UPS & electrical panels** |  | 2026-12-10 | 2027-02-26 |  |  |
| PRC-PWR10 |  | [LL-07] Place PO & supplier kick-off - UPS (min. 4 h) & electrical panels | 3d | 2026-12-10 | 2026-12-14 | APR-1540, SUD-1065 | 122d |
| PRC-PWR20 |  | [LL-07] Manufacture / supply - UPS (min. 4 h) & electrical panels | 56d | 2026-12-15 | 2027-02-08 | PRC-PWR10 | 183d |
| FAT-PWR |  | [LL-07] FAT at manufacturer - UPS (min. 4 h) & electrical panels | 3d | 2027-02-09 | 2027-02-11 | PRC-PWR20, APR-1660 | 183d |
| PRC-PWR30 |  | [LL-07] Shipping / import - UPS (min. 4 h) & electrical panels | 7d | 2027-02-12 | 2027-02-18 | FAT-PWR | 183d |
| PRC-PWR40 |  | [LL-07] Customs clearance & SABER conformity - UPS (min. 4 h) & electrical panels | 5d | 2027-02-19 | 2027-02-23 | PRC-PWR30 | 183d |
| PRC-PWR50 |  | [LL-07] Delivery to site (Heet) - UPS (min. 4 h) & electrical panels | 3d | 2027-02-24 | 2027-02-26 | PRC-PWR40 | 183d |
|  | 1.6.3.8 | **LL-08 Local-cloud hardware (KSA)** |  | 2027-03-14 | 2027-05-06 |  |  |
| PRC-CLD10 |  | [LL-08] Place PO & supplier kick-off - Local-cloud hardware & licences (KSA hosted) | 3d | 2027-03-14 | 2027-03-16 | APR-1540, APR-1620, SUD-1065 | 75d |
| PRC-CLD20 |  | [LL-08] Manufacture / supply - Local-cloud hardware & licences (KSA hosted) | 28d | 2027-03-17 | 2027-04-13 | PRC-CLD10 | 111d |
| FAT-CLD |  | [LL-08] FAT at manufacturer - Local-cloud hardware & licences (KSA hosted) | 3d | 2027-04-14 | 2027-04-16 | PRC-CLD20, APR-1660 | 111d |
| PRC-CLD30 |  | [LL-08] Shipping / import - Local-cloud hardware & licences (KSA hosted) | 10d | 2027-04-17 | 2027-04-26 | FAT-CLD | 111d |
| PRC-CLD40 |  | [LL-08] Customs clearance & SABER conformity - Local-cloud hardware & licences (KSA hosted) | 7d | 2027-04-27 | 2027-05-03 | PRC-CLD30 | 111d |
| PRC-CLD50 |  | [LL-08] Delivery to site (Heet) - Local-cloud hardware & licences (KSA hosted) | 3d | 2027-05-04 | 2027-05-06 | PRC-CLD40 | 111d |
|  | 1.6.3.9 | **LL-09 FO closures & accessories** |  | 2026-12-09 | 2027-02-03 |  |  |
| PRC-CLS10 |  | [LL-09] Place PO & supplier kick-off - FO closures, splice trays, connectors & pigtails | 3d | 2026-12-09 | 2026-12-13 | APR-1550, SUD-1065 | 79d |
| PRC-CLS20 |  | [LL-09] Manufacture / supply - FO closures, splice trays, connectors & pigtails | 28d | 2026-12-14 | 2027-01-10 | PRC-CLS10 | 118d |
| PRC-CLS30 |  | [LL-09] Shipping / import - FO closures, splice trays, connectors & pigtails | 14d | 2027-01-11 | 2027-01-24 | PRC-CLS20 | 118d |
| PRC-CLS40 |  | [LL-09] Customs clearance & SABER conformity - FO closures, splice trays, connectors & pigtails | 7d | 2027-01-25 | 2027-01-31 | PRC-CLS30 | 118d |
| PRC-CLS50 |  | [LL-09] Delivery to site (Heet) - FO closures, splice trays, connectors & pigtails | 3d | 2027-02-01 | 2027-02-03 | PRC-CLS40 | 118d |
|  | 1.6.4 | **Standard / Local Items - PO, Supply & Delivery (handholes, conduits, marker posts, sweet sand)** |  | 2026-12-09 | 2027-01-06 |  |  |
| PRC-CND10 |  | Place PO & supplier kick-off - Steel & rigid conduits | 3d | 2026-12-09 | 2026-12-13 | APR-1550, SUD-1065 | 89d |
| PRC-HH10 |  | Place PO & supplier kick-off - Handholes & manholes (precast) | 3d | 2026-12-09 | 2026-12-13 | APR-1550, SUD-1065 | 84d |
| PRC-MRK10 |  | Place PO & supplier kick-off - Marker posts, warning tape & route markers | 3d | 2026-12-09 | 2026-12-13 | APR-1550, SUD-1065 | 190d |
| PRC-SND10 |  | Arrange sweet-sand source, approval & stockpile at site | 7d | 2026-12-09 | 2026-12-15 | APR-1550 | 130d |
| PRC-CND20 |  | Manufacture / supply - Steel & rigid conduits | 14d | 2026-12-14 | 2026-12-27 | PRC-CND10 | 131d |
| PRC-HH20 |  | Manufacture / supply - Handholes & manholes (precast) | 21d | 2026-12-14 | 2027-01-03 | PRC-HH10 | 124d |
| PRC-MRK20 |  | Manufacture / supply - Marker posts, warning tape & route markers | 14d | 2026-12-14 | 2026-12-27 | PRC-MRK10 | 277d |
| PRC-CND50 |  | Delivery to site (Heet) - Steel & rigid conduits | 3d | 2026-12-28 | 2026-12-30 | PRC-CND20 | 131d |
| PRC-MRK50 |  | Delivery to site (Heet) - Marker posts, warning tape & route markers | 3d | 2026-12-28 | 2026-12-30 | PRC-MRK20 | 277d |
| PRC-HH50 |  | Delivery to site (Heet) - Handholes & manholes (precast) | 3d | 2027-01-04 | 2027-01-06 | PRC-HH20 | 124d |
|  | 1.7 | **CONSTRUCTION (C)** |  | 2027-04-25 | 2027-10-04 |  |  |
|  | 1.7.2 | **Enabling Works by Section (SoW 7): Civil, Cables, Splicing & Testing - risk-ranked** |  | 2027-04-25 | 2027-09-20 |  |  |
|  | 1.7.2.1 | **Section 1 (KP 0+000 to 1+100) - Civil Works, Cables Installation, Splicing & Testing** |  | 2027-04-25 | 2027-06-16 |  |  |
| CIV-110 |  | Section 1 - excavate trench (800x200 mm) & sweet-sand bedding, 1,100 LM | 12d | 2027-04-25 | 2027-05-10 | MOB-3010, PRC-SND10, MGT-1090 | 0d |
| CIV-120 |  | Section 1 - handholes / manholes installation | 2d | 2027-05-11 | 2027-05-12 | CIV-110, PRC-HH50 | 0d |
| CIV-130 |  | Section 1 - steel & rigid conduits at culverts / track crossings | 2d | 2027-05-11 | 2027-05-12 | CIV-110, PRC-CND50, PRM-2120 | 0d |
| CAB-110 |  | Section 1 - Layer 1: lay DSS cable, pre-installed connectors, OTDR test | 4d | 2027-05-13 | 2027-05-24 | CIV-120, CIV-130, PRC-DSS50 | 0d |
| CAB-120 |  | Section 1 - backfill & compaction - layer 1 | 2d | 2027-05-25 | 2027-05-26 | CAB-110 | 0d |
| CAB-130 |  | Section 1 - Layer 2: pull 48-core FO cable (DAS), OTDR test | 4d | 2027-05-27 | 2027-06-01 | CAB-120, PRC-FO50 | 0d |
| SPL-110 |  | Section 1 - fusion splicing (<=0.1 dB), FO closures & OTDR splice-loss test | 3d | 2027-06-02 | 2027-06-06 | CAB-130, PRC-CLS50 | 0d |
| CAB-140 |  | Section 1 - backfill & compaction - layer 2 | 2d | 2027-06-07 | 2027-06-08 | SPL-110 | 0d |
| CAB-150 |  | Section 1 - Layer 3: lay TDR coaxial cable, continuity test | 3d | 2027-06-09 | 2027-06-13 | CAB-140, PRC-TDRC50 | 0d |
| CAB-160 |  | Section 1 - final backfill, compaction & reinstatement | 2d | 2027-06-14 | 2027-06-15 | CAB-150 | 0d |
| CIV-140 |  | Section 1 - marker posts, warning tape & route markers | 1d | 2027-06-16 | 2027-06-16 | CAB-160, PRC-MRK50 | 77d |
| TST-110 |  | Section 1 - final OTDR certification & test record | 1d | 2027-06-16 | 2027-06-16 | CAB-160 | 75d |
|  | 1.7.2.2 | **Section 2 (KP 1+100 to 2+200) - Civil Works, Cables Installation, Splicing & Testing** |  | 2027-05-11 | 2027-07-04 |  |  |
| CIV-210 |  | Section 2 - excavate trench (800x200 mm) & sweet-sand bedding, 1,100 LM | 12d | 2027-05-11 | 2027-06-01 | CIV-110 | 18d |
| CIV-220 |  | Section 2 - handholes / manholes installation | 2d | 2027-06-02 | 2027-06-03 | CIV-210, PRC-HH50 | 18d |
| CIV-230 |  | Section 2 - steel & rigid conduits at culverts / track crossings | 2d | 2027-06-02 | 2027-06-03 | CIV-210, PRC-CND50, PRM-2120 | 18d |
| CAB-210 |  | Section 2 - Layer 1: lay DSS cable, pre-installed connectors, OTDR test | 4d | 2027-06-06 | 2027-06-09 | CIV-220, CIV-230, PRC-DSS50, CAB-110 | 18d |
| CAB-220 |  | Section 2 - backfill & compaction - layer 1 | 2d | 2027-06-10 | 2027-06-13 | CAB-210 | 18d |
| CAB-230 |  | Section 2 - Layer 2: pull 48-core FO cable (DAS), OTDR test | 4d | 2027-06-14 | 2027-06-17 | CAB-220, PRC-FO50, CAB-130 | 18d |
| SPL-210 |  | Section 2 - fusion splicing (<=0.1 dB), FO closures & OTDR splice-loss test | 3d | 2027-06-20 | 2027-06-22 | CAB-230, PRC-CLS50 | 18d |
| CAB-240 |  | Section 2 - backfill & compaction - layer 2 | 2d | 2027-06-23 | 2027-06-24 | SPL-210 | 18d |
| CAB-250 |  | Section 2 - Layer 3: lay TDR coaxial cable, continuity test | 3d | 2027-06-27 | 2027-06-29 | CAB-240, PRC-TDRC50, CAB-150 | 18d |
| CAB-260 |  | Section 2 - final backfill, compaction & reinstatement | 2d | 2027-06-30 | 2027-07-01 | CAB-250 | 18d |
| CIV-240 |  | Section 2 - marker posts, warning tape & route markers | 1d | 2027-07-04 | 2027-07-04 | CAB-260, PRC-MRK50 | 65d |
| TST-210 |  | Section 2 - final OTDR certification & test record | 1d | 2027-07-04 | 2027-07-04 | CAB-260 | 63d |
|  | 1.7.2.3 | **Section 3 (KP 2+200 to 3+300) - Civil Works, Cables Installation, Splicing & Testing** |  | 2027-06-16 | 2027-08-03 |  |  |
| CIV-310 |  | Section 3 - excavate trench (800x200 mm) & sweet-sand bedding, 1,100 LM | 12d | 2027-06-16 | 2027-07-01 | CIV-110, CAB-160 | 0d |
| CIV-320 |  | Section 3 - handholes / manholes installation | 2d | 2027-07-04 | 2027-07-05 | CIV-310, PRC-HH50 | 0d |
| CIV-330 |  | Section 3 - steel & rigid conduits at culverts / track crossings | 2d | 2027-07-04 | 2027-07-05 | CIV-310, PRC-CND50, PRM-2120 | 0d |
| CAB-310 |  | Section 3 - Layer 1: lay DSS cable, pre-installed connectors, OTDR test | 4d | 2027-07-06 | 2027-07-11 | CIV-320, CIV-330, PRC-DSS50, CAB-210 | 0d |
| CAB-320 |  | Section 3 - backfill & compaction - layer 1 | 2d | 2027-07-12 | 2027-07-13 | CAB-310 | 0d |
| CAB-330 |  | Section 3 - Layer 2: pull 48-core FO cable (DAS), OTDR test | 4d | 2027-07-14 | 2027-07-19 | CAB-320, PRC-FO50, CAB-230 | 0d |
| SPL-310 |  | Section 3 - fusion splicing (<=0.1 dB), FO closures & OTDR splice-loss test | 3d | 2027-07-20 | 2027-07-22 | CAB-330, PRC-CLS50 | 0d |
| CAB-340 |  | Section 3 - backfill & compaction - layer 2 | 2d | 2027-07-25 | 2027-07-26 | SPL-310 | 0d |
| CAB-350 |  | Section 3 - Layer 3: lay TDR coaxial cable, continuity test | 3d | 2027-07-27 | 2027-07-29 | CAB-340, PRC-TDRC50, CAB-250 | 0d |
| CAB-360 |  | Section 3 - final backfill, compaction & reinstatement | 2d | 2027-08-01 | 2027-08-02 | CAB-350 | 0d |

| ID | WBS | Task | Duration | Start | Finish | Predecessors | Total float |
| --- | --- | --- | --- | --- | --- | --- | --- |
| CIV-340 |  | Section 3 - marker posts, warning tape & route markers | 1d | 2027-08-03 | 2027-08-03 | CAB-360, PRC-MRK50 | 43d |
| TST-310 |  | Section 3 - final OTDR certification & test record | 1d | 2027-08-03 | 2027-08-03 | CAB-360 | 41d |
|  | 1.7.2.4 | **Section 4 (KP 3+300 to 4+400) - Civil Works, Cables Installation, Splicing & Testing** |  | 2027-07-04 | 2027-08-19 |  |  |
| CIV-410 |  | Section 4 - excavate trench (800x200 mm) & sweet-sand bedding, 1,100 LM | 12d | 2027-07-04 | 2027-07-19 | CIV-210, CAB-260 | 18d |
| CIV-420 |  | Section 4 - handholes / manholes installation | 2d | 2027-07-20 | 2027-07-21 | CIV-410, PRC-HH50 | 18d |
| CIV-430 |  | Section 4 - steel & rigid conduits at culverts / track crossings | 2d | 2027-07-20 | 2027-07-21 | CIV-410, PRC-CND50, PRM-2120 | 18d |
| CAB-410 |  | Section 4 - Layer 1: lay DSS cable, pre-installed connectors, OTDR test | 4d | 2027-07-22 | 2027-07-27 | CIV-420, CIV-430, PRC-DSS50, CAB-310 | 18d |
| CAB-420 |  | Section 4 - backfill & compaction - layer 1 | 2d | 2027-07-28 | 2027-07-29 | CAB-410 | 18d |
| CAB-430 |  | Section 4 - Layer 2: pull 48-core FO cable (DAS), OTDR test | 4d | 2027-08-01 | 2027-08-04 | CAB-420, PRC-FO50, CAB-330 | 18d |
| SPL-410 |  | Section 4 - fusion splicing (<=0.1 dB), FO closures & OTDR splice-loss test | 3d | 2027-08-05 | 2027-08-09 | CAB-430, PRC-CLS50 | 19d |
| CAB-440 |  | Section 4 - backfill & compaction - layer 2 | 2d | 2027-08-10 | 2027-08-11 | SPL-410 | 19d |
| CAB-450 |  | Section 4 - Layer 3: lay TDR coaxial cable, continuity test | 3d | 2027-08-12 | 2027-08-16 | CAB-440, PRC-TDRC50, CAB-350 | 19d |
| CAB-460 |  | Section 4 - final backfill, compaction & reinstatement | 2d | 2027-08-17 | 2027-08-18 | CAB-450 | 29d |
| CIV-440 |  | Section 4 - marker posts, warning tape & route markers | 1d | 2027-08-19 | 2027-08-19 | CAB-460, PRC-MRK50 | 31d |
| TST-410 |  | Section 4 - final OTDR certification & test record | 1d | 2027-08-19 | 2027-08-19 | CAB-460 | 29d |
|  | 1.7.2.5 | **Section 5 (KP 4+400 to 5+500) - Civil Works, Cables Installation, Splicing & Testing** |  | 2027-08-03 | 2027-09-20 |  |  |
| CIV-510 |  | Section 5 - excavate trench (800x200 mm) & sweet-sand bedding, 1,100 LM | 12d | 2027-08-03 | 2027-08-18 | CIV-310, CAB-360 | 0d |
| CIV-520 |  | Section 5 - handholes / manholes installation | 2d | 2027-08-19 | 2027-08-22 | CIV-510, PRC-HH50 | 0d |
| CIV-530 |  | Section 5 - steel & rigid conduits at culverts / track crossings | 2d | 2027-08-19 | 2027-08-22 | CIV-510, PRC-CND50, PRM-2120 | 0d |
| CAB-510 |  | Section 5 - Layer 1: lay DSS cable, pre-installed connectors, OTDR test | 4d | 2027-08-23 | 2027-08-26 | CIV-520, CIV-530, PRC-DSS50, CAB-410 | 0d |
| CAB-520 |  | Section 5 - backfill & compaction - layer 1 | 2d | 2027-08-29 | 2027-08-30 | CAB-510 | 0d |
| CAB-530 |  | Section 5 - Layer 2: pull 48-core FO cable (DAS), OTDR test | 4d | 2027-08-31 | 2027-09-05 | CAB-520, PRC-FO50, CAB-430 | 0d |
| SPL-510 |  | Section 5 - fusion splicing (<=0.1 dB), FO closures & OTDR splice-loss test | 3d | 2027-09-06 | 2027-09-08 | CAB-530, PRC-CLS50 | 0d |
| CAB-540 |  | Section 5 - backfill & compaction - layer 2 | 2d | 2027-09-09 | 2027-09-12 | SPL-510 | 0d |
| CAB-550 |  | Section 5 - Layer 3: lay TDR coaxial cable, continuity test | 3d | 2027-09-13 | 2027-09-15 | CAB-540, PRC-TDRC50, CAB-450 | 0d |
| CAB-560 |  | Section 5 - final backfill, compaction & reinstatement | 2d | 2027-09-16 | 2027-09-19 | CAB-550 | 7d |
| CIV-540 |  | Section 5 - marker posts, warning tape & route markers | 1d | 2027-09-20 | 2027-09-20 | CAB-560, PRC-MRK50 | 9d |
| TST-510 |  | Section 5 - final OTDR certification & test record | 1d | 2027-09-20 | 2027-09-20 | CAB-560 | 7d |
|  | 1.7.3 | **Station Power, Shelter & Field Systems (TDR, Weather, Comms)** |  | 2027-04-25 | 2027-09-21 |  |  |
| SHL-3410 |  | Shelter expansion - civil works (if required per assessment) | 8d | 2027-04-25 | 2027-05-04 | PRM-2120, APR-1560, MOB-3010 | 78d |
| PWR-3420 |  | Electrical installation - panels & power upgrade | 6d | 2027-05-05 | 2027-05-12 | SHL-3410, PRC-PWR50 | 78d |
| PWR-3430 |  | UPS installation & 4-hour autonomy test | 3d | 2027-05-13 | 2027-05-23 | PWR-3420 | 78d |
| COM-3710 |  | Communication modules installation | 2d | 2027-05-24 | 2027-05-25 | PRC-COM50, PWR-3430 | 82d |
| TDR-3510 |  | TDR system installation - interrogator & antenna | 5d | 2027-05-24 | 2027-05-30 | PRC-TDR50, PWR-3430 | 78d |
| WX-3610 |  | Weather station sensors installation | 3d | 2027-05-24 | 2027-05-26 | PRC-WX50, PWR-3430 | 81d |
| COM-3720 |  | SIM activation, alert & e-mail distribution configuration | 3d | 2027-05-26 | 2027-05-30 | COM-3710 | 82d |
| WX-3620 |  | Weather station integration with data logger | 3d | 2027-05-27 | 2027-05-31 | WX-3610 | 81d |
| TDR-3520 |  | TDR configuration, calibration & pre-commissioning | 4d | 2027-09-16 | 2027-09-21 | TDR-3510, CAB-550 | 0d |
|  | 1.7.4 | **Local Cloud, Cybersecurity & Integration Installation** |  | 2027-05-09 | 2027-10-04 |  |  |
| CLD-3810 |  | Local KSA cloud infrastructure - provisioning & set-up | 8d | 2027-05-09 | 2027-05-24 | PRC-CLD50, APR-1620 | 75d |
| CLD-3820 |  | Local KSA cloud infrastructure - hardening & connectivity | 8d | 2027-05-25 | 2027-06-03 | CLD-3810 | 77d |
| CYB-3920 |  | Cybersecurity controls implementation & hardening | 10d | 2027-05-25 | 2027-06-07 | CLD-3810, APR-1620 | 75d |
| INT-4010 |  | Integration with existing system & iSiteCentral - interfaces & data mapping | 8d | 2027-09-22 | 2027-10-04 | CLD-3820, APR-1650, TDR-3520, COM-3720, WX-3620 | 0d |
|  | 1.8 | **TESTING, COMMISSIONING & HANDOVER (TC)** |  | 2027-06-08 | 2027-11-15 |  |  |
|  | 1.8.1 | **Testing & Site Acceptance (OTDR, SAT, Integration, Cyber Audit)** |  | 2027-06-08 | 2027-10-11 |  |  |
| CYB-3930 |  | Third-party cybersecurity audit | 10d | 2027-06-08 | 2027-06-21 | CYB-3920, CLD-3820 | 75d |
| CYB-3940 |  | Audit findings closure & verification | 4d | 2027-06-22 | 2027-06-27 | CYB-3930 | 75d |
| TST-4110 |  | Full-route OTDR certification report & as-installed test records | 2d | 2027-09-21 | 2027-09-22 | TST-110, TST-210, TST-310, TST-410, TST-510 | 7d |
| INT-4020 |  | End-to-end integration test with existing system & iSiteCentral (part of SAT) | 5d | 2027-10-05 | 2027-10-11 | MS-070, INT-4010 | 0d |
| TST-4210 |  | SAT - site acceptance tests (sensors, power, communications, operational) | 5d | 2027-10-05 | 2027-10-11 | TST-4110, APR-1670, MS-070 | 0d |
|  | 1.8.2 | **Commissioning & Performance Validation** |  | 2027-10-12 | 2027-11-01 |  |  |
| CMS-4310 |  | System commissioning & calibration - DAS, DSS, TDR & weather station | 5d | 2027-10-12 | 2027-10-18 | TST-4210, INT-4020, CYB-3940 | 0d |
| CMS-4320 |  | Trial operation - baseline data collection & performance validation | 10d | 2027-10-19 | 2027-11-01 | CMS-4310 | 3d |
|  | 1.8.3 | **Documentation & Training** |  | 2027-10-19 | 2027-11-09 |  |  |
| DOC-5020 |  | As-built drawings (3 sets, hard + soft) - final revision after SAT | 6d | 2027-10-19 | 2027-10-26 | CMS-4310 | 0d |
| DOC-5030 |  | O&M manuals (3 sets) - final revision | 6d | 2027-10-19 | 2027-10-26 | CMS-4310 | 0d |
| DOC-5040 |  | User training for SAR staff (5 days) | 5d | 2027-10-19 | 2027-10-25 | CMS-4310 | 9d |
| DOC-5010 |  | Technical reports - TDR, DAS (seismic), DSS strain, weather data & alerts | 6d | 2027-11-02 | 2027-11-09 | MS-100 | 3d |
|  | 1.8.4 | **Handover Submittals (Contractor)** |  | 2027-10-27 | 2027-10-31 |  |  |
| DOC-5050 |  | Handover dossier - as-builts, O&M manuals, QA/QC, material test & HSE records - compile & submit | 3d | 2027-10-27 | 2027-10-31 | DOC-5020, DOC-5030 | 0d |
|  | 1.8.5 | **SAR Acceptance & Formal Handover** |  | 2027-11-01 | 2027-11-15 |  |  |
| APR-5060 |  | SAR review & acceptance of handover dossier (as-builts, O&M, reports) | 14d | 2027-11-01 | 2027-11-14 | DOC-5050 | 0d |
| HND-5090 |  | Formal handover & Taking-Over certificate (SAR) | 1d | 2027-11-15 | 2027-11-15 | APR-5060, DEM-5100, DOC-5010 | 0d |

## Version 2 (data date 2026-11-16, saved 2026-11-23)

Note of the change: Procurement starts at beginning of project month 4 (16-Feb-2027)

Last finish stays 2027-11-15.

Changed:

| ID | Task | Start | Finish | Duration | Total float | Other |
| --- | --- | --- | --- | --- | --- | --- |
| MS-070 | Stage 2 complete - procurement, construction & installation complete | 2027-10-04 → 2027-10-05 (+1d) | 2027-10-04 → 2027-10-05 (+1d) |  |  |  |
| MS-100 | Stage 3 complete - commissioning & performance validation complete | 2027-11-01 → 2027-11-02 (+1d) | 2027-11-01 → 2027-11-02 (+1d) |  | 3d → 2d |  |
| MOB-1051 | Site security, fencing & traffic management - construction period (LOE) |  | 2027-09-19 → 2027-09-20 (+1d) | 102d → 103d |  |  |
| MOB-1081 | Protection Officer on site - construction period (LOE) |  | 2027-09-19 → 2027-09-20 (+1d) | 102d → 103d |  | resources Cost Distribution [42480]; Protection Officer [816 h] → Cost Distribution [42480]; Protection Officer [824 h] |
| MOB-1052 | Site security, fencing & traffic management - testing & commissioning period (LOE) | 2027-10-05 → 2027-10-06 (+1d) | 2027-11-01 → 2027-11-02 (+1d) |  |  |  |
| MOB-1082 | Protection Officer on site - testing & commissioning period (LOE) | 2027-10-05 → 2027-10-06 (+1d) | 2027-11-01 → 2027-11-02 (+1d) |  |  |  |
| MOB-1053 | Site security, fencing & traffic management - handover period (LOE) | 2027-11-02 → 2027-11-03 (+1d) |  | 10d → 9d |  |  |
| MOB-1083 | Protection Officer on site - handover period (LOE) | 2027-11-02 → 2027-11-03 (+1d) |  | 10d → 9d |  | resources Cost Distribution [2832]; Protection Officer [80 h] → Cost Distribution [2832]; Protection Officer [72 h] |
| 1.2.1 | **Site Mobilization, Establishment & Demobilization** |  | 2027-11-08 → 2027-11-09 (+1d) |  |  |  |
| DEM-5100 | Demobilization & site clearance | 2027-11-02 → 2027-11-03 (+1d) | 2027-11-08 → 2027-11-09 (+1d) |  | 4d → 3d |  |
| DSN-1305 | Concept design - basis of design, route, system architecture & sizing |  |  |  | 44d → 45d | resources Cost Distribution [18585]; Design Engineers [160 h] → Design Engineers [160 h] |
| SUB-1305 | Concept design package + Survey Report - submit to SAR |  |  |  | 0d → 1d | resources none → Cost Distribution [9292.5] |
| APR-1305 | SAR review & approval - Concept design & Survey Report |  |  |  | 0d → 1d | resources none → Cost Distribution [9292.5] |
| DSN-1307 | Preliminary design - route & cable layout, power/shelter sizing, interfaces, quantity check |  |  |  | 0d → 1d | resources Cost Distribution [30975]; Design Engineers [128 h] → Design Engineers [128 h] |
| SUB-1307 | Preliminary design package - submit to SAR |  |  |  | 0d → 1d | resources none → Cost Distribution [15487.5] |
| APR-1307 | SAR review & approval - Preliminary design |  |  |  | 0d → 1d | resources none → Cost Distribution [15487.5] |
| DSN-1310 | Detailed design - IFC drawings, specifications & calculations |  |  |  | 0d → 1d | resources Cost Distribution [61950]; Design Engineers [160 h] → Design Engineers [160 h] |
| DSN-1320 | IFC package QA check & submission to SAR |  |  |  | 0d → 1d | resources Cost Distribution [12390] → Cost Distribution [37170] |
| APR-1560 | SAR review & approval - IFC package (IFC approved) |  |  |  | 0d → 1d | resources none → Cost Distribution [37170] |
| 1.6 | **PROCUREMENT (P)** |  | 2027-05-06 → 2027-05-28 (+22d) |  |  |  |
| 1.6.3 | **LONG-LEAD ITEMS (LL) - PO, Manufacture, FAT, Shipping, Customs & Delivery** | 2026-12-09 → 2027-02-16 (+69d) | 2027-05-06 → 2027-05-28 (+22d) |  |  |  |
| 1.6.3.1 | **LL-01 DSS cable NZS-DSS-C02** | 2026-12-09 → 2027-02-16 (+69d) | 2027-03-12 → 2027-05-18 (+67d) |  |  |  |
| PRC-DSS10 | [LL-01] Place PO & supplier kick-off - DSS cable NZS-DSS-C02 (5,500 LM) | 2026-12-09 → 2027-02-16 (+69d) | 2026-12-13 → 2027-02-18 (+67d) |  | 44d → 0d | constraint none → start on or after 2027-02-16 |
| PRC-DSS20 | [LL-01] Manufacture / supply - DSS cable NZS-DSS-C02 (5,500 LM) | 2026-12-14 → 2027-02-19 (+67d) | 2027-02-07 → 2027-04-15 (+67d) |  | 61d → 1d |  |
| FAT-DSS | [LL-01] FAT at manufacturer - DSS cable NZS-DSS-C02 (5,500 LM) | 2027-02-08 → 2027-04-16 (+67d) | 2027-02-09 → 2027-04-17 (+67d) |  | 61d → 1d |  |
| PRC-DSS30 | [LL-01] Shipping / import - DSS cable NZS-DSS-C02 (5,500 LM) | 2027-02-10 → 2027-04-18 (+67d) | 2027-03-02 → 2027-05-08 (+67d) |  | 61d → 1d |  |
| PRC-DSS40 | [LL-01] Customs clearance & SABER conformity - DSS cable NZS-DSS-C02 (5,500 LM) | 2027-03-03 → 2027-05-09 (+67d) | 2027-03-09 → 2027-05-15 (+67d) |  | 61d → 1d |  |
| PRC-DSS50 | [LL-01] Delivery to site (Heet) - DSS cable NZS-DSS-C02 (5,500 LM) | 2027-03-10 → 2027-05-16 (+67d) | 2027-03-12 → 2027-05-18 (+67d) |  | 61d → 1d |  |
| 1.6.3.2 | **LL-02 48-core FO cable (DAS)** | 2026-12-09 → 2027-02-16 (+69d) | 2027-02-12 → 2027-04-20 (+67d) |  |  |  |
| PRC-FO10 | [LL-02] Place PO & supplier kick-off - Outdoor 48-core FO cable - DAS (5,500 LM) | 2026-12-09 → 2027-02-16 (+69d) | 2026-12-13 → 2027-02-18 (+67d) |  | 69d → 22d | constraint none → start on or after 2027-02-16 |
| PRC-FO20 | [LL-02] Manufacture / supply - Outdoor 48-core FO cable - DAS (5,500 LM) | 2026-12-14 → 2027-02-19 (+67d) | 2027-01-17 → 2027-03-25 (+67d) |  | 103d → 39d |  |
| FAT-FO | [LL-02] FAT at manufacturer - Outdoor 48-core FO cable - DAS (5,500 LM) | 2027-01-18 → 2027-03-26 (+67d) | 2027-01-19 → 2027-03-27 (+67d) |  | 103d → 39d |  |
| PRC-FO30 | [LL-02] Shipping / import - Outdoor 48-core FO cable - DAS (5,500 LM) | 2027-01-20 → 2027-03-28 (+67d) | 2027-02-02 → 2027-04-10 (+67d) |  | 103d → 39d |  |
| PRC-FO40 | [LL-02] Customs clearance & SABER conformity - Outdoor 48-core FO cable - DAS (5,500 LM) | 2027-02-03 → 2027-04-11 (+67d) | 2027-02-09 → 2027-04-17 (+67d) |  | 103d → 39d |  |
| PRC-FO50 | [LL-02] Delivery to site (Heet) - Outdoor 48-core FO cable - DAS (5,500 LM) | 2027-02-10 → 2027-04-18 (+67d) | 2027-02-12 → 2027-04-20 (+67d) |  | 103d → 39d |  |
| 1.6.3.3 | **LL-03 TDR coaxial cable** | 2026-12-09 → 2027-02-16 (+69d) | 2027-02-05 → 2027-04-13 (+67d) |  |  |  |
| PRC-TDRC10 | [LL-03] Place PO & supplier kick-off - TDR coaxial cable (5,500 LM) | 2026-12-09 → 2027-02-16 (+69d) | 2026-12-13 → 2027-02-18 (+67d) |  | 84d → 35d | constraint none → start on or after 2027-02-16 |
| PRC-TDRC20 | [LL-03] Manufacture / supply - TDR coaxial cable (5,500 LM) | 2026-12-14 → 2027-02-19 (+67d) | 2027-01-10 → 2027-03-18 (+67d) |  | 123d → 57d |  |
| FAT-TDRC | [LL-03] FAT at manufacturer - TDR coaxial cable (5,500 LM) | 2027-01-11 → 2027-03-19 (+67d) | 2027-01-12 → 2027-03-20 (+67d) |  | 123d → 57d |  |
| PRC-TDRC30 | [LL-03] Shipping / import - TDR coaxial cable (5,500 LM) | 2027-01-13 → 2027-03-21 (+67d) | 2027-01-26 → 2027-04-03 (+67d) |  | 123d → 57d |  |
| PRC-TDRC40 | [LL-03] Customs clearance & SABER conformity - TDR coaxial cable (5,500 LM) | 2027-01-27 → 2027-04-04 (+67d) | 2027-02-02 → 2027-04-10 (+67d) |  | 123d → 57d |  |
| PRC-TDRC50 | [LL-03] Delivery to site (Heet) - TDR coaxial cable (5,500 LM) | 2027-02-03 → 2027-04-11 (+67d) | 2027-02-05 → 2027-04-13 (+67d) |  | 123d → 57d |  |
| 1.6.3.4 | **LL-04 TDR system** | 2026-12-10 → 2027-02-16 (+68d) | 2027-03-23 → 2027-05-28 (+66d) |  |  |  |
| PRC-TDR10 | [LL-04] Place PO & supplier kick-off - TDR system (interrogator, antenna & accessories) | 2026-12-10 → 2027-02-16 (+68d) | 2026-12-14 → 2027-02-18 (+66d) |  | 112d → 66d | constraint none → start on or after 2027-02-16 |
| PRC-TDR20 | [LL-04] Manufacture / supply - TDR system (interrogator, antenna & accessories) | 2026-12-15 → 2027-02-19 (+66d) | 2027-02-22 → 2027-04-29 (+66d) |  | 169d → 106d |  |
| FAT-TDR | [LL-04] FAT at manufacturer - TDR system (interrogator, antenna & accessories) | 2027-02-23 → 2027-04-30 (+66d) | 2027-02-27 → 2027-05-04 (+66d) |  | 169d → 106d |  |
| PRC-TDR30 | [LL-04] Shipping / import - TDR system (interrogator, antenna & accessories) | 2027-02-28 → 2027-05-05 (+66d) | 2027-03-13 → 2027-05-18 (+66d) |  | 169d → 106d |  |
| PRC-TDR40 | [LL-04] Customs clearance & SABER conformity - TDR system (interrogator, antenna & accessories) | 2027-03-14 → 2027-05-19 (+66d) | 2027-03-20 → 2027-05-25 (+66d) |  | 169d → 106d |  |
| PRC-TDR50 | [LL-04] Delivery to site (Heet) - TDR system (interrogator, antenna & accessories) | 2027-03-21 → 2027-05-26 (+66d) | 2027-03-23 → 2027-05-28 (+66d) |  | 169d → 106d |  |
| 1.6.3.5 | **LL-05 Weather station sensors** | 2026-12-10 → 2027-02-16 (+68d) | 2027-02-13 → 2027-04-20 (+66d) |  |  |  |
| PRC-WX10 | [LL-05] Place PO & supplier kick-off - Weather station sensors | 2026-12-10 → 2027-02-16 (+68d) | 2026-12-14 → 2027-02-18 (+66d) |  | 143d → 96d | constraint none → start on or after 2027-02-16 |
| PRC-WX20 | [LL-05] Manufacture / supply - Weather station sensors | 2026-12-15 → 2027-02-19 (+66d) | 2027-01-18 → 2027-03-25 (+66d) |  | 212d → 147d |  |
| FAT-WX | [LL-05] FAT at manufacturer - Weather station sensors | 2027-01-19 → 2027-03-26 (+66d) | 2027-01-20 → 2027-03-27 (+66d) |  | 212d → 147d |  |
| PRC-WX30 | [LL-05] Shipping / import - Weather station sensors | 2027-01-21 → 2027-03-28 (+66d) | 2027-02-03 → 2027-04-10 (+66d) |  | 212d → 147d |  |
| PRC-WX40 | [LL-05] Customs clearance & SABER conformity - Weather station sensors | 2027-02-04 → 2027-04-11 (+66d) | 2027-02-10 → 2027-04-17 (+66d) |  | 212d → 147d |  |
| PRC-WX50 | [LL-05] Delivery to site (Heet) - Weather station sensors | 2027-02-11 → 2027-04-18 (+66d) | 2027-02-13 → 2027-04-20 (+66d) |  | 212d → 147d |  |
| 1.6.3.6 | **LL-06 Communication modules & SIM** | 2026-12-10 → 2027-02-16 (+68d) | 2027-02-02 → 2027-04-09 (+66d) |  |  |  |
| PRC-COM10 | [LL-06] Place PO & supplier kick-off - Communication modules & SIM hardware | 2026-12-10 → 2027-02-16 (+68d) | 2026-12-14 → 2027-02-18 (+66d) |  | 151d → 104d | constraint none → start on or after 2027-02-16 |
| PRC-COM20 | [LL-06] Manufacture / supply - Communication modules & SIM hardware | 2026-12-15 → 2027-02-19 (+66d) | 2027-01-11 → 2027-03-18 (+66d) |  | 224d → 159d |  |
| FAT-COM | [LL-06] FAT at manufacturer - Communication modules & SIM hardware | 2027-01-12 → 2027-03-19 (+66d) | 2027-01-13 → 2027-03-20 (+66d) |  | 224d → 159d |  |
| PRC-COM30 | [LL-06] Shipping / import - Communication modules & SIM hardware | 2027-01-14 → 2027-03-21 (+66d) | 2027-01-23 → 2027-03-30 (+66d) |  | 224d → 159d |  |
| PRC-COM40 | [LL-06] Customs clearance & SABER conformity - Communication modules & SIM hardware | 2027-01-24 → 2027-03-31 (+66d) | 2027-01-30 → 2027-04-06 (+66d) |  | 224d → 159d |  |
| PRC-COM50 | [LL-06] Delivery to site (Heet) - Communication modules & SIM hardware | 2027-01-31 → 2027-04-07 (+66d) | 2027-02-02 → 2027-04-09 (+66d) |  | 224d → 159d |  |
| 1.6.3.7 | **LL-07 UPS & electrical panels** | 2026-12-10 → 2027-02-16 (+68d) | 2027-02-26 → 2027-05-03 (+66d) |  |  |  |
| PRC-PWR10 | [LL-07] Place PO & supplier kick-off - UPS (min. 4 h) & electrical panels | 2026-12-10 → 2027-02-16 (+68d) | 2026-12-14 → 2027-02-18 (+66d) |  | 122d → 75d | constraint none → start on or after 2027-02-16 |
| PRC-PWR20 | [LL-07] Manufacture / supply - UPS (min. 4 h) & electrical panels | 2026-12-15 → 2027-02-19 (+66d) | 2027-02-08 → 2027-04-15 (+66d) |  | 183d → 118d |  |
| FAT-PWR | [LL-07] FAT at manufacturer - UPS (min. 4 h) & electrical panels | 2027-02-09 → 2027-04-16 (+66d) | 2027-02-11 → 2027-04-18 (+66d) |  | 183d → 118d |  |
| PRC-PWR30 | [LL-07] Shipping / import - UPS (min. 4 h) & electrical panels | 2027-02-12 → 2027-04-19 (+66d) | 2027-02-18 → 2027-04-25 (+66d) |  | 183d → 118d |  |
| PRC-PWR40 | [LL-07] Customs clearance & SABER conformity - UPS (min. 4 h) & electrical panels | 2027-02-19 → 2027-04-26 (+66d) | 2027-02-23 → 2027-04-30 (+66d) |  | 183d → 118d |  |
| PRC-PWR50 | [LL-07] Delivery to site (Heet) - UPS (min. 4 h) & electrical panels | 2027-02-24 → 2027-05-01 (+66d) | 2027-02-26 → 2027-05-03 (+66d) |  | 183d → 118d |  |

| ID | Task | Start | Finish | Total float | Other |
| --- | --- | --- | --- | --- | --- |
| PRC-CLD10 | [LL-08] Place PO & supplier kick-off - Local-cloud hardware & licences (KSA hosted) |  |  | 75d → 78d | constraint none → start on or after 2027-02-16 |
| 1.6.3.9 | **LL-09 FO closures & accessories** | 2026-12-09 → 2027-02-16 (+69d) | 2027-02-03 → 2027-04-11 (+67d) |  |  |
| PRC-CLS10 | [LL-09] Place PO & supplier kick-off - FO closures, splice trays, connectors & pigtails | 2026-12-09 → 2027-02-16 (+69d) | 2026-12-13 → 2027-02-18 (+67d) | 79d → 31d | constraint none → start on or after 2027-02-16 |
| PRC-CLS20 | [LL-09] Manufacture / supply - FO closures, splice trays, connectors & pigtails | 2026-12-14 → 2027-02-19 (+67d) | 2027-01-10 → 2027-03-18 (+67d) | 118d → 52d |  |
| PRC-CLS30 | [LL-09] Shipping / import - FO closures, splice trays, connectors & pigtails | 2027-01-11 → 2027-03-19 (+67d) | 2027-01-24 → 2027-04-01 (+67d) | 118d → 52d |  |
| PRC-CLS40 | [LL-09] Customs clearance & SABER conformity - FO closures, splice trays, connectors & pigtails | 2027-01-25 → 2027-04-02 (+67d) | 2027-01-31 → 2027-04-08 (+67d) | 118d → 52d |  |
| PRC-CLS50 | [LL-09] Delivery to site (Heet) - FO closures, splice trays, connectors & pigtails | 2027-02-01 → 2027-04-09 (+67d) | 2027-02-03 → 2027-04-11 (+67d) | 118d → 52d |  |
| 1.6.4 | **Standard / Local Items - PO, Supply & Delivery (handholes, conduits, marker posts, sweet sand)** | 2026-12-09 → 2027-02-16 (+69d) | 2027-01-06 → 2027-03-14 (+67d) |  |  |
| PRC-CND10 | Place PO & supplier kick-off - Steel & rigid conduits | 2026-12-09 → 2027-02-16 (+69d) | 2026-12-13 → 2027-02-18 (+67d) | 89d → 40d | constraint none → start on or after 2027-02-16 |
| PRC-HH10 | Place PO & supplier kick-off - Handholes & manholes (precast) | 2026-12-09 → 2027-02-16 (+69d) | 2026-12-13 → 2027-02-18 (+67d) | 84d → 35d | constraint none → start on or after 2027-02-16 |
| PRC-MRK10 | Place PO & supplier kick-off - Marker posts, warning tape & route markers | 2026-12-09 → 2027-02-16 (+69d) | 2026-12-13 → 2027-02-18 (+67d) | 190d → 141d | constraint none → start on or after 2027-02-16 |
| PRC-SND10 | Arrange sweet-sand source, approval & stockpile at site | 2026-12-09 → 2027-02-16 (+69d) | 2026-12-15 → 2027-02-22 (+69d) | 130d → 62d | constraint none → start on or after 2027-02-16 |
| PRC-CND20 | Manufacture / supply - Steel & rigid conduits | 2026-12-14 → 2027-02-19 (+67d) | 2026-12-27 → 2027-03-04 (+67d) | 131d → 65d |  |
| PRC-HH20 | Manufacture / supply - Handholes & manholes (precast) | 2026-12-14 → 2027-02-19 (+67d) | 2027-01-03 → 2027-03-11 (+67d) | 124d → 58d |  |
| PRC-MRK20 | Manufacture / supply - Marker posts, warning tape & route markers | 2026-12-14 → 2027-02-19 (+67d) | 2026-12-27 → 2027-03-04 (+67d) | 277d → 211d |  |
| PRC-CND50 | Delivery to site (Heet) - Steel & rigid conduits | 2026-12-28 → 2027-03-05 (+67d) | 2026-12-30 → 2027-03-07 (+67d) | 131d → 65d |  |
| PRC-MRK50 | Delivery to site (Heet) - Marker posts, warning tape & route markers | 2026-12-28 → 2027-03-05 (+67d) | 2026-12-30 → 2027-03-07 (+67d) | 277d → 211d |  |
| PRC-HH50 | Delivery to site (Heet) - Handholes & manholes (precast) | 2027-01-04 → 2027-03-12 (+67d) | 2027-01-06 → 2027-03-14 (+67d) | 124d → 58d |  |
| 1.7 | **CONSTRUCTION (C)** |  | 2027-10-04 → 2027-10-05 (+1d) |  |  |
| 1.7.2 | **Enabling Works by Section (SoW 7): Civil, Cables, Splicing & Testing - risk-ranked** |  | 2027-09-20 → 2027-09-21 (+1d) |  |  |
| 1.7.2.1 | **Section 1 (KP 0+000 to 1+100) - Civil Works, Cables Installation, Splicing & Testing** |  | 2027-06-16 → 2027-06-17 (+1d) |  |  |
| CAB-110 | Section 1 - Layer 1: lay DSS cable, pre-installed connectors, OTDR test | 2027-05-13 → 2027-05-20 (+7d) | 2027-05-24 → 2027-05-25 (+1d) |  |  |
| CAB-120 | Section 1 - backfill & compaction - layer 1 | 2027-05-25 → 2027-05-26 (+1d) | 2027-05-26 → 2027-05-27 (+1d) |  |  |
| CAB-130 | Section 1 - Layer 2: pull 48-core FO cable (DAS), OTDR test | 2027-05-27 → 2027-05-30 (+3d) | 2027-06-01 → 2027-06-02 (+1d) |  |  |
| SPL-110 | Section 1 - fusion splicing (<=0.1 dB), FO closures & OTDR splice-loss test | 2027-06-02 → 2027-06-03 (+1d) | 2027-06-06 → 2027-06-07 (+1d) |  |  |
| CAB-140 | Section 1 - backfill & compaction - layer 2 | 2027-06-07 → 2027-06-08 (+1d) | 2027-06-08 → 2027-06-09 (+1d) |  |  |
| CAB-150 | Section 1 - Layer 3: lay TDR coaxial cable, continuity test | 2027-06-09 → 2027-06-10 (+1d) | 2027-06-13 → 2027-06-14 (+1d) |  |  |
| CAB-160 | Section 1 - final backfill, compaction & reinstatement | 2027-06-14 → 2027-06-15 (+1d) | 2027-06-15 → 2027-06-16 (+1d) |  |  |
| CIV-140 | Section 1 - marker posts, warning tape & route markers | 2027-06-16 → 2027-06-17 (+1d) | 2027-06-16 → 2027-06-17 (+1d) |  |  |
| TST-110 | Section 1 - final OTDR certification & test record | 2027-06-16 → 2027-06-17 (+1d) | 2027-06-16 → 2027-06-17 (+1d) |  |  |
| 1.7.2.3 | **Section 3 (KP 2+200 to 3+300) - Civil Works, Cables Installation, Splicing & Testing** | 2027-06-16 → 2027-06-17 (+1d) | 2027-08-03 → 2027-08-04 (+1d) |  |  |
| CIV-310 | Section 3 - excavate trench (800x200 mm) & sweet-sand bedding, 1,100 LM | 2027-06-16 → 2027-06-17 (+1d) | 2027-07-01 → 2027-07-04 (+3d) |  |  |
| CIV-320 | Section 3 - handholes / manholes installation | 2027-07-04 → 2027-07-05 (+1d) | 2027-07-05 → 2027-07-06 (+1d) |  |  |
| CIV-330 | Section 3 - steel & rigid conduits at culverts / track crossings | 2027-07-04 → 2027-07-05 (+1d) | 2027-07-05 → 2027-07-06 (+1d) |  |  |
| CAB-310 | Section 3 - Layer 1: lay DSS cable, pre-installed connectors, OTDR test | 2027-07-06 → 2027-07-07 (+1d) | 2027-07-11 → 2027-07-12 (+1d) |  |  |
| CAB-320 | Section 3 - backfill & compaction - layer 1 | 2027-07-12 → 2027-07-13 (+1d) | 2027-07-13 → 2027-07-14 (+1d) |  |  |
| CAB-330 | Section 3 - Layer 2: pull 48-core FO cable (DAS), OTDR test | 2027-07-14 → 2027-07-15 (+1d) | 2027-07-19 → 2027-07-20 (+1d) |  |  |
| SPL-310 | Section 3 - fusion splicing (<=0.1 dB), FO closures & OTDR splice-loss test | 2027-07-20 → 2027-07-21 (+1d) | 2027-07-22 → 2027-07-25 (+3d) |  |  |
| CAB-340 | Section 3 - backfill & compaction - layer 2 | 2027-07-25 → 2027-07-26 (+1d) | 2027-07-26 → 2027-07-27 (+1d) |  |  |
| CAB-350 | Section 3 - Layer 3: lay TDR coaxial cable, continuity test | 2027-07-27 → 2027-07-28 (+1d) | 2027-07-29 → 2027-08-01 (+3d) |  |  |
| CAB-360 | Section 3 - final backfill, compaction & reinstatement | 2027-08-01 → 2027-08-02 (+1d) | 2027-08-02 → 2027-08-03 (+1d) |  |  |
| CIV-340 | Section 3 - marker posts, warning tape & route markers | 2027-08-03 → 2027-08-04 (+1d) | 2027-08-03 → 2027-08-04 (+1d) |  |  |
| TST-310 | Section 3 - final OTDR certification & test record | 2027-08-03 → 2027-08-04 (+1d) | 2027-08-03 → 2027-08-04 (+1d) |  |  |
| 1.7.2.5 | **Section 5 (KP 4+400 to 5+500) - Civil Works, Cables Installation, Splicing & Testing** | 2027-08-03 → 2027-08-04 (+1d) | 2027-09-20 → 2027-09-21 (+1d) |  |  |
| CIV-510 | Section 5 - excavate trench (800x200 mm) & sweet-sand bedding, 1,100 LM | 2027-08-03 → 2027-08-04 (+1d) | 2027-08-18 → 2027-08-19 (+1d) |  |  |
| CIV-520 | Section 5 - handholes / manholes installation | 2027-08-19 → 2027-08-22 (+3d) | 2027-08-22 → 2027-08-23 (+1d) |  |  |
| CIV-530 | Section 5 - steel & rigid conduits at culverts / track crossings | 2027-08-19 → 2027-08-22 (+3d) | 2027-08-22 → 2027-08-23 (+1d) |  |  |
| CAB-510 | Section 5 - Layer 1: lay DSS cable, pre-installed connectors, OTDR test | 2027-08-23 → 2027-08-24 (+1d) | 2027-08-26 → 2027-08-29 (+3d) |  |  |
| CAB-520 | Section 5 - backfill & compaction - layer 1 | 2027-08-29 → 2027-08-30 (+1d) | 2027-08-30 → 2027-08-31 (+1d) |  |  |
| CAB-530 | Section 5 - Layer 2: pull 48-core FO cable (DAS), OTDR test | 2027-08-31 → 2027-09-01 (+1d) | 2027-09-05 → 2027-09-06 (+1d) |  |  |
| SPL-510 | Section 5 - fusion splicing (<=0.1 dB), FO closures & OTDR splice-loss test | 2027-09-06 → 2027-09-07 (+1d) | 2027-09-08 → 2027-09-09 (+1d) |  |  |
| CAB-540 | Section 5 - backfill & compaction - layer 2 | 2027-09-09 → 2027-09-12 (+3d) | 2027-09-12 → 2027-09-13 (+1d) |  |  |
| CAB-550 | Section 5 - Layer 3: lay TDR coaxial cable, continuity test | 2027-09-13 → 2027-09-14 (+1d) | 2027-09-15 → 2027-09-16 (+1d) |  |  |
| CAB-560 | Section 5 - final backfill, compaction & reinstatement | 2027-09-16 → 2027-09-19 (+3d) | 2027-09-19 → 2027-09-20 (+1d) |  |  |
| CIV-540 | Section 5 - marker posts, warning tape & route markers | 2027-09-20 → 2027-09-21 (+1d) | 2027-09-20 → 2027-09-21 (+1d) |  |  |
| TST-510 | Section 5 - final OTDR certification & test record | 2027-09-20 → 2027-09-21 (+1d) | 2027-09-20 → 2027-09-21 (+1d) |  |  |
| 1.7.3 | **Station Power, Shelter & Field Systems (TDR, Weather, Comms)** |  | 2027-09-21 → 2027-09-22 (+1d) |  |  |
| TDR-3510 | TDR system installation - interrogator & antenna | 2027-05-24 → 2027-05-30 (+6d) | 2027-05-30 → 2027-06-03 (+4d) | 78d → 75d |  |
| TDR-3520 | TDR configuration, calibration & pre-commissioning | 2027-09-16 → 2027-09-19 (+3d) | 2027-09-21 → 2027-09-22 (+1d) |  |  |
| 1.7.4 | **Local Cloud, Cybersecurity & Integration Installation** |  | 2027-10-04 → 2027-10-05 (+1d) |  |  |
| INT-4010 | Integration with existing system & iSiteCentral - interfaces & data mapping | 2027-09-22 → 2027-09-26 (+4d) | 2027-10-04 → 2027-10-05 (+1d) |  |  |
| 1.8.1 | **Testing & Site Acceptance (OTDR, SAT, Integration, Cyber Audit)** |  | 2027-10-11 → 2027-10-12 (+1d) |  |  |
| TST-4110 | Full-route OTDR certification report & as-installed test records | 2027-09-21 → 2027-09-22 (+1d) | 2027-09-22 → 2027-09-26 (+4d) |  |  |
| INT-4020 | End-to-end integration test with existing system & iSiteCentral (part of SAT) | 2027-10-05 → 2027-10-06 (+1d) | 2027-10-11 → 2027-10-12 (+1d) |  |  |
| TST-4210 | SAT - site acceptance tests (sensors, power, communications, operational) | 2027-10-05 → 2027-10-06 (+1d) | 2027-10-11 → 2027-10-12 (+1d) |  |  |
| 1.8.2 | **Commissioning & Performance Validation** | 2027-10-12 → 2027-10-13 (+1d) | 2027-11-01 → 2027-11-02 (+1d) |  |  |
| CMS-4310 | System commissioning & calibration - DAS, DSS, TDR & weather station | 2027-10-12 → 2027-10-13 (+1d) | 2027-10-18 → 2027-10-19 (+1d) |  |  |
| CMS-4320 | Trial operation - baseline data collection & performance validation | 2027-10-19 → 2027-10-20 (+1d) | 2027-11-01 → 2027-11-02 (+1d) | 3d → 2d |  |
| 1.8.3 | **Documentation & Training** | 2027-10-19 → 2027-10-20 (+1d) | 2027-11-09 → 2027-11-10 (+1d) |  |  |
| DOC-5020 | As-built drawings (3 sets, hard + soft) - final revision after SAT | 2027-10-19 → 2027-10-20 (+1d) | 2027-10-26 → 2027-10-27 (+1d) |  |  |

| ID | Task | Start | Finish | Duration | Total float |
| --- | --- | --- | --- | --- | --- |
| DOC-5030 | O&M manuals (3 sets) - final revision | 2027-10-19 → 2027-10-20 (+1d) | 2027-10-26 → 2027-10-27 (+1d) |  |  |
| DOC-5040 | User training for SAR staff (5 days) | 2027-10-19 → 2027-10-20 (+1d) | 2027-10-25 → 2027-10-26 (+1d) |  | 9d → 8d |
| DOC-5010 | Technical reports - TDR, DAS (seismic), DSS strain, weather data & alerts | 2027-11-02 → 2027-11-03 (+1d) | 2027-11-09 → 2027-11-10 (+1d) |  | 3d → 2d |
| 1.8.4 | **Handover Submittals (Contractor)** | 2027-10-27 → 2027-10-28 (+1d) |  |  |  |
| DOC-5050 | Handover dossier - as-builts, O&M manuals, QA/QC, material test & HSE records - compile & submit | 2027-10-27 → 2027-10-28 (+1d) |  | 3d → 2d |  |

## Version 3 (data date 2027-01-03, saved 2026-11-11)

Note of the change: Rebuild submittal from revised BOQ: EPC cost split, design stage sub-branches, long-lead WBS, minimal milestones, start permits

Last finish 2027-11-15 → 2029-01-02 (+414d).

Added:

| ID | Task | Duration | Start | Finish | Predecessors | Resources |
| --- | --- | --- | --- | --- | --- | --- |
| 1.1 | **PROJECT MANAGEMENT & MILESTONES** |  | 2027-01-03 | 2028-01-02 |  |  |
| 1.1.2 | **Management, Team Mobilization & PTS (incl. Level-of-Effort)** |  | 2027-01-03 | 2028-01-02 |  |  |
| MGT-1070 | Weekly & monthly progress reporting (LOE) | 251d | 2027-01-03 | 2028-01-02 | MOB-1010 SS, HND-5090 FF |  |
| 1.1.3 | **Schedule Contingency (Time-Risk Allowance)** |  | 2027-10-11 | 2027-11-03 |  |  |
| CNT-0100 | Schedule contingency - time-risk allowance (supplier, weather, Eid-date shift) | 18d | 2027-10-11 | 2027-11-03 | MS-070 |  |
| 1.2.1 | **Survey & Assessment** |  | 2027-01-19 | 2027-01-27 |  |  |
| SUB-1570 | Address SAR comments & resubmit IFC package | 4d | 2027-02-17 | 2027-02-23 | APR-1560 |  |
| APR-1580 | SAR final approval - IFC package | 4d | 2027-02-24 | 2027-03-01 | SUB-1570 |  |
| SUB-1630 | Address SAR comments & resubmit cyber/cloud design | 3d | 2027-02-24 | 2027-02-28 | APR-1620 |  |
| APR-1640 | SAR final approval - cyber/cloud design | 3d | 2027-03-01 | 2027-03-03 | SUB-1630 |  |
| SUB-1535 | Address SAR comments & resubmit cable materials | 3d | 2027-01-21 | 2027-01-25 | APR-1530 |  |
| APR-1536 | SAR final approval - cable materials | 3d | 2027-01-26 | 2027-01-28 | SUB-1535 |  |
| 1.4.2 | **Civil & Cable Works by Section (risk-ranked sequence)** |  | 2027-03-24 | 2027-09-27 |  |  |
| 1.4.2.1 | **Section 1** |  | 2027-03-24 | 2027-06-06 |  |  |
| 1.4.2.2 | **Section 2** |  | 2027-04-07 | 2027-07-04 |  |  |
| 1.4.2.3 | **Section 3** |  | 2027-06-06 | 2027-08-01 |  |  |
| 1.4.2.4 | **Section 4** |  | 2027-07-04 | 2027-08-29 |  |  |
| 1.4.2.5 | **Section 5** |  | 2027-08-01 | 2027-09-27 |  |  |
| SUB-5070 | Address SAR comments & resubmit dossier | 3d | 2027-12-23 | 2027-12-27 | APR-5060 |  |
| APR-5080 | SAR final acceptance of handover dossier | 3d | 2027-12-28 | 2027-12-30 | SUB-5070 |  |
| 1.6.1 | **SAR Work Permits (Work Permit Portal), Extensions & TTF02** |  | 2027-01-11 | 2027-09-06 |  |  |
| PRM-2105 | Prepare TTF02 / Delivery Plan, PICOP certificates & PTS card register | 3d | 2027-01-26 | 2027-01-28 | APR-1520, MOB-1030 |  |
| PRM-2210 | Prepare & submit WP-03 (steel conduits at culverts & track crossings) incl. protection / possession request | 2d | 2027-03-02 | 2027-03-03 | PRM-2105, APR-1580 |  |
| PRM-2310 | Prepare & submit WP-04 (power, shelter & equipment works at monitoring station) | 2d | 2027-03-02 | 2027-03-03 | PRM-2105, APR-1580 |  |
| PRM-2220 | SAR review & issue WP-03 (track crossings / possession) | 7d | 2027-03-04 | 2027-03-18 | PRM-2210 |  |
| PRM-2320 | SAR review & issue WP-04 | 5d | 2027-03-04 | 2027-03-16 | PRM-2310 |  |
| PRM-3110 | Prepare & submit WP-05 (testing, commissioning & live-system tie-in) in Work Permit Portal | 2d | 2027-03-25 | 2027-03-28 | APR-1670, PRM-2620 |  |
| PRM-3120 | SAR review & issue WP-05 | 5d | 2027-03-29 | 2027-04-04 | PRM-3110 |  |
| PRM-2150 | Permit extension 1 - progress report, updated insurance policy & TTF02 (Portal) | 2d | 2027-06-08 | 2027-06-09 | PRM-2120 FS+55d |  |
| PRM-2160 | SAR review & approve permit extension 1 | 3d | 2027-06-10 | 2027-06-14 | PRM-2150 |  |
| PRM-2170 | Permit extension 2 - progress report, updated insurance policy & TTF02 (Portal) | 2d | 2027-08-31 | 2027-09-01 | PRM-2160 FS+55d |  |
| PRM-2180 | SAR review & approve permit extension 2 | 3d | 2027-09-02 | 2027-09-06 | PRM-2170 |  |
| 1.6.2 | **Utility, Telecom & Third-Party Approvals (TBC)** |  | 2027-01-24 | 2027-03-07 |  |  |
| PRM-2510 | Request SIM / data-service activation from STC (primary & backup SIM) | 2d | 2027-01-24 | 2027-01-25 | APR-1540 |  |
| PRM-2520 | STC SIM provisioning & activation | 5d | 2027-01-26 | 2027-02-01 | PRM-2510 |  |
| PRM-2410 | Submit load / connection request to SEC for power upgrade (applicability TBC) | 3d | 2027-02-02 | 2027-02-04 | DSN-1310 |  |
| PRM-2420 | SEC review & connection approval (duration TBC) | 15d | 2027-02-07 | 2027-02-28 | PRM-2410 |  |
| PRM-2610 | Request access / NOC & outage window - existing system & iSiteCentral owner | 3d | 2027-02-16 | 2027-02-18 | APR-1650 |  |
| PRM-2620 | Owner NOC & agreed tie-in / outage window | 10d | 2027-02-21 | 2027-03-07 | PRM-2610 |  |
| 1.7 | **DEFECTS LIABILITY PERIOD - POST-COMPLETION (DLP)** |  | 2028-01-03 | 2029-01-02 |  |  |
| DLP-9020 | Defects liability support (12 months after Taking-Over) | 366d | 2028-01-03 | 2029-01-02 | MS-120 | Cost Distribution [148680] |

Removed: MS-130 DLP Start - 12-month defects liability period begins at Taking-Over (BoQ item 29; no activity, no cost); PRELIMINARIES & GENERAL REQUIREMENTS; MOB-1051 Site security, fencing & traffic management - construction period (LOE); MOB-1081 Protection Officer on site - construction period (LOE); MOB-1052 Site security, fencing & traffic management - testing & commissioning period (LOE); MOB-1082 Protection Officer on site - testing & commissioning period (LOE); MOB-1053 Site security, fencing & traffic management - handover period (LOE); MOB-1083 Protection Officer on site - handover period (LOE); PROJECT START-UP DOCUMENTS & APPROVALS (Contract cl. 4.2, 5, 8, 10, 13); SUD-1010 Performance Security (10% on-demand bank guarantee) - confirm issue & submit to SAR (due before Effective Date); SUD-1020 Submit contractor licences & certificates (CR, tax, MISA) to SAR; SUD-1030 Baseline programme (Primavera P6) - prepare & submit within 14 days of Effective Date; SUD-1050 Key Personnel CVs, manpower & Saudization schedule - submit to SAR; SUD-1060 Sub-contractor & supplier approval request (cl. 5.7.2) - prepare & submit; SUD-1055 SAR approval - Key Personnel & manpower schedule; SUD-1040 Insurance certificates (CAR, marine cargo, professional indemnity, plant) - submit to SAR; SUD-1065 SAR prior written approval - sub-contractors & suppliers; SUD-1035 SAR review & approval - baseline programme; Permit 1 - Site Access & Survey (before Survey); Permit 2 - Start of Execution (after IFC approved); Survey, Survey Report & Existing System Assessment; SRV-1231 Survey Report part A - TDR baseline report (existing system); SRV-1232 Survey Report part B - DAS seismic baseline report (existing system); SRV-1233 Survey Report part C - DSS strain baseline report (existing system); SRV-1234 Survey Report part D - weather station data baseline report (existing system); SRV-1230 Survey Report - compile baseline of existing system (topographic, GPR, dilapidation, TDR, DAS, DSS, weather); Enabling Works by Section (SoW 7): Civil, Cables, Splicing & Testing - risk-ranked; Section 1 (KP 0+000 to 1+100) - Civil Works, Cables Installation, Splicing & Testing; Section 2 (KP 1+100 to 2+200) - Civil Works, Cables Installation, Splicing & Testing; Section 3 (KP 2+200 to 3+300) - Civil Works, Cables Installation, Splicing & Testing; Section 4 (KP 3+300 to 4+400) - Civil Works, Cables Installation, Splicing & Testing; Section 5 (KP 4+400 to 5+500) - Civil Works, Cables Installation, Splicing & Testing

Changed:

| ID | Task | Start | Finish | Duration | Total float | Predecessors | Other |
| --- | --- | --- | --- | --- | --- | --- | --- |
| 1.1.1 | **Project Milestones** | 2026-11-16 → 2027-01-03 (+48d) | 2027-11-15 → 2028-01-02 (+48d) |  |  |  |  |
| MS-001 | NTP - Notice to Proceed (assumed date; re-base on actual NTP) | 2026-11-16 → 2027-01-03 (+48d) | 2026-11-16 → 2027-01-03 (+48d) |  |  |  | was named NTP - Notice to Proceed (16-Nov-2026; re-base if the actual NTP differs); constraint start on or after 2026-11-16 → start on or after 2027-01-03 |
| MS-010 | Stage 1 complete - mobilization done & IFC package submitted | 2027-03-30 → 2027-02-02 (-56d) | 2027-03-30 → 2027-02-02 (-56d) |  | 130d → 168d | Performance Security (10% on-demand bank guarantee) - confirm issue & submit to SAR (due before Effective Date), Submit contractor licences & certificates (CR, tax, MISA) to SAR, SAR review & approval - baseline programme, MOB-1040, APR-1560, APR-1510, APR-1520, APR-1530, APR-1540, APR-1550 → MOB-1040, DSN-1320, SUB-1410, SUB-1420, SUB-1430, SUB-1440, SUB-1450 | was named Stage 1 complete - mobilization done, IFC approved & submittals issued |
| MS-070 | Stage 2 complete - procurement, construction & installation complete | 2027-10-05 → 2027-10-10 (+5d) | 2027-10-05 → 2027-10-10 (+5d) |  |  | CIV-540, TDR-3520, WX-3620, COM-3720, CLD-3820, INT-4010, PWR-3430, MS-010, TST-4110, CIV-140, CIV-240, CIV-340, CIV-440 → CIV-540, TDR-3520, WX-3620, COM-3720, CLD-3820, INT-4010, PRM-2160, PRM-2180, PWR-3430, MS-010, TST-4110, CIV-140, CIV-240, CIV-340, CIV-440 |  |
| MS-100 | Stage 3 complete - commissioning & performance validation complete | 2027-11-02 → 2027-12-01 (+29d) | 2027-11-02 → 2027-12-01 (+29d) |  | 2d → 0d |  |  |
| MS-120 | Taking-Over - CONTRACT COMPLETION (12 months from NTP) | 2027-11-15 → 2028-01-02 (+48d) | 2027-11-15 → 2028-01-02 (+48d) |  |  |  | was named Taking-Over - planned completion (contract limit 15-Nov-2027 = NTP + 12 months) |
| MGT-1060 | Project management, QA/QC & HSE supervision and records (LOE) | 2026-11-16 → 2027-01-03 (+48d) | 2027-11-15 → 2028-01-02 (+48d) |  | 0d → none |  | resources Cost Distribution [3835]; QA/QC & HSE Engineer [2008 h] → Cost Distribution [7670]; QA/QC & HSE Engineer [2008 h] |
| MOB-1010 | Kick-off meeting & project management set-up | 2026-11-16 → 2027-01-03 (+48d) | 2026-11-17 → 2027-01-04 (+48d) |  | 1d → 0d |  |  |
| MGT-1090 | Obtain SAR risk scores & confirm Section priority (SAR input) | 2026-11-18 → 2027-01-05 (+48d) | 2026-11-22 → 2027-01-07 (+46d) |  | 72d → 25d |  |  |
| MOB-1020 | Insurance (CAR / TPL) & performance bond issuance | 2026-11-18 → 2027-01-05 (+48d) | 2026-11-23 → 2027-01-10 (+48d) |  | 1d → 17d |  | resources Cost Distribution [188800] → Cost Distribution [200600] |
| MOB-1030 | PTS training & PO induction - batch 1 (initial team) | 2026-11-18 → 2027-01-05 (+48d) | 2026-11-22 → 2027-01-07 (+46d) |  | 3d → 18d |  | resources Protection Officer [24 h] → Cost Distribution [5664]; Protection Officer [24 h] |
| MOB-1050 | Site security, fencing & traffic management (LOE) | 2026-12-13 → 2027-01-19 (+37d) | 2027-04-22 → 2027-12-08 (+230d) | 90d → 222d | 0d → none | MOB-1040 SS, MOB-3010 FF → MOB-1040 SS, DEM-5100 FF | was named Site security, fencing & traffic management - mobilization & design period (LOE); resources Cost Distribution [40356] → Cost Distribution [403560] |
| MOB-1080 | Protection Officer on site during all field works (LOE) | 2026-12-13 → 2027-01-19 (+37d) | 2027-04-22 → 2027-12-08 (+230d) | 90d → 222d | 0d → none | MOB-1040 SS, MOB-3010 FF → SRV-1210 SS, DEM-5100 FF | was named Protection Officer on site - mobilization & design period (LOE); resources Cost Distribution [5664]; Protection Officer [720 h] → Cost Distribution [45312]; Protection Officer [1776 h] |
| MOB-3005 | PTS training & PO induction - batch 2 (field crews) | 2026-12-14 → 2027-01-31 (+48d) | 2026-12-16 → 2027-02-02 (+48d) |  | 82d → 41d | APR-1520 → PRM-2105 | resources Protection Officer [24 h] → Cost Distribution [5664]; Protection Officer [24 h] |
| 1.2 | **ENGINEERING (E)** | 2026-11-18 → 2027-01-05 (+48d) | 2027-04-21 → 2027-03-24 (-28d) |  |  |  |  |
| SRV-1210 | Existing system, power capacity & shelter assessment (incl. data correlation) | 2026-12-13 → 2027-01-19 (+37d) | 2026-12-17 → 2027-01-25 (+39d) |  | 3d → 18d |  | resources Cost Distribution [24337.5]; Systems Engineers [80 h] → Cost Distribution [24780]; Systems Engineers [80 h] |
| SRV-1220 | Topographic survey, GPR utilities detection & dilapidation survey (5.5 km route) | 2026-12-13 → 2027-01-19 (+37d) | 2026-12-21 → 2027-01-27 (+37d) |  | 1d → 17d |  | resources Cost Distribution [81125]; Survey Crew [112 h] → Cost Distribution [162250]; Survey Crew [112 h] |
| 1.2.2 | **Design & Engineering (Concept / Preliminary / Detailed-IFC)** | 2026-11-18 → 2027-01-05 (+48d) | 2027-03-30 → 2027-03-01 (-29d) |  |  |  |  |
| 1.2.2.1 | **Concept Design** | 2026-11-18 → 2027-01-05 (+48d) | 2027-02-09 → 2027-01-21 (-19d) |  |  |  |  |
| 1.2.2.1.1 | **Concept - Design** | 2026-11-18 → 2027-01-05 (+48d) | 2026-11-24 → 2027-01-11 (+48d) |  |  |  |  |
| DSN-1305 | Concept design - basis of design, route, system architecture & sizing (desktop, existing as-builts) | 2026-11-18 → 2027-01-05 (+48d) | 2026-11-24 → 2027-01-11 (+48d) |  | 45d → 16d |  | was named Concept design - basis of design, route, system architecture & sizing; resources Design Engineers [160 h] → Cost Distribution [12390]; Design Engineers [160 h] |
| 1.2.2.1.2 | **Concept - Submittal (Contractor)** | 2027-01-26 → 2027-01-12 (-14d) | 2027-01-26 → 2027-01-12 (-14d) |  |  |  |  |
| SUB-1305 | Concept design package - submit to SAR | 2027-01-26 → 2027-01-12 (-14d) | 2027-01-26 → 2027-01-12 (-14d) |  | 1d → 16d | DSN-1305, Survey Report - compile baseline of existing system (topographic, GPR, dilapidation, TDR, DAS, DSS, weather) → DSN-1305 | was named Concept design package + Survey Report - submit to SAR; resources Cost Distribution [9292.5] → none |
| 1.2.2.1.3 | **Concept - SAR Approval** | 2027-01-27 → 2027-01-13 (-14d) | 2027-02-09 → 2027-01-21 (-19d) |  |  |  |  |
| APR-1305 | SAR review & approval - Concept design | 2027-01-27 → 2027-01-13 (-14d) | 2027-02-09 → 2027-01-21 (-19d) | 14d → 7d | 1d → 16d |  | was named SAR review & approval - Concept design & Survey Report; resources Cost Distribution [9292.5] → none |
| 1.2.2.2 | **Preliminary Design** | 2027-02-10 → 2027-01-12 (-29d) | 2027-03-02 → 2027-02-01 (-29d) |  |  |  |  |
| 1.2.2.2.1 | **Preliminary - Design** | 2027-02-10 → 2027-01-12 (-29d) | 2027-02-15 → 2027-01-20 (-26d) |  |  |  |  |
| DSN-1307 | Preliminary design - route & cable layout, power/shelter sizing, interfaces, quantity check | 2027-02-10 → 2027-01-12 (-29d) | 2027-02-15 → 2027-01-20 (-26d) | 4d → 7d | 1d → 16d | APR-1305 → DSN-1305 | resources Design Engineers [128 h] → Cost Distribution [18585]; Design Engineers [224 h] |
| 1.2.2.2.2 | **Preliminary - Submittal (Contractor)** | 2027-02-16 → 2027-01-21 (-26d) | 2027-02-16 → 2027-01-21 (-26d) |  |  |  |  |
| SUB-1307 | Preliminary design package - submit to SAR | 2027-02-16 → 2027-01-21 (-26d) | 2027-02-16 → 2027-01-21 (-26d) |  | 1d → 16d |  | resources Cost Distribution [15487.5] → none |
| 1.2.2.2.3 | **Preliminary - SAR Approval** | 2027-02-17 → 2027-01-24 (-24d) | 2027-03-02 → 2027-02-01 (-29d) |  |  |  |  |
| APR-1307 | SAR review & approval - Preliminary design | 2027-02-17 → 2027-01-24 (-24d) | 2027-03-02 → 2027-02-01 (-29d) | 14d → 7d | 1d → 16d | SUB-1307 → SUB-1307, APR-1305 | resources Cost Distribution [15487.5] → none |
| 1.2.2.3 | **Detailed Design / IFC** | 2027-03-03 → 2027-01-21 (-41d) | 2027-03-30 → 2027-03-01 (-29d) |  |  |  |  |
| 1.2.2.3.1 | **Detailed / IFC - Design** | 2027-03-03 → 2027-01-21 (-41d) | 2027-03-15 → 2027-02-01 (-42d) |  |  |  |  |
| DSN-1310 | Detailed design - IFC drawings, specifications & calculations | 2027-03-03 → 2027-01-21 (-41d) | 2027-03-15 → 2027-02-01 (-42d) | 5d → 8d | 1d → 16d | APR-1307, MGT-1090 → DSN-1307, SRV-1210 SS, SRV-1210 FF, SRV-1220 FF+2d, MGT-1090 | resources Design Engineers [160 h] → Cost Distribution [43365]; Design Engineers [256 h] |
| 1.2.2.3.2 | **Detailed / IFC - Submittal (Contractor)** | 2027-03-16 → 2027-02-02 (-42d) | 2027-03-16 → 2027-02-23 (-21d) |  |  |  |  |
| DSN-1320 | IFC package QA check & submission to SAR | 2027-03-16 → 2027-02-02 (-42d) | 2027-03-16 → 2027-02-02 (-42d) |  | 1d → 16d | DSN-1310 → DSN-1310, APR-1307 | resources Cost Distribution [37170] → Cost Distribution [24780] |
| 1.2.2.3.3 | **Detailed / IFC - SAR Approval** | 2027-03-17 → 2027-02-03 (-42d) | 2027-03-30 → 2027-03-01 (-29d) |  |  |  |  |
| APR-1560 | SAR review - IFC design package | 2027-03-17 → 2027-02-03 (-42d) | 2027-03-30 → 2027-02-16 (-42d) | 14d → 10d | 1d → 16d |  | was named SAR review & approval - IFC package (IFC approved); resources Cost Distribution [37170] → none |
| 1.2.3 | **Other Engineering Submittals (Contractor)** | 2026-12-10 → 2027-01-05 (+26d) | 2027-04-07 → 2027-03-15 (-23d) |  |  |  |  |
| SUB-1410 | QA/QC Plan, HSE Plan & Project Execution Plan - prepare & submit | 2026-11-18 → 2027-01-05 (+48d) | 2026-11-24 → 2027-01-11 (+48d) |  | 88d → 50d |  |  |
| SUB-1420 | Method statements & ITPs (survey, trenching, cable laying, OTDR/splicing, track crossing, equipment) - prepare & submit | 2026-11-18 → 2027-01-05 (+48d) | 2026-11-29 → 2027-01-14 (+46d) |  | 73d → 37d |  |  |
| SUB-1490 | FAT procedures & test plans (TDR, cables, weather, comms, UPS, cloud hardware) | 2026-12-10 → 2027-01-24 (+45d) | 2026-12-17 → 2027-01-31 (+45d) |  | 70d → 30d |  |  |
| SUB-1470 | Cybersecurity (NCA ECC-1/CSCC-1/OTCC-1, SAR OT/ICS) & local-cloud architecture design package | 2027-02-10 → 2027-01-26 (-15d) | 2027-02-24 → 2027-02-08 (-16d) |  | 75d → 85d |  | resources none → Cost Distribution [169920] |
| SUB-1480 | Interface Control Document - existing 1.5 km system & iSiteCentral | 2026-12-20 → 2027-01-26 (+37d) | 2026-12-29 → 2027-02-04 (+37d) |  | 173d → 138d |  |  |
| SUB-1495 | SAT, commissioning & performance-validation procedures | 2027-03-31 → 2027-03-02 (-29d) | 2027-04-07 → 2027-03-15 (-23d) |  | 115d → 148d | APR-1560 → APR-1580 |  |
| 1.2.4 | **SAR Reviews & Approvals - Other Engineering** | 2026-12-18 → 2027-01-12 (+25d) | 2027-04-21 → 2027-03-24 (-28d) |  |  |  |  |
| APR-1510 | SAR review & approval - QA/QC, HSE & Execution Plans | 2026-11-25 → 2027-01-12 (+48d) | 2026-12-08 → 2027-01-20 (+43d) | 14d → 7d | 131d → 50d |  |  |
| APR-1520 | SAR review & approval - method statements & ITPs | 2026-11-30 → 2027-01-17 (+48d) | 2026-12-13 → 2027-01-25 (+43d) | 14d → 7d | 108d → 37d |  |  |
| APR-1660 | SAR review & approval - FAT procedures (SAR witness notice incl.) | 2026-12-18 → 2027-02-01 (+45d) | 2026-12-31 → 2027-02-09 (+40d) | 14d → 7d | 106d → 30d |  |  |
| APR-1650 | SAR / system-owner review - Interface Control Document | 2026-12-30 → 2027-02-07 (+39d) | 2027-01-12 → 2027-02-15 (+34d) | 14d → 7d | 256d → 138d |  | was named SAR / system-owner review & approval - Interface Control Document |
| APR-1620 | SAR IT/OT & cybersecurity review - architecture design | 2027-02-25 → 2027-02-09 (-16d) | 2027-03-10 → 2027-02-23 (-15d) | 14d → 10d | 117d → 85d |  | was named SAR IT/OT & cybersecurity review & approval - architecture design |
| APR-1670 | SAR review & approval - SAT/commissioning procedures | 2027-04-08 → 2027-03-16 (-23d) | 2027-04-21 → 2027-03-24 (-28d) | 14d → 7d | 167d → 148d |  |  |
| 1.3 | **PROCUREMENT (P)** | 2026-11-18 → 2027-01-05 (+48d) | 2027-05-28 → 2027-05-05 (-23d) |  |  |  |  |
| 1.3.1 | **Material Submittals (Contractor)** | 2026-11-18 → 2027-01-05 (+48d) | 2026-11-25 → 2027-01-25 (+61d) |  |  |  |  |
| SUB-1430 | Material submittal - DSS cable NZS-DSS-C02, 48-core FO cable, TDR coaxial cable | 2026-11-18 → 2027-01-05 (+48d) | 2026-11-24 → 2027-01-11 (+48d) |  | 49d → 0d |  |  |
| SUB-1440 | Material submittal - TDR system, weather station, comms modules/SIM, UPS & electrical panels, cloud hardware | 2026-11-18 → 2027-01-05 (+48d) | 2026-11-25 → 2027-01-12 (+48d) |  | 71d → 30d |  |  |
| SUB-1450 | Material submittal - FO closures, handholes/manholes, steel & rigid conduits, marker posts, sweet sand | 2026-11-18 → 2027-01-05 (+48d) | 2026-11-24 → 2027-01-11 (+48d) |  | 80d → 44d |  |  |
| 1.3.2 | **SAR Material Approvals** | 2026-11-25 → 2027-01-12 (+48d) | 2026-12-09 → 2027-01-28 (+50d) |  |  |  |  |
| APR-1530 | SAR review - cable materials (DSS, FO, TDR coax) | 2026-11-25 → 2027-01-12 (+48d) | 2026-12-08 → 2027-01-20 (+43d) | 14d → 7d | 69d → 0d |  | was named SAR review & approval - cable materials (DSS, FO, TDR coax) |
| APR-1550 | SAR review & approval - civil materials (closures, handholes, conduits, markers, sand) | 2026-11-25 → 2027-01-12 (+48d) | 2026-12-08 → 2027-01-18 (+41d) | 14d → 5d | 119d → 44d |  |  |
| APR-1540 | SAR review & approval - equipment materials (TDR, weather, comms, UPS/panels, cloud HW) | 2026-11-26 → 2027-01-13 (+48d) | 2026-12-09 → 2027-01-21 (+43d) | 14d → 7d | 105d → 30d |  |  |
| 1.3.3 | **LONG-LEAD ITEMS (LL) - PO, Manufacture, FAT, Shipping, Customs & Delivery** | 2027-02-16 → 2027-01-19 (-28d) | 2027-05-28 → 2027-05-05 (-23d) |  |  |  |  |
| 1.3.3.1 | **LL-01 DSS cable NZS-DSS-C02** | 2027-02-16 → 2027-01-31 (-16d) | 2027-05-18 → 2027-05-02 (-16d) |  |  |  |  |
| PRC-DSS10 | [LL-01] Place PO & supplier kick-off - DSS cable NZS-DSS-C02 (5,500 LM) | 2027-02-16 → 2027-01-31 (-16d) | 2027-02-18 → 2027-02-02 (-16d) |  |  | APR-1530, SAR prior written approval - sub-contractors & suppliers → APR-1536 | constraint start on or after 2027-02-16 → none |
| PRC-DSS20 | [LL-01] Manufacture / supply - DSS cable NZS-DSS-C02 (5,500 LM) | 2027-02-19 → 2027-02-03 (-16d) | 2027-04-15 → 2027-03-30 (-16d) |  | 1d → 0d |  | resources Cost Distribution [381774] → Cost Distribution [352407] |
| FAT-DSS | [LL-01] FAT at manufacturer - DSS cable NZS-DSS-C02 (5,500 LM) | 2027-04-16 → 2027-03-31 (-16d) | 2027-04-17 → 2027-04-01 (-16d) |  | 1d → 0d |  | resources Cost Distribution [8850] → Cost Distribution [5310] |
| PRC-DSS30 | [LL-01] Shipping / import - DSS cable NZS-DSS-C02 (5,500 LM) | 2027-04-18 → 2027-04-02 (-16d) | 2027-05-08 → 2027-04-22 (-16d) |  | 1d → 0d |  |  |
| PRC-DSS40 | [LL-01] Customs clearance & SABER conformity - DSS cable NZS-DSS-C02 (5,500 LM) | 2027-05-09 → 2027-04-23 (-16d) | 2027-05-15 → 2027-04-29 (-16d) |  | 1d → 0d |  |  |
| PRC-DSS50 | [LL-01] Delivery to site (Heet) - DSS cable NZS-DSS-C02 (5,500 LM) | 2027-05-16 → 2027-04-30 (-16d) | 2027-05-18 → 2027-05-02 (-16d) |  | 1d → 0d |  |  |

| ID | Task | Start | Finish | Total float | Predecessors | Other |
| --- | --- | --- | --- | --- | --- | --- |
| 1.3.3.2 | **LL-02 48-core FO cable (DAS)** | 2027-02-16 → 2027-01-31 (-16d) | 2027-04-20 → 2027-04-04 (-16d) |  |  |  |
| PRC-FO10 | [LL-02] Place PO & supplier kick-off - Outdoor 48-core FO cable - DAS (5,500 LM) | 2027-02-16 → 2027-01-31 (-16d) | 2027-02-18 → 2027-02-02 (-16d) |  | APR-1530, SAR prior written approval - sub-contractors & suppliers → APR-1536 | constraint start on or after 2027-02-16 → none |
| PRC-FO20 | [LL-02] Manufacture / supply - Outdoor 48-core FO cable - DAS (5,500 LM) | 2027-02-19 → 2027-02-03 (-16d) | 2027-03-25 → 2027-03-09 (-16d) | 39d → 36d |  |  |
| FAT-FO | [LL-02] FAT at manufacturer - Outdoor 48-core FO cable - DAS (5,500 LM) | 2027-03-26 → 2027-03-10 (-16d) | 2027-03-27 → 2027-03-11 (-16d) | 39d → 36d |  | resources Cost Distribution [8850] → Cost Distribution [5310] |
| PRC-FO30 | [LL-02] Shipping / import - Outdoor 48-core FO cable - DAS (5,500 LM) | 2027-03-28 → 2027-03-12 (-16d) | 2027-04-10 → 2027-03-25 (-16d) | 39d → 36d |  |  |
| PRC-FO40 | [LL-02] Customs clearance & SABER conformity - Outdoor 48-core FO cable - DAS (5,500 LM) | 2027-04-11 → 2027-03-26 (-16d) | 2027-04-17 → 2027-04-01 (-16d) | 39d → 36d |  |  |
| PRC-FO50 | [LL-02] Delivery to site (Heet) - Outdoor 48-core FO cable - DAS (5,500 LM) | 2027-04-18 → 2027-04-02 (-16d) | 2027-04-20 → 2027-04-04 (-16d) | 39d → 36d |  |  |
| 1.3.3.3 | **LL-03 TDR coaxial cable** | 2027-02-16 → 2027-01-31 (-16d) | 2027-04-13 → 2027-03-28 (-16d) |  |  |  |
| PRC-TDRC10 | [LL-03] Place PO & supplier kick-off - TDR coaxial cable (5,500 LM) | 2027-02-16 → 2027-01-31 (-16d) | 2027-02-18 → 2027-02-02 (-16d) | 35d → 39d | APR-1530, SAR prior written approval - sub-contractors & suppliers → APR-1536 | constraint start on or after 2027-02-16 → none |
| PRC-TDRC20 | [LL-03] Manufacture / supply - TDR coaxial cable (5,500 LM) | 2027-02-19 → 2027-02-03 (-16d) | 2027-03-18 → 2027-03-02 (-16d) | 57d → 62d |  |  |
| FAT-TDRC | [LL-03] FAT at manufacturer - TDR coaxial cable (5,500 LM) | 2027-03-19 → 2027-03-03 (-16d) | 2027-03-20 → 2027-03-04 (-16d) | 57d → 62d |  | resources Cost Distribution [8850] → Cost Distribution [5310] |
| PRC-TDRC30 | [LL-03] Shipping / import - TDR coaxial cable (5,500 LM) | 2027-03-21 → 2027-03-05 (-16d) | 2027-04-03 → 2027-03-18 (-16d) | 57d → 62d |  |  |
| PRC-TDRC40 | [LL-03] Customs clearance & SABER conformity - TDR coaxial cable (5,500 LM) | 2027-04-04 → 2027-03-19 (-16d) | 2027-04-10 → 2027-03-25 (-16d) | 57d → 62d |  |  |
| PRC-TDRC50 | [LL-03] Delivery to site (Heet) - TDR coaxial cable (5,500 LM) | 2027-04-11 → 2027-03-26 (-16d) | 2027-04-13 → 2027-03-28 (-16d) | 57d → 62d |  |  |
| 1.3.3.4 | **LL-04 TDR system** | 2027-02-16 → 2027-01-24 (-23d) | 2027-05-28 → 2027-05-05 (-23d) |  |  |  |
| PRC-TDR10 | [LL-04] Place PO & supplier kick-off - TDR system (interrogator, antenna & accessories) | 2027-02-16 → 2027-01-24 (-23d) | 2027-02-18 → 2027-01-26 (-23d) | 66d → 85d | APR-1540, SAR prior written approval - sub-contractors & suppliers → APR-1540 | constraint start on or after 2027-02-16 → none |
| PRC-TDR20 | [LL-04] Manufacture / supply - TDR system (interrogator, antenna & accessories) | 2027-02-19 → 2027-01-27 (-23d) | 2027-04-29 → 2027-04-06 (-23d) | 106d → 132d |  | resources Cost Distribution [283200] → Cost Distribution [247800] |
| FAT-TDR | [LL-04] FAT at manufacturer - TDR system (interrogator, antenna & accessories) | 2027-04-30 → 2027-04-07 (-23d) | 2027-05-04 → 2027-04-11 (-23d) | 106d → 132d |  |  |
| PRC-TDR30 | [LL-04] Shipping / import - TDR system (interrogator, antenna & accessories) | 2027-05-05 → 2027-04-12 (-23d) | 2027-05-18 → 2027-04-25 (-23d) | 106d → 132d |  |  |
| PRC-TDR40 | [LL-04] Customs clearance & SABER conformity - TDR system (interrogator, antenna & accessories) | 2027-05-19 → 2027-04-26 (-23d) | 2027-05-25 → 2027-05-02 (-23d) | 106d → 132d |  |  |
| PRC-TDR50 | [LL-04] Delivery to site (Heet) - TDR system (interrogator, antenna & accessories) | 2027-05-26 → 2027-05-03 (-23d) | 2027-05-28 → 2027-05-05 (-23d) | 106d → 132d |  |  |
| 1.3.3.5 | **LL-05 Weather station sensors** | 2027-02-16 → 2027-01-24 (-23d) | 2027-04-20 → 2027-03-28 (-23d) |  |  |  |
| PRC-WX10 | [LL-05] Place PO & supplier kick-off - Weather station sensors | 2027-02-16 → 2027-01-24 (-23d) | 2027-02-18 → 2027-01-26 (-23d) | 96d → 116d | APR-1540, SAR prior written approval - sub-contractors & suppliers → APR-1540 | constraint start on or after 2027-02-16 → none |
| PRC-WX20 | [LL-05] Manufacture / supply - Weather station sensors | 2027-02-19 → 2027-01-27 (-23d) | 2027-03-25 → 2027-03-02 (-23d) | 147d → 175d |  | resources Cost Distribution [39825] → Cost Distribution [37170] |
| FAT-WX | [LL-05] FAT at manufacturer - Weather station sensors | 2027-03-26 → 2027-03-03 (-23d) | 2027-03-27 → 2027-03-04 (-23d) | 147d → 175d |  | resources Cost Distribution [8850] → Cost Distribution [5310] |
| PRC-WX30 | [LL-05] Shipping / import - Weather station sensors | 2027-03-28 → 2027-03-05 (-23d) | 2027-04-10 → 2027-03-18 (-23d) | 147d → 175d |  |  |
| PRC-WX40 | [LL-05] Customs clearance & SABER conformity - Weather station sensors | 2027-04-11 → 2027-03-19 (-23d) | 2027-04-17 → 2027-03-25 (-23d) | 147d → 175d |  |  |
| PRC-WX50 | [LL-05] Delivery to site (Heet) - Weather station sensors | 2027-04-18 → 2027-03-26 (-23d) | 2027-04-20 → 2027-03-28 (-23d) | 147d → 175d |  |  |
| 1.3.3.6 | **LL-06 Communication modules & SIM** | 2027-02-16 → 2027-01-24 (-23d) | 2027-04-09 → 2027-03-17 (-23d) |  |  |  |
| PRC-COM10 | [LL-06] Place PO & supplier kick-off - Communication modules & SIM hardware | 2027-02-16 → 2027-01-24 (-23d) | 2027-02-18 → 2027-01-26 (-23d) | 104d → 124d | APR-1540, SAR prior written approval - sub-contractors & suppliers → APR-1540 | constraint start on or after 2027-02-16 → none |
| PRC-COM20 | [LL-06] Manufacture / supply - Communication modules & SIM hardware | 2027-02-19 → 2027-01-27 (-23d) | 2027-03-18 → 2027-02-23 (-23d) | 159d → 187d |  |  |
| FAT-COM | [LL-06] FAT at manufacturer - Communication modules & SIM hardware | 2027-03-19 → 2027-02-24 (-23d) | 2027-03-20 → 2027-02-25 (-23d) | 159d → 187d |  | resources Cost Distribution [8850] → Cost Distribution [5310] |
| PRC-COM30 | [LL-06] Shipping / import - Communication modules & SIM hardware | 2027-03-21 → 2027-02-26 (-23d) | 2027-03-30 → 2027-03-07 (-23d) | 159d → 187d |  |  |
| PRC-COM40 | [LL-06] Customs clearance & SABER conformity - Communication modules & SIM hardware | 2027-03-31 → 2027-03-08 (-23d) | 2027-04-06 → 2027-03-14 (-23d) | 159d → 187d |  |  |
| PRC-COM50 | [LL-06] Delivery to site (Heet) - Communication modules & SIM hardware | 2027-04-07 → 2027-03-15 (-23d) | 2027-04-09 → 2027-03-17 (-23d) | 159d → 187d |  |  |
| 1.3.3.7 | **LL-07 UPS & electrical panels** | 2027-02-16 → 2027-01-24 (-23d) | 2027-05-03 → 2027-04-10 (-23d) |  |  |  |
| PRC-PWR10 | [LL-07] Place PO & supplier kick-off - UPS (min. 4 h) & electrical panels | 2027-02-16 → 2027-01-24 (-23d) | 2027-02-18 → 2027-01-26 (-23d) | 75d → 93d | APR-1540, SAR prior written approval - sub-contractors & suppliers → APR-1540 | constraint start on or after 2027-02-16 → none |
| PRC-PWR20 | [LL-07] Manufacture / supply - UPS (min. 4 h) & electrical panels | 2027-02-19 → 2027-01-27 (-23d) | 2027-04-15 → 2027-03-23 (-23d) | 118d → 144d |  | resources Cost Distribution [24544] → Cost Distribution [18880] |
| FAT-PWR | [LL-07] FAT at manufacturer - UPS (min. 4 h) & electrical panels | 2027-04-16 → 2027-03-24 (-23d) | 2027-04-18 → 2027-03-26 (-23d) | 118d → 144d |  |  |
| PRC-PWR30 | [LL-07] Shipping / import - UPS (min. 4 h) & electrical panels | 2027-04-19 → 2027-03-27 (-23d) | 2027-04-25 → 2027-04-02 (-23d) | 118d → 144d |  |  |
| PRC-PWR40 | [LL-07] Customs clearance & SABER conformity - UPS (min. 4 h) & electrical panels | 2027-04-26 → 2027-04-03 (-23d) | 2027-04-30 → 2027-04-07 (-23d) | 118d → 144d |  |  |
| PRC-PWR50 | [LL-07] Delivery to site (Heet) - UPS (min. 4 h) & electrical panels | 2027-05-01 → 2027-04-08 (-23d) | 2027-05-03 → 2027-04-10 (-23d) | 118d → 144d |  |  |
| 1.3.3.8 | **LL-08 Local-cloud hardware (KSA)** | 2027-03-14 → 2027-03-04 (-10d) | 2027-05-06 → 2027-05-04 (-2d) |  |  |  |
| PRC-CLD10 | [LL-08] Place PO & supplier kick-off - Local-cloud hardware & licences (KSA hosted) | 2027-03-14 → 2027-03-04 (-10d) | 2027-03-16 → 2027-03-14 (-2d) | 78d → 85d | APR-1540, APR-1620, SAR prior written approval - sub-contractors & suppliers → APR-1540, APR-1640 | constraint start on or after 2027-02-16 → none |
| PRC-CLD20 | [LL-08] Manufacture / supply - Local-cloud hardware & licences (KSA hosted) | 2027-03-17 → 2027-03-15 (-2d) | 2027-04-13 → 2027-04-11 (-2d) | 114d → 124d |  | resources Cost Distribution [380550] → Cost Distribution [202960] |
| FAT-CLD | [LL-08] FAT at manufacturer - Local-cloud hardware & licences (KSA hosted) | 2027-04-14 → 2027-04-12 (-2d) | 2027-04-16 → 2027-04-14 (-2d) | 114d → 124d |  |  |
| PRC-CLD30 | [LL-08] Shipping / import - Local-cloud hardware & licences (KSA hosted) | 2027-04-17 → 2027-04-15 (-2d) | 2027-04-26 → 2027-04-24 (-2d) | 114d → 124d |  |  |
| PRC-CLD40 | [LL-08] Customs clearance & SABER conformity - Local-cloud hardware & licences (KSA hosted) | 2027-04-27 → 2027-04-25 (-2d) | 2027-05-03 → 2027-05-01 (-2d) | 114d → 124d |  |  |
| PRC-CLD50 | [LL-08] Delivery to site (Heet) - Local-cloud hardware & licences (KSA hosted) | 2027-05-04 → 2027-05-02 (-2d) | 2027-05-06 → 2027-05-04 (-2d) | 114d → 124d |  |  |
| 1.3.3.9 | **LL-09 FO closures & accessories** | 2027-02-16 → 2027-01-19 (-28d) | 2027-04-11 → 2027-03-14 (-28d) |  |  |  |
| PRC-CLS10 | [LL-09] Place PO & supplier kick-off - FO closures, splice trays, connectors & pigtails | 2027-02-16 → 2027-01-19 (-28d) | 2027-02-18 → 2027-01-21 (-28d) | 31d → 44d | APR-1550, SAR prior written approval - sub-contractors & suppliers → APR-1550 | constraint start on or after 2027-02-16 → none |
| PRC-CLS20 | [LL-09] Manufacture / supply - FO closures, splice trays, connectors & pigtails | 2027-02-19 → 2027-01-22 (-28d) | 2027-03-18 → 2027-02-18 (-28d) | 52d → 69d |  | resources Cost Distribution [137942] → Cost Distribution [118236] |
| PRC-CLS30 | [LL-09] Shipping / import - FO closures, splice trays, connectors & pigtails | 2027-03-19 → 2027-02-19 (-28d) | 2027-04-01 → 2027-03-04 (-28d) | 52d → 69d |  |  |
| PRC-CLS40 | [LL-09] Customs clearance & SABER conformity - FO closures, splice trays, connectors & pigtails | 2027-04-02 → 2027-03-05 (-28d) | 2027-04-08 → 2027-03-11 (-28d) | 52d → 69d |  |  |
| PRC-CLS50 | [LL-09] Delivery to site (Heet) - FO closures, splice trays, connectors & pigtails | 2027-04-09 → 2027-03-12 (-28d) | 2027-04-11 → 2027-03-14 (-28d) | 52d → 69d |  |  |
| 1.3.4 | **Standard / Local Items - PO, Supply & Delivery (handholes, conduits, marker posts, sweet sand)** | 2027-02-16 → 2027-01-19 (-28d) | 2027-03-14 → 2027-02-14 (-28d) |  |  |  |
| PRC-CND10 | Place PO & supplier kick-off - Steel & rigid conduits | 2027-02-16 → 2027-01-19 (-28d) | 2027-02-18 → 2027-01-21 (-28d) | 40d → 51d | APR-1550, SAR prior written approval - sub-contractors & suppliers → APR-1550 | constraint start on or after 2027-02-16 → none |
| PRC-HH10 | Place PO & supplier kick-off - Handholes & manholes (precast) | 2027-02-16 → 2027-01-19 (-28d) | 2027-02-18 → 2027-01-21 (-28d) | 35d → 46d | APR-1550, SAR prior written approval - sub-contractors & suppliers → APR-1550 | constraint start on or after 2027-02-16 → none |
| PRC-MRK10 | Place PO & supplier kick-off - Marker posts, warning tape & route markers | 2027-02-16 → 2027-01-19 (-28d) | 2027-02-18 → 2027-01-21 (-28d) | 141d → 165d | APR-1550, SAR prior written approval - sub-contractors & suppliers → APR-1550 | constraint start on or after 2027-02-16 → none |
| PRC-SND10 | Arrange sweet-sand source, approval & stockpile at site | 2027-02-16 → 2027-01-19 (-28d) | 2027-02-22 → 2027-01-25 (-28d) | 62d → 79d |  | constraint start on or after 2027-02-16 → none; resources Cost Distribution [195187] → none |
| PRC-CND20 | Manufacture / supply - Steel & rigid conduits | 2027-02-19 → 2027-01-22 (-28d) | 2027-03-04 → 2027-02-04 (-28d) | 65d → 80d |  | resources Cost Distribution [68203.4] → Cost Distribution [74403.7] |
| PRC-HH20 | Manufacture / supply - Handholes & manholes (precast) | 2027-02-19 → 2027-01-22 (-28d) | 2027-03-11 → 2027-02-11 (-28d) | 58d → 73d |  | resources Cost Distribution [104433] → Cost Distribution [95730.1] |
| PRC-MRK20 | Manufacture / supply - Marker posts, warning tape & route markers | 2027-02-19 → 2027-01-22 (-28d) | 2027-03-04 → 2027-02-04 (-28d) | 211d → 244d |  | resources Cost Distribution [21240] → Cost Distribution [17700] |
| PRC-CND50 | Delivery to site (Heet) - Steel & rigid conduits | 2027-03-05 → 2027-02-05 (-28d) | 2027-03-07 → 2027-02-07 (-28d) | 65d → 80d |  |  |
| PRC-MRK50 | Delivery to site (Heet) - Marker posts, warning tape & route markers | 2027-03-05 → 2027-02-05 (-28d) | 2027-03-07 → 2027-02-07 (-28d) | 211d → 244d |  |  |
| PRC-HH50 | Delivery to site (Heet) - Handholes & manholes (precast) | 2027-03-12 → 2027-02-12 (-28d) | 2027-03-14 → 2027-02-14 (-28d) | 58d → 73d |  |  |
| 1.4 | **CONSTRUCTION (C)** | 2027-04-25 → 2027-01-19 (-96d) | 2027-10-05 → 2027-12-08 (+64d) |  |  |  |
| 1.4.1 | **Site Mobilization, Establishment & Demobilization** | 2026-12-13 → 2027-01-19 (+37d) | 2027-11-09 → 2027-12-08 (+29d) |  |  |  |
| MOB-1040 | Site establishment - offices & temporary facilities | 2026-12-13 → 2027-01-19 (+37d) | 2026-12-22 → 2027-01-28 (+37d) | 78d → 44d |  |  |
| MOB-3010 | Mobilize plant, equipment & labour; compound & logistics set-up | 2027-04-18 → 2027-03-17 (-32d) | 2027-04-22 → 2027-03-23 (-30d) | 1d → 16d | PRM-2120, APR-1520, APR-1510, SAR approval - Key Personnel & manpower schedule, MOB-1040, MOB-3005 → PRM-2120, APR-1520, APR-1510, MOB-1040, MOB-3005 |  |

| ID | Task | Start | Finish | Duration | Total float | Predecessors | Other |
| --- | --- | --- | --- | --- | --- | --- | --- |
| DEM-5100 | Demobilization & site clearance | 2027-11-03 → 2027-12-02 (+29d) | 2027-11-09 → 2027-12-08 (+29d) |  | 3d → 16d |  | resources Cost Distribution [47200]; Civil Crew [40 h] → Cost Distribution [35400]; Civil Crew [40 h] |
| CIV-110 | Section 1 - excavate trench (800x200 mm) & sweet-sand bedding, 1,100 LM | 2027-04-25 → 2027-03-24 (-32d) | 2027-05-10 → 2027-04-06 (-34d) | 12d → 10d | 1d → 16d |  | resources Cost Distribution [143137]; Trench Crew [96 h] → Cost Distribution [143137]; Trench Crew [80 h] |
| CIV-120 | Section 1 - handholes / manholes installation | 2027-05-11 → 2027-04-07 (-34d) | 2027-05-12 → 2027-04-08 (-34d) |  | 1d → 16d |  | resources Cost Distribution [13924.4]; Civil Crew [16 h] → Cost Distribution [15664.9]; Civil Crew [16 h] |
| CIV-130 | Section 1 - steel & rigid conduits at culverts / track crossings | 2027-05-11 → 2027-04-07 (-34d) | 2027-05-12 → 2027-04-08 (-34d) |  | 1d → 16d | CIV-110, PRC-CND50, PRM-2120 → CIV-110, PRC-CND50, PRM-2220 | resources Cost Distribution [11160.6]; Civil Crew [16 h] → Cost Distribution [9920.5]; Civil Crew [16 h] |
| CAB-110 | Section 1 - Layer 1: lay DSS cable, pre-installed connectors, OTDR test | 2027-05-20 → 2027-05-03 (-17d) | 2027-05-25 → 2027-05-06 (-19d) |  |  |  | resources Cost Distribution [41114.2]; Cable Crew [32 h] → Cost Distribution [46987.6]; Cable Crew [32 h] |
| CAB-120 | Section 1 - backfill & compaction - layer 1 | 2027-05-26 → 2027-05-09 (-17d) | 2027-05-27 → 2027-05-10 (-17d) |  |  |  | resources Cost Distribution [26024.9]; Trench Crew [16 h] → Cost Distribution [39037.3]; Trench Crew [16 h] |
| CAB-130 | Section 1 - Layer 2: pull 48-core FO cable (DAS), OTDR test | 2027-05-30 → 2027-05-11 (-19d) | 2027-06-02 → 2027-05-20 (-13d) |  |  |  |  |
| SPL-110 | Section 1 - fusion splicing (<=0.1 dB), FO closures & OTDR splice-loss test | 2027-06-03 → 2027-05-23 (-11d) | 2027-06-07 → 2027-05-25 (-13d) |  |  |  | resources Cost Distribution [11823.6]; Splicing & OTDR Team [24 h] → Cost Distribution [15764.8]; Splicing & OTDR Team [24 h] |
| CAB-140 | Section 1 - backfill & compaction - layer 2 | 2027-06-08 → 2027-05-26 (-13d) | 2027-06-09 → 2027-05-27 (-13d) |  |  |  | resources Cost Distribution [26024.9]; Trench Crew [16 h] → Cost Distribution [39037.3]; Trench Crew [16 h] |
| CAB-150 | Section 1 - Layer 3: lay TDR coaxial cable, continuity test | 2027-06-10 → 2027-05-30 (-11d) | 2027-06-14 → 2027-06-01 (-13d) |  |  |  |  |
| CAB-160 | Section 1 - final backfill, compaction & reinstatement | 2027-06-15 → 2027-06-02 (-13d) | 2027-06-16 → 2027-06-03 (-13d) |  |  |  | resources Cost Distribution [26024.9]; Trench Crew [16 h] → Cost Distribution [39037.3]; Trench Crew [16 h] |
| CIV-140 | Section 1 - marker posts, warning tape & route markers | 2027-06-17 → 2027-06-06 (-11d) | 2027-06-17 → 2027-06-06 (-11d) |  | 77d → 89d |  | resources Cost Distribution [2832]; Civil Crew [8 h] → Cost Distribution [3540]; Civil Crew [8 h] |
| TST-110 | Section 1 - final OTDR certification & test record | 2027-06-17 → 2027-06-06 (-11d) | 2027-06-17 → 2027-06-06 (-11d) |  | 75d → 87d |  | resources Cost Distribution [991.2]; Splicing & OTDR Team [8 h] → Cost Distribution [1585.92]; Splicing & OTDR Team [8 h] |
| CIV-210 | Section 2 - excavate trench (800x200 mm) & sweet-sand bedding, 1,100 LM | 2027-05-11 → 2027-04-07 (-34d) | 2027-06-01 → 2027-04-20 (-42d) | 12d → 10d | 19d → 26d |  | resources Cost Distribution [143137]; Trench Crew [96 h] → Cost Distribution [143137]; Trench Crew [80 h] |
| CIV-220 | Section 2 - handholes / manholes installation | 2027-06-02 → 2027-04-21 (-42d) | 2027-06-03 → 2027-04-22 (-42d) |  | 19d → 26d |  | resources Cost Distribution [13924.4]; Civil Crew [16 h] → Cost Distribution [15664.9]; Civil Crew [16 h] |
| CIV-230 | Section 2 - steel & rigid conduits at culverts / track crossings | 2027-06-02 → 2027-04-21 (-42d) | 2027-06-03 → 2027-04-22 (-42d) |  | 19d → 26d | CIV-210, PRC-CND50, PRM-2120 → CIV-210, PRC-CND50, PRM-2220 | resources Cost Distribution [11160.6]; Civil Crew [16 h] → Cost Distribution [9920.5]; Civil Crew [16 h] |
| CAB-210 | Section 2 - Layer 1: lay DSS cable, pre-installed connectors, OTDR test |  |  |  | 19d → 0d | CIV-220, CIV-230, PRC-DSS50, CAB-110 → CIV-220, CIV-230, PRC-DSS50, CAB-160 | resources Cost Distribution [41114.2]; Cable Crew [32 h] → Cost Distribution [46987.6]; Cable Crew [32 h] |
| CAB-220 | Section 2 - backfill & compaction - layer 1 |  |  |  | 19d → 0d |  | resources Cost Distribution [26024.9]; Trench Crew [16 h] → Cost Distribution [39037.3]; Trench Crew [16 h] |
| CAB-230 | Section 2 - Layer 2: pull 48-core FO cable (DAS), OTDR test |  |  |  | 19d → 0d | CAB-220, PRC-FO50, CAB-130 → CAB-220, PRC-FO50 |  |
| SPL-210 | Section 2 - fusion splicing (<=0.1 dB), FO closures & OTDR splice-loss test |  |  |  | 19d → 0d |  | resources Cost Distribution [11823.6]; Splicing & OTDR Team [24 h] → Cost Distribution [15764.8]; Splicing & OTDR Team [24 h] |
| CAB-240 | Section 2 - backfill & compaction - layer 2 |  |  |  | 19d → 0d |  | resources Cost Distribution [26024.9]; Trench Crew [16 h] → Cost Distribution [39037.3]; Trench Crew [16 h] |
| CAB-250 | Section 2 - Layer 3: lay TDR coaxial cable, continuity test |  |  |  | 19d → 0d | CAB-240, PRC-TDRC50, CAB-150 → CAB-240, PRC-TDRC50 |  |
| CAB-260 | Section 2 - final backfill, compaction & reinstatement |  |  |  | 19d → 0d |  | resources Cost Distribution [26024.9]; Trench Crew [16 h] → Cost Distribution [39037.3]; Trench Crew [16 h] |
| CIV-240 | Section 2 - marker posts, warning tape & route markers |  |  |  | 66d → 69d |  | resources Cost Distribution [2832]; Civil Crew [8 h] → Cost Distribution [3540]; Civil Crew [8 h] |
| TST-210 | Section 2 - final OTDR certification & test record |  |  |  | 64d → 67d |  | resources Cost Distribution [991.2]; Splicing & OTDR Team [8 h] → Cost Distribution [1585.92]; Splicing & OTDR Team [8 h] |
| CIV-310 | Section 3 - excavate trench (800x200 mm) & sweet-sand bedding, 1,100 LM | 2027-06-17 → 2027-06-06 (-11d) | 2027-07-04 → 2027-06-17 (-17d) | 12d → 10d | 0d → 8d | CIV-110, CAB-160 → CIV-210, CAB-160 | resources Cost Distribution [143137]; Trench Crew [96 h] → Cost Distribution [143137]; Trench Crew [80 h] |
| CIV-320 | Section 3 - handholes / manholes installation | 2027-07-05 → 2027-06-20 (-15d) | 2027-07-06 → 2027-06-21 (-15d) |  | 0d → 8d |  | resources Cost Distribution [13924.4]; Civil Crew [16 h] → Cost Distribution [15664.9]; Civil Crew [16 h] |
| CIV-330 | Section 3 - steel & rigid conduits at culverts / track crossings | 2027-07-05 → 2027-06-20 (-15d) | 2027-07-06 → 2027-06-21 (-15d) |  | 0d → 8d | CIV-310, PRC-CND50, PRM-2120 → CIV-310, PRC-CND50, PRM-2220 | resources Cost Distribution [11160.6]; Civil Crew [16 h] → Cost Distribution [9920.5]; Civil Crew [16 h] |
| CAB-310 | Section 3 - Layer 1: lay DSS cable, pre-installed connectors, OTDR test | 2027-07-07 → 2027-07-04 (-3d) | 2027-07-12 → 2027-07-07 (-5d) |  |  | CIV-320, CIV-330, PRC-DSS50, CAB-210 → CIV-320, CIV-330, PRC-DSS50, CAB-260 | resources Cost Distribution [41114.2]; Cable Crew [32 h] → Cost Distribution [46987.6]; Cable Crew [32 h] |
| CAB-320 | Section 3 - backfill & compaction - layer 1 | 2027-07-13 → 2027-07-08 (-5d) | 2027-07-14 → 2027-07-11 (-3d) |  |  |  | resources Cost Distribution [26024.9]; Trench Crew [16 h] → Cost Distribution [39037.3]; Trench Crew [16 h] |
| CAB-330 | Section 3 - Layer 2: pull 48-core FO cable (DAS), OTDR test | 2027-07-15 → 2027-07-12 (-3d) | 2027-07-20 → 2027-07-15 (-5d) |  |  | CAB-320, PRC-FO50, CAB-230 → CAB-320, PRC-FO50 |  |
| SPL-310 | Section 3 - fusion splicing (<=0.1 dB), FO closures & OTDR splice-loss test | 2027-07-21 → 2027-07-18 (-3d) | 2027-07-25 → 2027-07-20 (-5d) |  |  |  | resources Cost Distribution [11823.6]; Splicing & OTDR Team [24 h] → Cost Distribution [15764.8]; Splicing & OTDR Team [24 h] |
| CAB-340 | Section 3 - backfill & compaction - layer 2 | 2027-07-26 → 2027-07-21 (-5d) | 2027-07-27 → 2027-07-22 (-5d) |  |  |  | resources Cost Distribution [26024.9]; Trench Crew [16 h] → Cost Distribution [39037.3]; Trench Crew [16 h] |
| CAB-350 | Section 3 - Layer 3: lay TDR coaxial cable, continuity test | 2027-07-28 → 2027-07-25 (-3d) | 2027-08-01 → 2027-07-27 (-5d) |  |  | CAB-340, PRC-TDRC50, CAB-250 → CAB-340, PRC-TDRC50 |  |
| CAB-360 | Section 3 - final backfill, compaction & reinstatement | 2027-08-02 → 2027-07-28 (-5d) | 2027-08-03 → 2027-07-29 (-5d) |  |  |  | resources Cost Distribution [26024.9]; Trench Crew [16 h] → Cost Distribution [39037.3]; Trench Crew [16 h] |
| CIV-340 | Section 3 - marker posts, warning tape & route markers | 2027-08-04 → 2027-08-01 (-3d) | 2027-08-04 → 2027-08-01 (-3d) |  | 43d → 49d |  | resources Cost Distribution [2832]; Civil Crew [8 h] → Cost Distribution [3540]; Civil Crew [8 h] |
| TST-310 | Section 3 - final OTDR certification & test record | 2027-08-04 → 2027-08-01 (-3d) | 2027-08-04 → 2027-08-01 (-3d) |  | 41d → 47d |  | resources Cost Distribution [991.2]; Splicing & OTDR Team [8 h] → Cost Distribution [1585.92]; Splicing & OTDR Team [8 h] |
| CIV-410 | Section 4 - excavate trench (800x200 mm) & sweet-sand bedding, 1,100 LM |  | 2027-07-19 → 2027-07-15 (-4d) | 12d → 10d | 19d → 8d | CIV-210, CAB-260 → CIV-310, CAB-260 | resources Cost Distribution [143137]; Trench Crew [96 h] → Cost Distribution [143137]; Trench Crew [80 h] |
| CIV-420 | Section 4 - handholes / manholes installation | 2027-07-20 → 2027-07-18 (-2d) | 2027-07-21 → 2027-07-19 (-2d) |  | 19d → 8d |  | resources Cost Distribution [13924.4]; Civil Crew [16 h] → Cost Distribution [15664.9]; Civil Crew [16 h] |
| CIV-430 | Section 4 - steel & rigid conduits at culverts / track crossings | 2027-07-20 → 2027-07-18 (-2d) | 2027-07-21 → 2027-07-19 (-2d) |  | 19d → 8d | CIV-410, PRC-CND50, PRM-2120 → CIV-410, PRC-CND50, PRM-2220 | resources Cost Distribution [11160.6]; Civil Crew [16 h] → Cost Distribution [9920.5]; Civil Crew [16 h] |
| CAB-410 | Section 4 - Layer 1: lay DSS cable, pre-installed connectors, OTDR test | 2027-07-22 → 2027-08-01 (+10d) | 2027-07-27 → 2027-08-04 (+8d) |  | 19d → 0d | CIV-420, CIV-430, PRC-DSS50, CAB-310 → CIV-420, CIV-430, PRC-DSS50, CAB-360 | resources Cost Distribution [41114.2]; Cable Crew [32 h] → Cost Distribution [46987.6]; Cable Crew [32 h] |
| CAB-420 | Section 4 - backfill & compaction - layer 1 | 2027-07-28 → 2027-08-05 (+8d) | 2027-07-29 → 2027-08-08 (+10d) |  | 19d → 0d |  | resources Cost Distribution [26024.9]; Trench Crew [16 h] → Cost Distribution [39037.3]; Trench Crew [16 h] |
| CAB-430 | Section 4 - Layer 2: pull 48-core FO cable (DAS), OTDR test | 2027-08-01 → 2027-08-09 (+8d) | 2027-08-04 → 2027-08-12 (+8d) |  | 19d → 0d | CAB-420, PRC-FO50, CAB-330 → CAB-420, PRC-FO50 |  |
| SPL-410 | Section 4 - fusion splicing (<=0.1 dB), FO closures & OTDR splice-loss test | 2027-08-05 → 2027-08-15 (+10d) | 2027-08-09 → 2027-08-17 (+8d) |  | 20d → 0d |  | resources Cost Distribution [11823.6]; Splicing & OTDR Team [24 h] → Cost Distribution [15764.8]; Splicing & OTDR Team [24 h] |
| CAB-440 | Section 4 - backfill & compaction - layer 2 | 2027-08-10 → 2027-08-18 (+8d) | 2027-08-11 → 2027-08-19 (+8d) |  | 20d → 0d |  | resources Cost Distribution [26024.9]; Trench Crew [16 h] → Cost Distribution [39037.3]; Trench Crew [16 h] |
| CAB-450 | Section 4 - Layer 3: lay TDR coaxial cable, continuity test | 2027-08-12 → 2027-08-22 (+10d) | 2027-08-16 → 2027-08-24 (+8d) |  | 20d → 0d | CAB-440, PRC-TDRC50, CAB-350 → CAB-440, PRC-TDRC50 |  |
| CAB-460 | Section 4 - final backfill, compaction & reinstatement | 2027-08-17 → 2027-08-25 (+8d) | 2027-08-18 → 2027-08-26 (+8d) |  | 30d → 0d |  | resources Cost Distribution [26024.9]; Trench Crew [16 h] → Cost Distribution [39037.3]; Trench Crew [16 h] |
| CIV-440 | Section 4 - marker posts, warning tape & route markers | 2027-08-19 → 2027-08-29 (+10d) | 2027-08-19 → 2027-08-29 (+10d) |  | 32d → 29d |  | resources Cost Distribution [2832]; Civil Crew [8 h] → Cost Distribution [3540]; Civil Crew [8 h] |
| TST-410 | Section 4 - final OTDR certification & test record | 2027-08-19 → 2027-08-29 (+10d) | 2027-08-19 → 2027-08-29 (+10d) |  | 30d → 27d |  | resources Cost Distribution [991.2]; Splicing & OTDR Team [8 h] → Cost Distribution [1585.92]; Splicing & OTDR Team [8 h] |
| CIV-510 | Section 5 - excavate trench (800x200 mm) & sweet-sand bedding, 1,100 LM | 2027-08-04 → 2027-08-01 (-3d) | 2027-08-19 → 2027-08-12 (-7d) | 12d → 10d | 0d → 8d | CIV-310, CAB-360 → CIV-410, CAB-360 | resources Cost Distribution [143137]; Trench Crew [96 h] → Cost Distribution [143137]; Trench Crew [80 h] |
| CIV-520 | Section 5 - handholes / manholes installation | 2027-08-22 → 2027-08-15 (-7d) | 2027-08-23 → 2027-08-16 (-7d) |  | 0d → 8d |  | resources Cost Distribution [13924.4]; Civil Crew [16 h] → Cost Distribution [15664.9]; Civil Crew [16 h] |
| CIV-530 | Section 5 - steel & rigid conduits at culverts / track crossings | 2027-08-22 → 2027-08-15 (-7d) | 2027-08-23 → 2027-08-16 (-7d) |  | 0d → 8d | CIV-510, PRC-CND50, PRM-2120 → CIV-510, PRC-CND50, PRM-2220 | resources Cost Distribution [11160.5]; Civil Crew [16 h] → Cost Distribution [9920.48]; Civil Crew [16 h] |
| CAB-510 | Section 5 - Layer 1: lay DSS cable, pre-installed connectors, OTDR test | 2027-08-24 → 2027-08-29 (+5d) | 2027-08-29 → 2027-09-01 (+3d) |  |  | CIV-520, CIV-530, PRC-DSS50, CAB-410 → CIV-520, CIV-530, PRC-DSS50, CAB-460 | resources Cost Distribution [41114.2]; Cable Crew [32 h] → Cost Distribution [46987.6]; Cable Crew [32 h] |
| CAB-520 | Section 5 - backfill & compaction - layer 1 | 2027-08-30 → 2027-09-02 (+3d) | 2027-08-31 → 2027-09-05 (+5d) |  |  |  | resources Cost Distribution [26024.9]; Trench Crew [16 h] → Cost Distribution [39037.3]; Trench Crew [16 h] |
| CAB-530 | Section 5 - Layer 2: pull 48-core FO cable (DAS), OTDR test | 2027-09-01 → 2027-09-06 (+5d) | 2027-09-06 → 2027-09-09 (+3d) |  |  | CAB-520, PRC-FO50, CAB-430 → CAB-520, PRC-FO50 |  |
| SPL-510 | Section 5 - fusion splicing (<=0.1 dB), FO closures & OTDR splice-loss test | 2027-09-07 → 2027-09-12 (+5d) | 2027-09-09 → 2027-09-14 (+5d) |  |  |  | resources Cost Distribution [11823.6]; Splicing & OTDR Team [24 h] → Cost Distribution [15764.8]; Splicing & OTDR Team [24 h] |
| CAB-540 | Section 5 - backfill & compaction - layer 2 | 2027-09-12 → 2027-09-15 (+3d) | 2027-09-13 → 2027-09-16 (+3d) |  |  |  | resources Cost Distribution [26024.9]; Trench Crew [16 h] → Cost Distribution [39037.3]; Trench Crew [16 h] |
| CAB-550 | Section 5 - Layer 3: lay TDR coaxial cable, continuity test | 2027-09-14 → 2027-09-19 (+5d) | 2027-09-16 → 2027-09-21 (+5d) |  |  | CAB-540, PRC-TDRC50, CAB-450 → CAB-540, PRC-TDRC50 |  |
| CAB-560 | Section 5 - final backfill, compaction & reinstatement | 2027-09-19 → 2027-09-22 (+3d) | 2027-09-20 → 2027-09-26 (+6d) |  |  |  | resources Cost Distribution [26024.9]; Trench Crew [16 h] → Cost Distribution [39037.3]; Trench Crew [16 h] |
| CIV-540 | Section 5 - marker posts, warning tape & route markers | 2027-09-21 → 2027-09-27 (+6d) | 2027-09-21 → 2027-09-27 (+6d) |  |  |  | resources Cost Distribution [2832]; Civil Crew [8 h] → Cost Distribution [3540]; Civil Crew [8 h] |
| TST-510 | Section 5 - final OTDR certification & test record | 2027-09-21 → 2027-09-27 (+6d) | 2027-09-21 → 2027-09-27 (+6d) |  |  |  | resources Cost Distribution [991.2]; Splicing & OTDR Team [8 h] → Cost Distribution [1585.92]; Splicing & OTDR Team [8 h] |
| 1.4.3 | **Station Power, Shelter & Field Systems (TDR, Weather, Comms)** | 2027-04-25 → 2027-03-24 (-32d) | 2027-09-22 → 2027-09-28 (+6d) |  |  |  |  |
| SHL-3410 | Shelter expansion - civil works (if required per assessment) | 2027-04-25 → 2027-03-24 (-32d) | 2027-05-04 → 2027-04-04 (-30d) |  | 79d → 104d | PRM-2120, APR-1560, MOB-3010 → PRM-2320, APR-1580, MOB-3010 | resources Cost Distribution [3776]; Civil Crew [64 h] → Cost Distribution [7552]; Civil Crew [64 h] |
| PWR-3420 | Electrical installation - panels & power upgrade (incl. SEC connection) | 2027-05-05 → 2027-04-11 (-24d) | 2027-05-12 → 2027-04-18 (-24d) |  | 79d → 100d | SHL-3410, PRC-PWR50 → SHL-3410, PRC-PWR50, PRM-2420 | was named Electrical installation - panels & power upgrade |
| PWR-3430 | UPS installation & 4-hour autonomy test | 2027-05-13 → 2027-04-19 (-24d) | 2027-05-23 → 2027-04-21 (-32d) |  | 79d → 100d |  | resources Cost Distribution [3776]; Electrical Crew [24 h] → Cost Distribution [5664]; Electrical Crew [24 h] |
| COM-3710 | Communication modules installation | 2027-05-24 → 2027-04-22 (-32d) | 2027-05-25 → 2027-04-25 (-30d) |  | 83d → 104d |  |  |
| WX-3610 | Weather station sensors installation | 2027-05-24 → 2027-04-22 (-32d) | 2027-05-26 → 2027-04-26 (-30d) |  | 82d → 103d |  |  |
| COM-3720 | SIM activation, alert & e-mail distribution configuration | 2027-05-26 → 2027-04-26 (-30d) | 2027-05-30 → 2027-04-28 (-32d) |  | 83d → 104d | COM-3710 → COM-3710, PRM-2520 |  |
| WX-3620 | Weather station integration with data logger | 2027-05-27 → 2027-04-27 (-30d) | 2027-05-31 → 2027-04-29 (-32d) |  | 82d → 103d |  | resources Cost Distribution [5310]; Commissioning Team [48 h] → Cost Distribution [7965]; Commissioning Team [48 h] |
| TDR-3510 | TDR system installation - interrogator & antenna | 2027-05-30 → 2027-05-06 (-24d) | 2027-06-03 → 2027-05-12 (-22d) |  | 75d → 90d |  | resources Cost Distribution [35400]; Commissioning Team [80 h] → Cost Distribution [53100]; Commissioning Team [80 h] |

| ID | Task | Start | Finish | Duration | Total float | Predecessors | Other |
| --- | --- | --- | --- | --- | --- | --- | --- |
| TDR-3520 | TDR configuration, calibration & pre-commissioning | 2027-09-19 → 2027-09-22 (+3d) | 2027-09-22 → 2027-09-28 (+6d) |  |  |  | resources Cost Distribution [35400]; Commissioning Team [64 h] → Cost Distribution [53100]; Commissioning Team [64 h] |
| 1.4.4 | **Local Cloud, Cybersecurity & Integration Installation** | 2027-05-09 → 2027-05-05 (-4d) | 2027-10-05 → 2027-10-10 (+5d) |  |  |  |  |
| CLD-3810 | Local KSA cloud infrastructure - provisioning & set-up | 2027-05-09 → 2027-05-05 (-4d) | 2027-05-24 → 2027-05-20 (-4d) |  | 76d → 84d | PRC-CLD50, APR-1620 → PRC-CLD50, APR-1640 | resources Cost Distribution [65962]; IT/OT Engineers [128 h] → Cost Distribution [152220]; IT/OT Engineers [128 h] |
| CLD-3820 | Local KSA cloud infrastructure - hardening & connectivity | 2027-05-25 → 2027-05-23 (-2d) | 2027-06-03 → 2027-06-01 (-2d) |  | 78d → 84d |  | resources Cost Distribution [60888]; IT/OT Engineers [128 h] → Cost Distribution [152220]; IT/OT Engineers [128 h] |
| CYB-3920 | Cybersecurity controls implementation & hardening | 2027-05-25 → 2027-05-23 (-2d) | 2027-06-07 → 2027-06-03 (-4d) |  | 76d → 99d | CLD-3810, APR-1620 → CLD-3810, APR-1640 | resources Cost Distribution [169920]; IT/OT Engineers [160 h] → Cost Distribution [226560]; IT/OT Engineers [160 h] |
| INT-4010 | Integration with existing system & iSiteCentral - interfaces & data mapping | 2027-09-26 → 2027-09-29 (+3d) | 2027-10-05 → 2027-10-10 (+5d) |  |  | CLD-3820, APR-1650, TDR-3520, COM-3720, WX-3620 → CLD-3820, APR-1650, PRM-2620, TDR-3520, COM-3720, WX-3620 |  |
| 1.5 | **TESTING, COMMISSIONING & HANDOVER (TC)** | 2027-06-08 → 2027-06-06 (-2d) | 2027-11-15 → 2028-01-02 (+48d) |  |  |  |  |
| 1.5.1 | **Testing & Site Acceptance (OTDR, SAT, Integration, Cyber Audit)** | 2027-06-08 → 2027-06-06 (-2d) | 2027-10-12 → 2027-11-10 (+29d) |  |  |  |  |
| CYB-3930 | Third-party cybersecurity audit | 2027-06-08 → 2027-06-06 (-2d) | 2027-06-21 → 2027-06-17 (-4d) |  | 76d → 99d |  | resources Cost Distribution [283200] → Cost Distribution [113280] |
| CYB-3940 | Audit findings closure & verification | 2027-06-22 → 2027-06-20 (-2d) | 2027-06-27 → 2027-06-23 (-4d) |  | 76d → 99d |  | resources Cost Distribution [113280] → Cost Distribution [56640] |
| TST-4110 | Full-route OTDR certification report & as-installed test records | 2027-09-22 → 2027-09-28 (+6d) | 2027-09-26 → 2027-09-29 (+3d) |  |  |  | resources Cost Distribution [4956] → Cost Distribution [1982.4] |
| INT-4020 | End-to-end integration test with existing system & iSiteCentral (part of SAT) | 2027-10-06 → 2027-11-04 (+29d) | 2027-10-12 → 2027-11-10 (+29d) |  |  | MS-070, INT-4010 → CNT-0100, INT-4010, PRM-3120 |  |
| TST-4210 | SAT - site acceptance tests (sensors, power, communications, operational) | 2027-10-06 → 2027-11-04 (+29d) | 2027-10-12 → 2027-11-10 (+29d) |  |  | TST-4110, APR-1670, MS-070 → TST-4110, PRM-3120, APR-1670, CNT-0100 | resources Cost Distribution [88500]; Commissioning Team [80 h] → Cost Distribution [106200]; Commissioning Team [80 h] |
| 1.5.2 | **Commissioning & Performance Validation** | 2027-10-13 → 2027-11-11 (+29d) | 2027-11-02 → 2027-12-01 (+29d) |  |  |  |  |
| CMS-4310 | System commissioning & calibration - DAS, DSS, TDR & weather station | 2027-10-13 → 2027-11-11 (+29d) | 2027-10-19 → 2027-11-17 (+29d) |  |  |  |  |
| CMS-4320 | Trial operation - baseline data collection & performance validation | 2027-10-20 → 2027-11-18 (+29d) | 2027-11-02 → 2027-12-01 (+29d) |  | 2d → 0d |  | resources Cost Distribution [75968.4]; Commissioning Team [160 h] → Cost Distribution [31718.4]; Commissioning Team [160 h] |
| 1.5.3 | **Documentation & Training** | 2027-10-20 → 2027-11-18 (+29d) | 2027-11-10 → 2027-12-09 (+29d) |  |  |  |  |
| DOC-5020 | As-built drawings (3 sets, hard + soft) - final revision after SAT | 2027-10-20 → 2027-11-18 (+29d) | 2027-10-27 → 2027-11-25 (+29d) |  | 0d → 10d |  |  |
| DOC-5030 | O&M manuals (3 sets) - final revision | 2027-10-20 → 2027-11-18 (+29d) | 2027-10-27 → 2027-11-25 (+29d) |  | 0d → 10d |  |  |
| DOC-5040 | User training for SAR staff (5 days) | 2027-10-20 → 2027-11-18 (+29d) | 2027-10-26 → 2027-11-24 (+29d) |  | 8d → 21d |  | resources Cost Distribution [142898]; Commissioning Team [80 h] → Cost Distribution [38822]; Commissioning Team [80 h] |
| DOC-5010 | Technical reports - TDR, DAS (seismic), DSS strain, weather data & alerts | 2027-11-03 → 2027-12-02 (+29d) | 2027-11-10 → 2027-12-09 (+29d) |  | 2d → 0d |  | resources Cost Distribution [44250]; Document Control / Tech Writers [96 h] → Cost Distribution [88500]; Document Control / Tech Writers [96 h] |
| 1.5.4 | **Handover Submittals (Contractor)** | 2027-10-28 → 2027-12-12 (+45d) | 2027-10-31 → 2027-12-27 (+57d) |  |  |  |  |
| DOC-5050 | Handover dossier - QA/QC, material test & HSE records, reports - compile & submit | 2027-10-28 → 2027-12-12 (+45d) | 2027-10-31 → 2027-12-13 (+43d) |  |  | DOC-5020, DOC-5030 → DOC-5010, DOC-5020, DOC-5030 | was named Handover dossier - as-builts, O&M manuals, QA/QC, material test & HSE records - compile & submit; resources Cost Distribution [3835] → none |
| 1.5.5 | **SAR Acceptance & Formal Handover** | 2027-11-01 → 2027-12-14 (+43d) | 2027-11-15 → 2028-01-02 (+48d) |  |  |  |  |
| APR-5060 | SAR review of handover dossier (as-builts, O&M, reports) | 2027-11-01 → 2027-12-14 (+43d) | 2027-11-14 → 2027-12-22 (+38d) | 14d → 7d |  |  | was named SAR review & acceptance of handover dossier (as-builts, O&M, reports) |
| HND-5090 | Formal handover & Taking-Over certificate (SAR) | 2027-11-15 → 2028-01-02 (+48d) | 2027-11-15 → 2028-01-02 (+48d) |  |  | APR-5060, DEM-5100, DOC-5010 → APR-5080, DEM-5100 | resources Cost Distribution [61242] → Cost Distribution [16638] |
| 1.6 | **PERMITS & AUTHORITY APPROVALS (PA)** | 2026-11-25 → 2027-01-11 (+47d) | 2027-04-15 → 2027-09-06 (+144d) |  |  |  |  |
| PRM-1110 | Prepare & submit WP-01 request in Work Permit Portal (survey & assessment) | 2026-11-25 → 2027-01-11 (+47d) | 2026-11-26 → 2027-01-11 (+46d) | 2d → 1d | 1d → 17d | MOB-1020, MOB-1030, Insurance certificates (CAR, marine cargo, professional indemnity, plant) - submit to SAR → MOB-1020, MOB-1030 | was named Permit 1 - prepare & submit work permit request for site access & survey (Work Permit Portal) |
| PRM-1120 | SAR review & issue WP-01 (Work Permit Portal) | 2026-11-27 → 2027-01-12 (+46d) | 2026-12-10 → 2027-01-18 (+39d) | 14d → 5d | 3d → 17d |  | was named SAR review & issue Permit 1 (site access & survey) |
| PRM-2110 | Prepare & submit WP-02 (route construction works, Sections 1-5) in Work Permit Portal | 2027-03-31 → 2027-03-02 (-29d) | 2027-04-01 → 2027-03-03 (-29d) |  | 1d → 16d | APR-1560, APR-1520, MOB-1030 → PRM-2105, APR-1580 | was named Permit 2 - prepare & submit work permit request for execution (route works, crossings, station works; TTF02, PICOP, PTS register) |
| PRM-2120 | SAR review & issue WP-02 | 2027-04-02 → 2027-03-04 (-29d) | 2027-04-15 → 2027-03-16 (-30d) | 14d → 5d | 3d → 16d |  | was named SAR review & issue Permit 2 (start of execution) |

## Version 4 (data date 2027-01-03, saved 2026-11-23)

Note of the change: Flatten WBS: remove PROJECT MANAGEMENT & MILESTONES node; renumber 1.1-1.8

Last finish 2029-01-02 → 2027-12-20 (-379d).

Added:

| ID | Task | Duration | Start | Finish | Predecessors | Resources |
| --- | --- | --- | --- | --- | --- | --- |
| MS-130 | DLP Start - 12-month defects liability period begins at Taking-Over (BoQ item 29; no activity, no cost) | 0d | 2027-12-20 | 2027-12-20 | MS-120 |  |
| 1.2 | **PRELIMINARIES & GENERAL REQUIREMENTS** |  | 2027-01-03 | 2027-12-20 |  |  |
| MOB-1051 | Site security, fencing & traffic management - construction period (LOE) | 96d | 2027-06-14 | 2027-10-26 | CIV-110 SS, CAB-560 FF | Cost Distribution [302670] |
| MOB-1081 | Protection Officer on site - construction period (LOE) | 96d | 2027-06-14 | 2027-10-26 | CIV-110 SS, CAB-560 FF | Cost Distribution [42480]; Protection Officer [768 h] |
| MOB-1052 | Site security, fencing & traffic management - testing & commissioning period (LOE) | 20d | 2027-11-10 | 2027-12-07 | TST-4210 SS, CMS-4320 FF | Cost Distribution [40356] |
| MOB-1082 | Protection Officer on site - testing & commissioning period (LOE) | 20d | 2027-11-10 | 2027-12-07 | TST-4210 SS, CMS-4320 FF | Cost Distribution [5664]; Protection Officer [160 h] |
| MOB-1053 | Site security, fencing & traffic management - handover period (LOE) | 9d | 2027-12-08 | 2027-12-20 | DOC-5010 SS, HND-5090 FF | Cost Distribution [20178] |
| MOB-1083 | Protection Officer on site - handover period (LOE) | 9d | 2027-12-08 | 2027-12-20 | DOC-5010 SS, HND-5090 FF | Cost Distribution [2832]; Protection Officer [72 h] |
| 1.3 | **PROJECT START-UP DOCUMENTS & APPROVALS (Contract cl. 4.2, 5, 8, 10, 13)** |  | 2027-01-03 | 2027-01-28 |  |  |
| SUD-1010 | Performance Security (10% on-demand bank guarantee) - confirm issue & submit to SAR (due before Effective Date) | 1d | 2027-01-03 | 2027-01-03 | MS-001 |  |
| SUD-1020 | Submit contractor licences & certificates (CR, tax, MISA) to SAR | 1d | 2027-01-03 | 2027-01-03 | MS-001 |  |
| SUD-1030 | Baseline programme (Primavera P6) - prepare & submit within 14 days of Effective Date | 8d | 2027-01-03 | 2027-01-12 | MS-001 |  |
| SUD-1050 | Key Personnel CVs, manpower & Saudization schedule - submit to SAR | 3d | 2027-01-05 | 2027-01-07 | MOB-1010 |  |
| SUD-1060 | Sub-contractor & supplier approval request (cl. 5.7.2) - prepare & submit | 5d | 2027-01-05 | 2027-01-11 | MOB-1010 |  |
| SUD-1055 | SAR approval - Key Personnel & manpower schedule | 14d | 2027-01-08 | 2027-01-21 | SUD-1050 |  |
| SUD-1040 | Insurance certificates (CAR, marine cargo, professional indemnity, plant) - submit to SAR | 1d | 2027-01-11 | 2027-01-11 | MOB-1020 |  |
| SUD-1065 | SAR prior written approval - sub-contractors & suppliers | 14d | 2027-01-12 | 2027-01-25 | SUD-1060 |  |
| SUD-1035 | SAR review & approval - baseline programme | 14d | 2027-01-13 | 2027-01-26 | SUD-1030 |  |
| 1.4.1 | **Permit 1 - Site Access & Survey (before Survey)** |  | 2027-01-12 | 2027-01-27 |  |  |
| 1.4.2 | **Permit 2 - Start of Execution (after IFC approved)** |  | 2027-05-20 | 2027-06-06 |  |  |
| 1.5.1 | **Survey, Survey Report & Existing System Assessment** |  | 2027-01-28 | 2027-03-21 |  |  |
| SRV-1231 | Survey Report part A - TDR baseline report (existing system) | 20d | 2027-02-08 | 2027-03-14 | SRV-1210, SRV-1220 | Cost Distribution [8112.5]; Systems Engineers [160 h] |
| SRV-1232 | Survey Report part B - DAS seismic baseline report (existing system) | 20d | 2027-02-08 | 2027-03-14 | SRV-1210, SRV-1220 | Cost Distribution [8112.5]; Systems Engineers [160 h] |
| SRV-1233 | Survey Report part C - DSS strain baseline report (existing system) | 20d | 2027-02-08 | 2027-03-14 | SRV-1210, SRV-1220 | Cost Distribution [8112.5]; Systems Engineers [160 h] |
| SRV-1234 | Survey Report part D - weather station data baseline report (existing system) | 20d | 2027-02-08 | 2027-03-14 | SRV-1210, SRV-1220 | Cost Distribution [8112.5]; Systems Engineers [160 h] |
| SRV-1230 | Survey Report - compile baseline of existing system (topographic, GPR, dilapidation, TDR, DAS, DSS, weather) | 5d | 2027-03-15 | 2027-03-21 | SRV-1231, SRV-1232, SRV-1233, SRV-1234 | Cost Distribution [24337.5]; Design Engineers [80 h] |
| 1.7.2 | **Enabling Works by Section (SoW 7): Civil, Cables, Splicing & Testing - risk-ranked** |  | 2027-06-14 | 2027-10-27 |  |  |
| 1.7.2.1 | **Section 1 (KP 0+000 to 1+100) - Civil Works, Cables Installation, Splicing & Testing** |  | 2027-06-14 | 2027-07-28 |  |  |
| 1.7.2.2 | **Section 2 (KP 1+100 to 2+200) - Civil Works, Cables Installation, Splicing & Testing** |  | 2027-06-28 | 2027-08-11 |  |  |
| 1.7.2.3 | **Section 3 (KP 2+200 to 3+300) - Civil Works, Cables Installation, Splicing & Testing** |  | 2027-07-28 | 2027-09-12 |  |  |
| 1.7.2.4 | **Section 4 (KP 3+300 to 4+400) - Civil Works, Cables Installation, Splicing & Testing** |  | 2027-08-11 | 2027-09-27 |  |  |
| 1.7.2.5 | **Section 5 (KP 4+400 to 5+500) - Civil Works, Cables Installation, Splicing & Testing** |  | 2027-09-12 | 2027-10-27 |  |  |

Removed: PROJECT MANAGEMENT & MILESTONES; Management, Team Mobilization & PTS (incl. Level-of-Effort); Schedule Contingency (Time-Risk Allowance); CNT-0100 Schedule contingency - time-risk allowance (supplier, weather, Eid-date shift); Survey & Assessment; SUB-1570 Address SAR comments & resubmit IFC package; APR-1580 SAR final approval - IFC package; SUB-1630 Address SAR comments & resubmit cyber/cloud design; APR-1640 SAR final approval - cyber/cloud design; SUB-1535 Address SAR comments & resubmit cable materials; APR-1536 SAR final approval - cable materials; Civil & Cable Works by Section (risk-ranked sequence); Section 1; Section 2; Section 3; Section 4; Section 5; SUB-5070 Address SAR comments & resubmit dossier; APR-5080 SAR final acceptance of handover dossier; SAR Work Permits (Work Permit Portal), Extensions & TTF02; PRM-2105 Prepare TTF02 / Delivery Plan, PICOP certificates & PTS card register; PRM-2210 Prepare & submit WP-03 (steel conduits at culverts & track crossings) incl. protection / possession request; PRM-2310 Prepare & submit WP-04 (power, shelter & equipment works at monitoring station); PRM-2220 SAR review & issue WP-03 (track crossings / possession); PRM-2320 SAR review & issue WP-04; PRM-3110 Prepare & submit WP-05 (testing, commissioning & live-system tie-in) in Work Permit Portal; PRM-3120 SAR review & issue WP-05; PRM-2150 Permit extension 1 - progress report, updated insurance policy & TTF02 (Portal); PRM-2160 SAR review & approve permit extension 1; PRM-2170 Permit extension 2 - progress report, updated insurance policy & TTF02 (Portal); PRM-2180 SAR review & approve permit extension 2; Utility, Telecom & Third-Party Approvals (TBC); PRM-2510 Request SIM / data-service activation from STC (primary & backup SIM); PRM-2520 STC SIM provisioning & activation; PRM-2410 Submit load / connection request to SEC for power upgrade (applicability TBC); PRM-2420 SEC review & connection approval (duration TBC); PRM-2610 Request access / NOC & outage window - existing system & iSiteCentral owner; PRM-2620 Owner NOC & agreed tie-in / outage window; DEFECTS LIABILITY PERIOD - POST-COMPLETION (DLP); DLP-9020 Defects liability support (12 months after Taking-Over)

Changed:

| ID | Task | Start | Finish | Duration | Total float | Predecessors | Other |
| --- | --- | --- | --- | --- | --- | --- | --- |
| 1.1 | **Project Milestones** |  | 2028-01-02 → 2027-12-20 (-13d) |  |  |  |  |
| MS-010 | Stage 1 complete - mobilization done, IFC approved & submittals issued | 2027-02-02 → 2027-05-18 (+105d) | 2027-02-02 → 2027-05-18 (+105d) |  | 168d → 123d | MOB-1040, DSN-1320, SUB-1410, SUB-1420, SUB-1430, SUB-1440, SUB-1450 → SUD-1010, SUD-1020, SUD-1035, MOB-1040, APR-1560, APR-1510, APR-1520, APR-1530, APR-1540, APR-1550 | was named Stage 1 complete - mobilization done & IFC package submitted |
| MS-070 | Stage 2 complete - procurement, construction & installation complete | 2027-10-10 → 2027-11-09 (+30d) | 2027-10-10 → 2027-11-09 (+30d) |  |  | CIV-540, TDR-3520, WX-3620, COM-3720, CLD-3820, INT-4010, SAR review & approve permit extension 1, SAR review & approve permit extension 2, PWR-3430, MS-010, TST-4110, CIV-140, CIV-240, CIV-340, CIV-440 → CIV-540, TDR-3520, WX-3620, COM-3720, CLD-3820, INT-4010, PWR-3430, MS-010, TST-4110, CIV-140, CIV-240, CIV-340, CIV-440 |  |
| MS-100 | Stage 3 complete - commissioning & performance validation complete | 2027-12-01 → 2027-12-07 (+6d) | 2027-12-01 → 2027-12-07 (+6d) |  | 0d → 2d |  |  |
| MS-120 | Taking-Over - planned completion (contract limit 02-Jan-2028 = NTP + 12 months) | 2028-01-02 → 2027-12-20 (-13d) | 2028-01-02 → 2027-12-20 (-13d) |  |  |  | was named Taking-Over - CONTRACT COMPLETION (12 months from NTP) |
| MGT-1060 | Project management, QA/QC & HSE supervision and records (LOE) |  | 2028-01-02 → 2027-12-20 (-13d) | 251d → 242d | none → 0d |  | resources Cost Distribution [7670]; QA/QC & HSE Engineer [2008 h] → Cost Distribution [3835]; QA/QC & HSE Engineer [1936 h] |
| MGT-1070 | Weekly & monthly progress reporting (LOE) |  | 2028-01-02 → 2027-12-20 (-13d) | 251d → 242d | none → 0d |  |  |
| MOB-1020 | Insurance (CAR / TPL) & performance bond issuance |  |  |  | 17d → 1d |  | resources Cost Distribution [200600] → Cost Distribution [188800] |
| MOB-1030 | PTS training & PO induction - batch 1 (initial team) |  |  |  | 18d → 3d |  | resources Cost Distribution [5664]; Protection Officer [24 h] → Protection Officer [24 h] |
| MOB-1050 | Site security, fencing & traffic management - mobilization & design period (LOE) | 2027-01-19 → 2027-01-28 (+9d) | 2027-12-08 → 2027-06-13 (-178d) | 222d → 88d | none → 0d | MOB-1040 SS, DEM-5100 FF → MOB-1040 SS, MOB-3010 FF | was named Site security, fencing & traffic management (LOE); resources Cost Distribution [403560] → Cost Distribution [40356] |
| MOB-1080 | Protection Officer on site - mobilization & design period (LOE) | 2027-01-19 → 2027-01-28 (+9d) | 2027-12-08 → 2027-06-13 (-178d) | 222d → 88d | none → 0d | SRV-1210 SS, DEM-5100 FF → MOB-1040 SS, MOB-3010 FF | was named Protection Officer on site during all field works (LOE); resources Cost Distribution [45312]; Protection Officer [1776 h] → Cost Distribution [5664]; Protection Officer [704 h] |
| MOB-3005 | PTS training & PO induction - batch 2 (field crews) |  |  |  | 41d → 79d | Prepare TTF02 / Delivery Plan, PICOP certificates & PTS card register → APR-1520 | resources Cost Distribution [5664]; Protection Officer [24 h] → Protection Officer [24 h] |
| 1.2.1 | **Site Mobilization, Establishment & Demobilization** | 2027-01-19 → 2027-01-28 (+9d) | 2027-12-08 → 2027-12-14 (+6d) |  |  |  |  |
| MOB-1040 | Site establishment - offices & temporary facilities | 2027-01-19 → 2027-01-28 (+9d) | 2027-01-28 → 2027-02-08 (+11d) |  | 44d → 75d |  |  |
| MOB-3010 | Mobilize plant, equipment & labour; compound & logistics set-up | 2027-03-17 → 2027-06-07 (+82d) | 2027-03-23 → 2027-06-13 (+82d) |  | 16d → 0d | PRM-2120, APR-1520, APR-1510, MOB-1040, MOB-3005 → PRM-2120, APR-1520, APR-1510, SUD-1055, MOB-1040, MOB-3005 |  |
| DEM-5100 | Demobilization & site clearance | 2027-12-02 → 2027-12-08 (+6d) | 2027-12-08 → 2027-12-14 (+6d) |  | 16d → 3d |  | resources Cost Distribution [35400]; Civil Crew [40 h] → Cost Distribution [47200]; Civil Crew [40 h] |
| APR-1510 | SAR review & approval - QA/QC, HSE & Execution Plans |  | 2027-01-20 → 2027-01-25 (+5d) | 7d → 14d | 50d → 132d |  |  |
| APR-1520 | SAR review & approval - method statements & ITPs | 2027-01-17 → 2027-01-15 (-2d) | 2027-01-25 → 2027-01-28 (+3d) | 7d → 14d | 37d → 111d |  |  |
| 1.4 | **PERMITS & AUTHORITY APPROVALS (PA)** | 2027-01-11 → 2027-01-12 (+1d) | 2027-09-06 → 2027-06-06 (-92d) |  |  |  |  |
| PRM-1110 | Permit 1 - prepare & submit work permit request for site access & survey (Work Permit Portal) | 2027-01-11 → 2027-01-12 (+1d) | 2027-01-11 → 2027-01-13 (+2d) | 1d → 2d | 17d → 1d | MOB-1020, MOB-1030 → MOB-1020, MOB-1030, SUD-1040 | was named Prepare & submit WP-01 request in Work Permit Portal (survey & assessment) |
| PRM-1120 | SAR review & issue Permit 1 (site access & survey) | 2027-01-12 → 2027-01-14 (+2d) | 2027-01-18 → 2027-01-27 (+9d) | 5d → 14d | 17d → 3d |  | was named SAR review & issue WP-01 (Work Permit Portal) |
| PRM-2110 | Permit 2 - prepare & submit work permit request for execution (route works, crossings, station works; TTF02, PICOP, PTS register) | 2027-03-02 → 2027-05-20 (+79d) | 2027-03-03 → 2027-05-23 (+81d) |  | 16d → 0d | Prepare TTF02 / Delivery Plan, PICOP certificates & PTS card register, SAR final approval - IFC package → APR-1560, APR-1520, MOB-1030 | was named Prepare & submit WP-02 (route construction works, Sections 1-5) in Work Permit Portal |
| PRM-2120 | SAR review & issue Permit 2 (start of execution) | 2027-03-04 → 2027-05-24 (+81d) | 2027-03-16 → 2027-06-06 (+82d) | 5d → 14d | 16d → 0d |  | was named SAR review & issue WP-02 |
| 1.5 | **ENGINEERING (E)** |  | 2027-03-24 → 2027-06-10 (+78d) |  |  |  |  |
| SRV-1210 | Existing system, power capacity & shelter assessment (incl. data correlation) | 2027-01-19 → 2027-01-28 (+9d) | 2027-01-25 → 2027-02-03 (+9d) |  | 18d → 3d |  | resources Cost Distribution [24780]; Systems Engineers [80 h] → Cost Distribution [24337.5]; Systems Engineers [80 h] |
| SRV-1220 | Topographic survey, GPR utilities detection & dilapidation survey (5.5 km route) | 2027-01-19 → 2027-01-28 (+9d) | 2027-01-27 → 2027-02-07 (+11d) |  | 17d → 1d |  | resources Cost Distribution [162250]; Survey Crew [112 h] → Cost Distribution [81125]; Survey Crew [112 h] |
| 1.5.2 | **Design & Engineering (Concept / Preliminary / Detailed-IFC)** |  | 2027-03-01 → 2027-05-18 (+78d) |  |  |  |  |
| 1.5.2.1 | **Concept Design** |  | 2027-01-21 → 2027-04-05 (+74d) |  |  |  |  |
| DSN-1305 | Concept design - basis of design, route, system architecture & sizing |  |  |  | 16d → 45d |  | was named Concept design - basis of design, route, system architecture & sizing (desktop, existing as-builts); resources Cost Distribution [12390]; Design Engineers [160 h] → Cost Distribution [18585]; Design Engineers [160 h] |
| 1.5.2.1.2 | **Concept - Submittal (Contractor)** | 2027-01-12 → 2027-03-22 (+69d) | 2027-01-12 → 2027-03-22 (+69d) |  |  |  |  |
| SUB-1305 | Concept design package + Survey Report - submit to SAR | 2027-01-12 → 2027-03-22 (+69d) | 2027-01-12 → 2027-03-22 (+69d) |  | 16d → 1d | DSN-1305 → DSN-1305, SRV-1230 | was named Concept design package - submit to SAR |
| 1.5.2.1.3 | **Concept - SAR Approval** | 2027-01-13 → 2027-03-23 (+69d) | 2027-01-21 → 2027-04-05 (+74d) |  |  |  |  |
| APR-1305 | SAR review & approval - Concept design & Survey Report | 2027-01-13 → 2027-03-23 (+69d) | 2027-01-21 → 2027-04-05 (+74d) | 7d → 14d | 16d → 1d |  | was named SAR review & approval - Concept design |
| 1.5.2.2 | **Preliminary Design** | 2027-01-12 → 2027-04-06 (+84d) | 2027-02-01 → 2027-04-26 (+84d) |  |  |  |  |
| 1.5.2.2.1 | **Preliminary - Design** | 2027-01-12 → 2027-04-06 (+84d) | 2027-01-20 → 2027-04-11 (+81d) |  |  |  |  |
| DSN-1307 | Preliminary design - route & cable layout, power/shelter sizing, interfaces, quantity check | 2027-01-12 → 2027-04-06 (+84d) | 2027-01-20 → 2027-04-11 (+81d) | 7d → 4d | 16d → 1d | DSN-1305 → APR-1305 | resources Cost Distribution [18585]; Design Engineers [224 h] → Cost Distribution [30975]; Design Engineers [128 h] |
| 1.5.2.2.2 | **Preliminary - Submittal (Contractor)** | 2027-01-21 → 2027-04-12 (+81d) | 2027-01-21 → 2027-04-12 (+81d) |  |  |  |  |
| SUB-1307 | Preliminary design package - submit to SAR | 2027-01-21 → 2027-04-12 (+81d) | 2027-01-21 → 2027-04-12 (+81d) |  | 16d → 1d |  |  |
| 1.5.2.2.3 | **Preliminary - SAR Approval** | 2027-01-24 → 2027-04-13 (+79d) | 2027-02-01 → 2027-04-26 (+84d) |  |  |  |  |
| APR-1307 | SAR review & approval - Preliminary design | 2027-01-24 → 2027-04-13 (+79d) | 2027-02-01 → 2027-04-26 (+84d) | 7d → 14d | 16d → 1d | SUB-1307, APR-1305 → SUB-1307 |  |
| 1.5.2.3 | **Detailed Design / IFC** | 2027-01-21 → 2027-04-27 (+96d) | 2027-03-01 → 2027-05-18 (+78d) |  |  |  |  |
| 1.5.2.3.1 | **Detailed / IFC - Design** | 2027-01-21 → 2027-04-27 (+96d) | 2027-02-01 → 2027-05-03 (+91d) |  |  |  |  |
| DSN-1310 | Detailed design - IFC drawings, specifications & calculations | 2027-01-21 → 2027-04-27 (+96d) | 2027-02-01 → 2027-05-03 (+91d) | 8d → 5d | 16d → 1d | DSN-1307, SRV-1210 SS, SRV-1210 FF, SRV-1220 FF+2d, MGT-1090 → APR-1307, MGT-1090 | resources Cost Distribution [43365]; Design Engineers [256 h] → Cost Distribution [61950]; Design Engineers [160 h] |
| 1.5.2.3.2 | **Detailed / IFC - Submittal (Contractor)** | 2027-02-02 → 2027-05-04 (+91d) | 2027-02-23 → 2027-05-04 (+70d) |  |  |  |  |
| DSN-1320 | IFC package QA check & submission to SAR | 2027-02-02 → 2027-05-04 (+91d) | 2027-02-02 → 2027-05-04 (+91d) |  | 16d → 1d | DSN-1310, APR-1307 → DSN-1310 | resources Cost Distribution [24780] → Cost Distribution [12390] |
| 1.5.2.3.3 | **Detailed / IFC - SAR Approval** | 2027-02-03 → 2027-05-05 (+91d) | 2027-03-01 → 2027-05-18 (+78d) |  |  |  |  |
| APR-1560 | SAR review & approval - IFC package (IFC approved) | 2027-02-03 → 2027-05-05 (+91d) | 2027-02-16 → 2027-05-18 (+91d) | 10d → 14d | 16d → 1d |  | was named SAR review - IFC design package |
| 1.5.3 | **Other Engineering Submittals (Contractor)** | 2027-01-05 → 2027-01-27 (+22d) | 2027-03-15 → 2027-05-27 (+73d) |  |  |  |  |
| SUB-1490 | FAT procedures & test plans (TDR, cables, weather, comms, UPS, cloud hardware) | 2027-01-24 → 2027-01-27 (+3d) | 2027-01-31 → 2027-02-03 (+3d) |  | 30d → 66d |  |  |
| SUB-1480 | Interface Control Document - existing 1.5 km system & iSiteCentral | 2027-01-26 → 2027-02-04 (+9d) | 2027-02-04 → 2027-02-15 (+11d) |  | 138d → 163d |  |  |
| SUB-1470 | Cybersecurity (NCA ECC-1/CSCC-1/OTCC-1, SAR OT/ICS) & local-cloud architecture design package | 2027-01-26 → 2027-04-06 (+70d) | 2027-02-08 → 2027-04-19 (+70d) |  | 85d → 66d |  | resources Cost Distribution [169920] → none |
| SUB-1495 | SAT, commissioning & performance-validation procedures | 2027-03-02 → 2027-05-20 (+79d) | 2027-03-15 → 2027-05-27 (+73d) |  | 148d → 107d | SAR final approval - IFC package → APR-1560 |  |
| 1.5.4 | **SAR Reviews & Approvals - Other Engineering** | 2027-01-12 → 2027-02-04 (+23d) | 2027-03-24 → 2027-06-10 (+78d) |  |  |  |  |
| APR-1660 | SAR review & approval - FAT procedures (SAR witness notice incl.) | 2027-02-01 → 2027-02-04 (+3d) | 2027-02-09 → 2027-02-17 (+8d) | 7d → 14d | 30d → 99d |  |  |
| APR-1650 | SAR / system-owner review & approval - Interface Control Document | 2027-02-07 → 2027-02-16 (+9d) | 2027-02-15 → 2027-03-01 (+14d) | 7d → 14d | 138d → 243d |  | was named SAR / system-owner review - Interface Control Document |
| APR-1620 | SAR IT/OT & cybersecurity review & approval - architecture design | 2027-02-09 → 2027-04-20 (+70d) | 2027-02-23 → 2027-05-03 (+69d) | 10d → 14d | 85d → 98d |  | was named SAR IT/OT & cybersecurity review - architecture design |
| APR-1670 | SAR review & approval - SAT/commissioning procedures | 2027-03-16 → 2027-05-28 (+73d) | 2027-03-24 → 2027-06-10 (+78d) | 7d → 14d | 148d → 152d |  |  |
| 1.6 | **PROCUREMENT (P)** |  | 2027-05-05 → 2027-06-26 (+52d) |  |  |  |  |
| 1.6.1 | **Material Submittals (Contractor)** |  | 2027-01-25 → 2027-01-12 (-13d) |  |  |  |  |
| 1.6.2 | **SAR Material Approvals** |  | 2027-01-28 → 2027-01-26 (-2d) |  |  |  |  |
| APR-1530 | SAR review & approval - cable materials (DSS, FO, TDR coax) |  | 2027-01-20 → 2027-01-25 (+5d) | 7d → 14d | 0d → 63d |  | was named SAR review - cable materials (DSS, FO, TDR coax) |
| APR-1550 | SAR review & approval - civil materials (closures, handholes, conduits, markers, sand) |  | 2027-01-18 → 2027-01-25 (+7d) | 5d → 14d | 44d → 106d |  |  |
| APR-1540 | SAR review & approval - equipment materials (TDR, weather, comms, UPS/panels, cloud HW) |  | 2027-01-21 → 2027-01-26 (+5d) | 7d → 14d | 30d → 99d |  |  |
| 1.6.3 | **LONG-LEAD ITEMS (LL) - PO, Manufacture, FAT, Shipping, Customs & Delivery** | 2027-01-19 → 2027-01-26 (+7d) | 2027-05-05 → 2027-06-26 (+52d) |  |  |  |  |
| 1.6.3.1 | **LL-01 DSS cable NZS-DSS-C02** | 2027-01-31 → 2027-01-26 (-5d) | 2027-05-02 → 2027-04-27 (-5d) |  |  |  |  |
| PRC-DSS10 | [LL-01] Place PO & supplier kick-off - DSS cable NZS-DSS-C02 (5,500 LM) | 2027-01-31 → 2027-01-26 (-5d) | 2027-02-02 → 2027-01-28 (-5d) |  | 0d → 40d | SAR final approval - cable materials → APR-1530, SUD-1065 |  |
| PRC-DSS20 | [LL-01] Manufacture / supply - DSS cable NZS-DSS-C02 (5,500 LM) | 2027-02-03 → 2027-01-29 (-5d) | 2027-03-30 → 2027-03-25 (-5d) |  | 0d → 63d |  | resources Cost Distribution [352407] → Cost Distribution [381774] |
| FAT-DSS | [LL-01] FAT at manufacturer - DSS cable NZS-DSS-C02 (5,500 LM) | 2027-03-31 → 2027-03-26 (-5d) | 2027-04-01 → 2027-03-27 (-5d) |  | 0d → 63d |  | resources Cost Distribution [5310] → Cost Distribution [8850] |
| PRC-DSS30 | [LL-01] Shipping / import - DSS cable NZS-DSS-C02 (5,500 LM) | 2027-04-02 → 2027-03-28 (-5d) | 2027-04-22 → 2027-04-17 (-5d) |  | 0d → 63d |  |  |
| PRC-DSS40 | [LL-01] Customs clearance & SABER conformity - DSS cable NZS-DSS-C02 (5,500 LM) | 2027-04-23 → 2027-04-18 (-5d) | 2027-04-29 → 2027-04-24 (-5d) |  | 0d → 63d |  |  |

| ID | Task | Start | Finish | Total float | Predecessors | Other |
| --- | --- | --- | --- | --- | --- | --- |
| PRC-DSS50 | [LL-01] Delivery to site (Heet) - DSS cable NZS-DSS-C02 (5,500 LM) | 2027-04-30 → 2027-04-25 (-5d) | 2027-05-02 → 2027-04-27 (-5d) | 0d → 63d |  |  |
| 1.6.3.2 | **LL-02 48-core FO cable (DAS)** | 2027-01-31 → 2027-01-26 (-5d) | 2027-04-04 → 2027-03-30 (-5d) |  |  |  |
| PRC-FO10 | [LL-02] Place PO & supplier kick-off - Outdoor 48-core FO cable - DAS (5,500 LM) | 2027-01-31 → 2027-01-26 (-5d) | 2027-02-02 → 2027-01-28 (-5d) | 22d → 65d | SAR final approval - cable materials → APR-1530, SUD-1065 |  |
| PRC-FO20 | [LL-02] Manufacture / supply - Outdoor 48-core FO cable - DAS (5,500 LM) | 2027-02-03 → 2027-01-29 (-5d) | 2027-03-09 → 2027-03-04 (-5d) | 36d → 99d |  |  |
| FAT-FO | [LL-02] FAT at manufacturer - Outdoor 48-core FO cable - DAS (5,500 LM) | 2027-03-10 → 2027-03-05 (-5d) | 2027-03-11 → 2027-03-06 (-5d) | 36d → 99d |  | resources Cost Distribution [5310] → Cost Distribution [8850] |
| PRC-FO30 | [LL-02] Shipping / import - Outdoor 48-core FO cable - DAS (5,500 LM) | 2027-03-12 → 2027-03-07 (-5d) | 2027-03-25 → 2027-03-20 (-5d) | 36d → 99d |  |  |
| PRC-FO40 | [LL-02] Customs clearance & SABER conformity - Outdoor 48-core FO cable - DAS (5,500 LM) | 2027-03-26 → 2027-03-21 (-5d) | 2027-04-01 → 2027-03-27 (-5d) | 36d → 99d |  |  |
| PRC-FO50 | [LL-02] Delivery to site (Heet) - Outdoor 48-core FO cable - DAS (5,500 LM) | 2027-04-02 → 2027-03-28 (-5d) | 2027-04-04 → 2027-03-30 (-5d) | 36d → 99d |  |  |
| 1.6.3.3 | **LL-03 TDR coaxial cable** | 2027-01-31 → 2027-01-26 (-5d) | 2027-03-28 → 2027-03-23 (-5d) |  |  |  |
| PRC-TDRC10 | [LL-03] Place PO & supplier kick-off - TDR coaxial cable (5,500 LM) | 2027-01-31 → 2027-01-26 (-5d) | 2027-02-02 → 2027-01-28 (-5d) | 39d → 76d | SAR final approval - cable materials → APR-1530, SUD-1065 |  |
| PRC-TDRC20 | [LL-03] Manufacture / supply - TDR coaxial cable (5,500 LM) | 2027-02-03 → 2027-01-29 (-5d) | 2027-03-02 → 2027-02-25 (-5d) | 62d → 119d |  |  |
| FAT-TDRC | [LL-03] FAT at manufacturer - TDR coaxial cable (5,500 LM) | 2027-03-03 → 2027-02-26 (-5d) | 2027-03-04 → 2027-02-27 (-5d) | 62d → 119d |  | resources Cost Distribution [5310] → Cost Distribution [8850] |
| PRC-TDRC30 | [LL-03] Shipping / import - TDR coaxial cable (5,500 LM) | 2027-03-05 → 2027-02-28 (-5d) | 2027-03-18 → 2027-03-13 (-5d) | 62d → 119d |  |  |
| PRC-TDRC40 | [LL-03] Customs clearance & SABER conformity - TDR coaxial cable (5,500 LM) | 2027-03-19 → 2027-03-14 (-5d) | 2027-03-25 → 2027-03-20 (-5d) | 62d → 119d |  |  |
| PRC-TDRC50 | [LL-03] Delivery to site (Heet) - TDR coaxial cable (5,500 LM) | 2027-03-26 → 2027-03-21 (-5d) | 2027-03-28 → 2027-03-23 (-5d) | 62d → 119d |  |  |
| 1.6.3.4 | **LL-04 TDR system** | 2027-01-24 → 2027-01-27 (+3d) | 2027-05-05 → 2027-05-10 (+5d) |  |  |  |
| PRC-TDR10 | [LL-04] Place PO & supplier kick-off - TDR system (interrogator, antenna & accessories) | 2027-01-24 → 2027-01-27 (+3d) | 2027-01-26 → 2027-01-31 (+5d) | 85d → 105d | APR-1540 → APR-1540, SUD-1065 |  |
| PRC-TDR20 | [LL-04] Manufacture / supply - TDR system (interrogator, antenna & accessories) | 2027-01-27 → 2027-02-01 (+5d) | 2027-04-06 → 2027-04-11 (+5d) | 132d → 160d |  | resources Cost Distribution [247800] → Cost Distribution [283200] |
| FAT-TDR | [LL-04] FAT at manufacturer - TDR system (interrogator, antenna & accessories) | 2027-04-07 → 2027-04-12 (+5d) | 2027-04-11 → 2027-04-16 (+5d) | 132d → 160d |  |  |
| PRC-TDR30 | [LL-04] Shipping / import - TDR system (interrogator, antenna & accessories) | 2027-04-12 → 2027-04-17 (+5d) | 2027-04-25 → 2027-04-30 (+5d) | 132d → 160d |  |  |
| PRC-TDR40 | [LL-04] Customs clearance & SABER conformity - TDR system (interrogator, antenna & accessories) | 2027-04-26 → 2027-05-01 (+5d) | 2027-05-02 → 2027-05-07 (+5d) | 132d → 160d |  |  |
| PRC-TDR50 | [LL-04] Delivery to site (Heet) - TDR system (interrogator, antenna & accessories) | 2027-05-03 → 2027-05-08 (+5d) | 2027-05-05 → 2027-05-10 (+5d) | 132d → 160d |  |  |
| 1.6.3.5 | **LL-05 Weather station sensors** | 2027-01-24 → 2027-01-27 (+3d) | 2027-03-28 → 2027-04-02 (+5d) |  |  |  |
| PRC-WX10 | [LL-05] Place PO & supplier kick-off - Weather station sensors | 2027-01-24 → 2027-01-27 (+3d) | 2027-01-26 → 2027-01-31 (+5d) | 116d → 135d | APR-1540 → APR-1540, SUD-1065 |  |
| PRC-WX20 | [LL-05] Manufacture / supply - Weather station sensors | 2027-01-27 → 2027-02-01 (+5d) | 2027-03-02 → 2027-03-07 (+5d) | 175d → 201d |  | resources Cost Distribution [37170] → Cost Distribution [39825] |
| FAT-WX | [LL-05] FAT at manufacturer - Weather station sensors | 2027-03-03 → 2027-03-08 (+5d) | 2027-03-04 → 2027-03-09 (+5d) | 175d → 201d |  | resources Cost Distribution [5310] → Cost Distribution [8850] |
| PRC-WX30 | [LL-05] Shipping / import - Weather station sensors | 2027-03-05 → 2027-03-10 (+5d) | 2027-03-18 → 2027-03-23 (+5d) | 175d → 201d |  |  |
| PRC-WX40 | [LL-05] Customs clearance & SABER conformity - Weather station sensors | 2027-03-19 → 2027-03-24 (+5d) | 2027-03-25 → 2027-03-30 (+5d) | 175d → 201d |  |  |
| PRC-WX50 | [LL-05] Delivery to site (Heet) - Weather station sensors | 2027-03-26 → 2027-03-31 (+5d) | 2027-03-28 → 2027-04-02 (+5d) | 175d → 201d |  |  |
| 1.6.3.6 | **LL-06 Communication modules & SIM** | 2027-01-24 → 2027-01-27 (+3d) | 2027-03-17 → 2027-03-22 (+5d) |  |  |  |
| PRC-COM10 | [LL-06] Place PO & supplier kick-off - Communication modules & SIM hardware | 2027-01-24 → 2027-01-27 (+3d) | 2027-01-26 → 2027-01-31 (+5d) | 124d → 145d | APR-1540 → APR-1540, SUD-1065 |  |
| PRC-COM20 | [LL-06] Manufacture / supply - Communication modules & SIM hardware | 2027-01-27 → 2027-02-01 (+5d) | 2027-02-23 → 2027-02-28 (+5d) | 187d → 215d |  |  |
| FAT-COM | [LL-06] FAT at manufacturer - Communication modules & SIM hardware | 2027-02-24 → 2027-03-01 (+5d) | 2027-02-25 → 2027-03-02 (+5d) | 187d → 215d |  | resources Cost Distribution [5310] → Cost Distribution [8850] |
| PRC-COM30 | [LL-06] Shipping / import - Communication modules & SIM hardware | 2027-02-26 → 2027-03-03 (+5d) | 2027-03-07 → 2027-03-12 (+5d) | 187d → 215d |  |  |
| PRC-COM40 | [LL-06] Customs clearance & SABER conformity - Communication modules & SIM hardware | 2027-03-08 → 2027-03-13 (+5d) | 2027-03-14 → 2027-03-19 (+5d) | 187d → 215d |  |  |
| PRC-COM50 | [LL-06] Delivery to site (Heet) - Communication modules & SIM hardware | 2027-03-15 → 2027-03-20 (+5d) | 2027-03-17 → 2027-03-22 (+5d) | 187d → 215d |  |  |
| 1.6.3.7 | **LL-07 UPS & electrical panels** | 2027-01-24 → 2027-01-27 (+3d) | 2027-04-10 → 2027-04-15 (+5d) |  |  |  |
| PRC-PWR10 | [LL-07] Place PO & supplier kick-off - UPS (min. 4 h) & electrical panels | 2027-01-24 → 2027-01-27 (+3d) | 2027-01-26 → 2027-01-31 (+5d) | 93d → 115d | APR-1540 → APR-1540, SUD-1065 |  |
| PRC-PWR20 | [LL-07] Manufacture / supply - UPS (min. 4 h) & electrical panels | 2027-01-27 → 2027-02-01 (+5d) | 2027-03-23 → 2027-03-28 (+5d) | 144d → 172d |  | resources Cost Distribution [18880] → Cost Distribution [24544] |
| FAT-PWR | [LL-07] FAT at manufacturer - UPS (min. 4 h) & electrical panels | 2027-03-24 → 2027-03-29 (+5d) | 2027-03-26 → 2027-03-31 (+5d) | 144d → 172d |  |  |
| PRC-PWR30 | [LL-07] Shipping / import - UPS (min. 4 h) & electrical panels | 2027-03-27 → 2027-04-01 (+5d) | 2027-04-02 → 2027-04-07 (+5d) | 144d → 172d |  |  |
| PRC-PWR40 | [LL-07] Customs clearance & SABER conformity - UPS (min. 4 h) & electrical panels | 2027-04-03 → 2027-04-08 (+5d) | 2027-04-07 → 2027-04-12 (+5d) | 144d → 172d |  |  |
| PRC-PWR50 | [LL-07] Delivery to site (Heet) - UPS (min. 4 h) & electrical panels | 2027-04-08 → 2027-04-13 (+5d) | 2027-04-10 → 2027-04-15 (+5d) | 144d → 172d |  |  |
| 1.6.3.8 | **LL-08 Local-cloud hardware (KSA)** | 2027-03-04 → 2027-05-04 (+61d) | 2027-05-04 → 2027-06-26 (+53d) |  |  |  |
| PRC-CLD10 | [LL-08] Place PO & supplier kick-off - Local-cloud hardware & licences (KSA hosted) | 2027-03-04 → 2027-05-04 (+61d) | 2027-03-14 → 2027-05-06 (+53d) | 85d → 66d | APR-1540, SAR final approval - cyber/cloud design → APR-1540, APR-1620, SUD-1065 |  |
| PRC-CLD20 | [LL-08] Manufacture / supply - Local-cloud hardware & licences (KSA hosted) | 2027-03-15 → 2027-05-07 (+53d) | 2027-04-11 → 2027-06-03 (+53d) | 124d → 99d |  | resources Cost Distribution [202960] → Cost Distribution [380550] |
| FAT-CLD | [LL-08] FAT at manufacturer - Local-cloud hardware & licences (KSA hosted) | 2027-04-12 → 2027-06-04 (+53d) | 2027-04-14 → 2027-06-06 (+53d) | 124d → 99d |  |  |
| PRC-CLD30 | [LL-08] Shipping / import - Local-cloud hardware & licences (KSA hosted) | 2027-04-15 → 2027-06-07 (+53d) | 2027-04-24 → 2027-06-16 (+53d) | 124d → 99d |  |  |
| PRC-CLD40 | [LL-08] Customs clearance & SABER conformity - Local-cloud hardware & licences (KSA hosted) | 2027-04-25 → 2027-06-17 (+53d) | 2027-05-01 → 2027-06-23 (+53d) | 124d → 99d |  |  |
| PRC-CLD50 | [LL-08] Delivery to site (Heet) - Local-cloud hardware & licences (KSA hosted) | 2027-05-02 → 2027-06-24 (+53d) | 2027-05-04 → 2027-06-26 (+53d) | 124d → 99d |  |  |
| 1.6.3.9 | **LL-09 FO closures & accessories** | 2027-01-19 → 2027-01-26 (+7d) | 2027-03-14 → 2027-03-21 (+7d) |  |  |  |
| PRC-CLS10 | [LL-09] Place PO & supplier kick-off - FO closures, splice trays, connectors & pigtails | 2027-01-19 → 2027-01-26 (+7d) | 2027-01-21 → 2027-01-28 (+7d) | 44d → 71d | APR-1550 → APR-1550, SUD-1065 |  |
| PRC-CLS20 | [LL-09] Manufacture / supply - FO closures, splice trays, connectors & pigtails | 2027-01-22 → 2027-01-29 (+7d) | 2027-02-18 → 2027-02-25 (+7d) | 69d → 114d |  | resources Cost Distribution [118236] → Cost Distribution [137942] |
| PRC-CLS30 | [LL-09] Shipping / import - FO closures, splice trays, connectors & pigtails | 2027-02-19 → 2027-02-26 (+7d) | 2027-03-04 → 2027-03-11 (+7d) | 69d → 114d |  |  |
| PRC-CLS40 | [LL-09] Customs clearance & SABER conformity - FO closures, splice trays, connectors & pigtails | 2027-03-05 → 2027-03-12 (+7d) | 2027-03-11 → 2027-03-18 (+7d) | 69d → 114d |  |  |
| PRC-CLS50 | [LL-09] Delivery to site (Heet) - FO closures, splice trays, connectors & pigtails | 2027-03-12 → 2027-03-19 (+7d) | 2027-03-14 → 2027-03-21 (+7d) | 69d → 114d |  |  |
| 1.6.4 | **Standard / Local Items - PO, Supply & Delivery (handholes, conduits, marker posts, sweet sand)** | 2027-01-19 → 2027-01-26 (+7d) | 2027-02-14 → 2027-02-21 (+7d) |  |  |  |
| PRC-CND10 | Place PO & supplier kick-off - Steel & rigid conduits | 2027-01-19 → 2027-01-26 (+7d) | 2027-01-21 → 2027-01-28 (+7d) | 51d → 86d | APR-1550 → APR-1550, SUD-1065 |  |
| PRC-HH10 | Place PO & supplier kick-off - Handholes & manholes (precast) | 2027-01-19 → 2027-01-26 (+7d) | 2027-01-21 → 2027-01-28 (+7d) | 46d → 81d | APR-1550 → APR-1550, SUD-1065 |  |
| PRC-MRK10 | Place PO & supplier kick-off - Marker posts, warning tape & route markers | 2027-01-19 → 2027-01-26 (+7d) | 2027-01-21 → 2027-01-28 (+7d) | 165d → 180d | APR-1550 → APR-1550, SUD-1065 |  |
| PRC-SND10 | Arrange sweet-sand source, approval & stockpile at site | 2027-01-19 → 2027-01-26 (+7d) | 2027-01-25 → 2027-02-01 (+7d) | 79d → 132d |  | resources none → Cost Distribution [195187] |
| PRC-CND20 | Manufacture / supply - Steel & rigid conduits | 2027-01-22 → 2027-01-29 (+7d) | 2027-02-04 → 2027-02-11 (+7d) | 80d → 133d |  | resources Cost Distribution [74403.7] → Cost Distribution [68203.4] |
| PRC-HH20 | Manufacture / supply - Handholes & manholes (precast) | 2027-01-22 → 2027-01-29 (+7d) | 2027-02-11 → 2027-02-18 (+7d) | 73d → 126d |  | resources Cost Distribution [95730.1] → Cost Distribution [104433] |
| PRC-MRK20 | Manufacture / supply - Marker posts, warning tape & route markers | 2027-01-22 → 2027-01-29 (+7d) | 2027-02-04 → 2027-02-11 (+7d) | 244d → 267d |  | resources Cost Distribution [17700] → Cost Distribution [21240] |
| PRC-CND50 | Delivery to site (Heet) - Steel & rigid conduits | 2027-02-05 → 2027-02-12 (+7d) | 2027-02-07 → 2027-02-14 (+7d) | 80d → 133d |  |  |
| PRC-MRK50 | Delivery to site (Heet) - Marker posts, warning tape & route markers | 2027-02-05 → 2027-02-12 (+7d) | 2027-02-07 → 2027-02-14 (+7d) | 244d → 267d |  |  |
| PRC-HH50 | Delivery to site (Heet) - Handholes & manholes (precast) | 2027-02-12 → 2027-02-19 (+7d) | 2027-02-14 → 2027-02-21 (+7d) | 73d → 126d |  |  |
| 1.7 | **CONSTRUCTION (C)** | 2027-01-19 → 2027-06-14 (+146d) | 2027-12-08 → 2027-11-09 (-29d) |  |  |  |
| CIV-110 | Section 1 - excavate trench (800x200 mm) & sweet-sand bedding, 1,100 LM | 2027-03-24 → 2027-06-14 (+82d) | 2027-04-06 → 2027-06-27 (+82d) | 16d → 0d |  |  |
| CIV-120 | Section 1 - handholes / manholes installation | 2027-04-07 → 2027-06-28 (+82d) | 2027-04-08 → 2027-06-29 (+82d) | 16d → 0d |  | resources Cost Distribution [15664.9]; Civil Crew [16 h] → Cost Distribution [13924.4]; Civil Crew [16 h] |

| ID | Task | Start | Finish | Total float | Predecessors | Other |
| --- | --- | --- | --- | --- | --- | --- |
| CIV-130 | Section 1 - steel & rigid conduits at culverts / track crossings | 2027-04-07 → 2027-06-28 (+82d) | 2027-04-08 → 2027-06-29 (+82d) | 16d → 0d | CIV-110, PRC-CND50, SAR review & issue WP-03 (track crossings / possession) → CIV-110, PRC-CND50, PRM-2120 | resources Cost Distribution [9920.5]; Civil Crew [16 h] → Cost Distribution [11160.6]; Civil Crew [16 h] |
| CAB-110 | Section 1 - Layer 1: lay DSS cable, pre-installed connectors, OTDR test | 2027-05-03 → 2027-06-30 (+58d) | 2027-05-06 → 2027-07-05 (+60d) |  |  | resources Cost Distribution [46987.6]; Cable Crew [32 h] → Cost Distribution [41114.2]; Cable Crew [32 h] |
| CAB-120 | Section 1 - backfill & compaction - layer 1 | 2027-05-09 → 2027-07-06 (+58d) | 2027-05-10 → 2027-07-07 (+58d) |  |  | resources Cost Distribution [39037.3]; Trench Crew [16 h] → Cost Distribution [26024.9]; Trench Crew [16 h] |
| CAB-130 | Section 1 - Layer 2: pull 48-core FO cable (DAS), OTDR test | 2027-05-11 → 2027-07-08 (+58d) | 2027-05-20 → 2027-07-13 (+54d) |  |  |  |
| SPL-110 | Section 1 - fusion splicing (<=0.1 dB), FO closures & OTDR splice-loss test | 2027-05-23 → 2027-07-14 (+52d) | 2027-05-25 → 2027-07-18 (+54d) |  |  | resources Cost Distribution [15764.8]; Splicing & OTDR Team [24 h] → Cost Distribution [11823.6]; Splicing & OTDR Team [24 h] |
| CAB-140 | Section 1 - backfill & compaction - layer 2 | 2027-05-26 → 2027-07-19 (+54d) | 2027-05-27 → 2027-07-20 (+54d) |  |  | resources Cost Distribution [39037.3]; Trench Crew [16 h] → Cost Distribution [26024.9]; Trench Crew [16 h] |
| CAB-150 | Section 1 - Layer 3: lay TDR coaxial cable, continuity test | 2027-05-30 → 2027-07-21 (+52d) | 2027-06-01 → 2027-07-25 (+54d) |  |  |  |
| CAB-160 | Section 1 - final backfill, compaction & reinstatement | 2027-06-02 → 2027-07-26 (+54d) | 2027-06-03 → 2027-07-27 (+54d) |  |  | resources Cost Distribution [39037.3]; Trench Crew [16 h] → Cost Distribution [26024.9]; Trench Crew [16 h] |
| CIV-140 | Section 1 - marker posts, warning tape & route markers | 2027-06-06 → 2027-07-28 (+52d) | 2027-06-06 → 2027-07-28 (+52d) | 89d → 73d |  | resources Cost Distribution [3540]; Civil Crew [8 h] → Cost Distribution [2832]; Civil Crew [8 h] |
| TST-110 | Section 1 - final OTDR certification & test record | 2027-06-06 → 2027-07-28 (+52d) | 2027-06-06 → 2027-07-28 (+52d) | 87d → 71d |  | resources Cost Distribution [1585.92]; Splicing & OTDR Team [8 h] → Cost Distribution [991.2]; Splicing & OTDR Team [8 h] |
| CIV-210 | Section 2 - excavate trench (800x200 mm) & sweet-sand bedding, 1,100 LM | 2027-04-07 → 2027-06-28 (+82d) | 2027-04-20 → 2027-07-11 (+82d) | 26d → 18d |  |  |
| CIV-220 | Section 2 - handholes / manholes installation | 2027-04-21 → 2027-07-12 (+82d) | 2027-04-22 → 2027-07-13 (+82d) | 26d → 18d |  | resources Cost Distribution [15664.9]; Civil Crew [16 h] → Cost Distribution [13924.4]; Civil Crew [16 h] |
| CIV-230 | Section 2 - steel & rigid conduits at culverts / track crossings | 2027-04-21 → 2027-07-12 (+82d) | 2027-04-22 → 2027-07-13 (+82d) | 26d → 18d | CIV-210, PRC-CND50, SAR review & issue WP-03 (track crossings / possession) → CIV-210, PRC-CND50, PRM-2120 | resources Cost Distribution [9920.5]; Civil Crew [16 h] → Cost Distribution [11160.6]; Civil Crew [16 h] |
| CAB-210 | Section 2 - Layer 1: lay DSS cable, pre-installed connectors, OTDR test | 2027-06-06 → 2027-07-14 (+38d) | 2027-06-09 → 2027-07-19 (+40d) | 0d → 18d | CIV-220, CIV-230, PRC-DSS50, CAB-160 → CIV-220, CIV-230, PRC-DSS50, CAB-110 | resources Cost Distribution [46987.6]; Cable Crew [32 h] → Cost Distribution [41114.2]; Cable Crew [32 h] |
| CAB-220 | Section 2 - backfill & compaction - layer 1 | 2027-06-10 → 2027-07-20 (+40d) | 2027-06-13 → 2027-07-21 (+38d) | 0d → 18d |  | resources Cost Distribution [39037.3]; Trench Crew [16 h] → Cost Distribution [26024.9]; Trench Crew [16 h] |
| CAB-230 | Section 2 - Layer 2: pull 48-core FO cable (DAS), OTDR test | 2027-06-14 → 2027-07-22 (+38d) | 2027-06-17 → 2027-07-27 (+40d) | 0d → 18d | CAB-220, PRC-FO50 → CAB-220, PRC-FO50, CAB-130 |  |
| SPL-210 | Section 2 - fusion splicing (<=0.1 dB), FO closures & OTDR splice-loss test | 2027-06-20 → 2027-07-28 (+38d) | 2027-06-22 → 2027-08-01 (+40d) | 0d → 18d |  | resources Cost Distribution [15764.8]; Splicing & OTDR Team [24 h] → Cost Distribution [11823.6]; Splicing & OTDR Team [24 h] |
| CAB-240 | Section 2 - backfill & compaction - layer 2 | 2027-06-23 → 2027-08-02 (+40d) | 2027-06-24 → 2027-08-03 (+40d) | 0d → 18d |  | resources Cost Distribution [39037.3]; Trench Crew [16 h] → Cost Distribution [26024.9]; Trench Crew [16 h] |
| CAB-250 | Section 2 - Layer 3: lay TDR coaxial cable, continuity test | 2027-06-27 → 2027-08-04 (+38d) | 2027-06-29 → 2027-08-08 (+40d) | 0d → 18d | CAB-240, PRC-TDRC50 → CAB-240, PRC-TDRC50, CAB-150 |  |
| CAB-260 | Section 2 - final backfill, compaction & reinstatement | 2027-06-30 → 2027-08-09 (+40d) | 2027-07-01 → 2027-08-10 (+40d) | 0d → 18d |  | resources Cost Distribution [39037.3]; Trench Crew [16 h] → Cost Distribution [26024.9]; Trench Crew [16 h] |
| CIV-240 | Section 2 - marker posts, warning tape & route markers | 2027-07-04 → 2027-08-11 (+38d) | 2027-07-04 → 2027-08-11 (+38d) | 69d → 63d |  | resources Cost Distribution [3540]; Civil Crew [8 h] → Cost Distribution [2832]; Civil Crew [8 h] |
| TST-210 | Section 2 - final OTDR certification & test record | 2027-07-04 → 2027-08-11 (+38d) | 2027-07-04 → 2027-08-11 (+38d) | 67d → 61d |  | resources Cost Distribution [1585.92]; Splicing & OTDR Team [8 h] → Cost Distribution [991.2]; Splicing & OTDR Team [8 h] |
| CIV-310 | Section 3 - excavate trench (800x200 mm) & sweet-sand bedding, 1,100 LM | 2027-06-06 → 2027-07-28 (+52d) | 2027-06-17 → 2027-08-10 (+54d) | 8d → 0d | CIV-210, CAB-160 → CIV-110, CAB-160 |  |
| CIV-320 | Section 3 - handholes / manholes installation | 2027-06-20 → 2027-08-11 (+52d) | 2027-06-21 → 2027-08-12 (+52d) | 8d → 0d |  | resources Cost Distribution [15664.9]; Civil Crew [16 h] → Cost Distribution [13924.4]; Civil Crew [16 h] |
| CIV-330 | Section 3 - steel & rigid conduits at culverts / track crossings | 2027-06-20 → 2027-08-11 (+52d) | 2027-06-21 → 2027-08-12 (+52d) | 8d → 0d | CIV-310, PRC-CND50, SAR review & issue WP-03 (track crossings / possession) → CIV-310, PRC-CND50, PRM-2120 | resources Cost Distribution [9920.5]; Civil Crew [16 h] → Cost Distribution [11160.6]; Civil Crew [16 h] |
| CAB-310 | Section 3 - Layer 1: lay DSS cable, pre-installed connectors, OTDR test | 2027-07-04 → 2027-08-15 (+42d) | 2027-07-07 → 2027-08-18 (+42d) |  | CIV-320, CIV-330, PRC-DSS50, CAB-260 → CIV-320, CIV-330, PRC-DSS50, CAB-210 | resources Cost Distribution [46987.6]; Cable Crew [32 h] → Cost Distribution [41114.2]; Cable Crew [32 h] |
| CAB-320 | Section 3 - backfill & compaction - layer 1 | 2027-07-08 → 2027-08-19 (+42d) | 2027-07-11 → 2027-08-22 (+42d) |  |  | resources Cost Distribution [39037.3]; Trench Crew [16 h] → Cost Distribution [26024.9]; Trench Crew [16 h] |
| CAB-330 | Section 3 - Layer 2: pull 48-core FO cable (DAS), OTDR test | 2027-07-12 → 2027-08-23 (+42d) | 2027-07-15 → 2027-08-26 (+42d) |  | CAB-320, PRC-FO50 → CAB-320, PRC-FO50, CAB-230 |  |
| SPL-310 | Section 3 - fusion splicing (<=0.1 dB), FO closures & OTDR splice-loss test | 2027-07-18 → 2027-08-29 (+42d) | 2027-07-20 → 2027-08-31 (+42d) |  |  | resources Cost Distribution [15764.8]; Splicing & OTDR Team [24 h] → Cost Distribution [11823.6]; Splicing & OTDR Team [24 h] |
| CAB-340 | Section 3 - backfill & compaction - layer 2 | 2027-07-21 → 2027-09-01 (+42d) | 2027-07-22 → 2027-09-02 (+42d) |  |  | resources Cost Distribution [39037.3]; Trench Crew [16 h] → Cost Distribution [26024.9]; Trench Crew [16 h] |
| CAB-350 | Section 3 - Layer 3: lay TDR coaxial cable, continuity test | 2027-07-25 → 2027-09-05 (+42d) | 2027-07-27 → 2027-09-07 (+42d) |  | CAB-340, PRC-TDRC50 → CAB-340, PRC-TDRC50, CAB-250 |  |
| CAB-360 | Section 3 - final backfill, compaction & reinstatement | 2027-07-28 → 2027-09-08 (+42d) | 2027-07-29 → 2027-09-09 (+42d) |  |  | resources Cost Distribution [39037.3]; Trench Crew [16 h] → Cost Distribution [26024.9]; Trench Crew [16 h] |
| CIV-340 | Section 3 - marker posts, warning tape & route markers | 2027-08-01 → 2027-09-12 (+42d) | 2027-08-01 → 2027-09-12 (+42d) | 49d → 41d |  | resources Cost Distribution [3540]; Civil Crew [8 h] → Cost Distribution [2832]; Civil Crew [8 h] |
| TST-310 | Section 3 - final OTDR certification & test record | 2027-08-01 → 2027-09-12 (+42d) | 2027-08-01 → 2027-09-12 (+42d) | 47d → 39d |  | resources Cost Distribution [1585.92]; Splicing & OTDR Team [8 h] → Cost Distribution [991.2]; Splicing & OTDR Team [8 h] |
| CIV-410 | Section 4 - excavate trench (800x200 mm) & sweet-sand bedding, 1,100 LM | 2027-07-04 → 2027-08-11 (+38d) | 2027-07-15 → 2027-08-24 (+40d) | 8d → 18d | CIV-310, CAB-260 → CIV-210, CAB-260 |  |
| CIV-420 | Section 4 - handholes / manholes installation | 2027-07-18 → 2027-08-25 (+38d) | 2027-07-19 → 2027-08-26 (+38d) | 8d → 18d |  | resources Cost Distribution [15664.9]; Civil Crew [16 h] → Cost Distribution [13924.4]; Civil Crew [16 h] |
| CIV-430 | Section 4 - steel & rigid conduits at culverts / track crossings | 2027-07-18 → 2027-08-25 (+38d) | 2027-07-19 → 2027-08-26 (+38d) | 8d → 18d | CIV-410, PRC-CND50, SAR review & issue WP-03 (track crossings / possession) → CIV-410, PRC-CND50, PRM-2120 | resources Cost Distribution [9920.5]; Civil Crew [16 h] → Cost Distribution [11160.6]; Civil Crew [16 h] |
| CAB-410 | Section 4 - Layer 1: lay DSS cable, pre-installed connectors, OTDR test | 2027-08-01 → 2027-08-29 (+28d) | 2027-08-04 → 2027-09-01 (+28d) | 0d → 18d | CIV-420, CIV-430, PRC-DSS50, CAB-360 → CIV-420, CIV-430, PRC-DSS50, CAB-310 | resources Cost Distribution [46987.6]; Cable Crew [32 h] → Cost Distribution [41114.2]; Cable Crew [32 h] |
| CAB-420 | Section 4 - backfill & compaction - layer 1 | 2027-08-05 → 2027-09-02 (+28d) | 2027-08-08 → 2027-09-05 (+28d) | 0d → 18d |  | resources Cost Distribution [39037.3]; Trench Crew [16 h] → Cost Distribution [26024.9]; Trench Crew [16 h] |
| CAB-430 | Section 4 - Layer 2: pull 48-core FO cable (DAS), OTDR test | 2027-08-09 → 2027-09-06 (+28d) | 2027-08-12 → 2027-09-09 (+28d) | 0d → 18d | CAB-420, PRC-FO50 → CAB-420, PRC-FO50, CAB-330 |  |
| SPL-410 | Section 4 - fusion splicing (<=0.1 dB), FO closures & OTDR splice-loss test | 2027-08-15 → 2027-09-12 (+28d) | 2027-08-17 → 2027-09-14 (+28d) | 0d → 19d |  | resources Cost Distribution [15764.8]; Splicing & OTDR Team [24 h] → Cost Distribution [11823.6]; Splicing & OTDR Team [24 h] |
| CAB-440 | Section 4 - backfill & compaction - layer 2 | 2027-08-18 → 2027-09-15 (+28d) | 2027-08-19 → 2027-09-16 (+28d) | 0d → 19d |  | resources Cost Distribution [39037.3]; Trench Crew [16 h] → Cost Distribution [26024.9]; Trench Crew [16 h] |
| CAB-450 | Section 4 - Layer 3: lay TDR coaxial cable, continuity test | 2027-08-22 → 2027-09-19 (+28d) | 2027-08-24 → 2027-09-21 (+28d) | 0d → 19d | CAB-440, PRC-TDRC50 → CAB-440, PRC-TDRC50, CAB-350 |  |
| CAB-460 | Section 4 - final backfill, compaction & reinstatement | 2027-08-25 → 2027-09-22 (+28d) | 2027-08-26 → 2027-09-26 (+31d) | 0d → 29d |  | resources Cost Distribution [39037.3]; Trench Crew [16 h] → Cost Distribution [26024.9]; Trench Crew [16 h] |
| CIV-440 | Section 4 - marker posts, warning tape & route markers | 2027-08-29 → 2027-09-27 (+29d) | 2027-08-29 → 2027-09-27 (+29d) | 29d → 31d |  | resources Cost Distribution [3540]; Civil Crew [8 h] → Cost Distribution [2832]; Civil Crew [8 h] |
| TST-410 | Section 4 - final OTDR certification & test record | 2027-08-29 → 2027-09-27 (+29d) | 2027-08-29 → 2027-09-27 (+29d) | 27d → 29d |  | resources Cost Distribution [1585.92]; Splicing & OTDR Team [8 h] → Cost Distribution [991.2]; Splicing & OTDR Team [8 h] |
| CIV-510 | Section 5 - excavate trench (800x200 mm) & sweet-sand bedding, 1,100 LM | 2027-08-01 → 2027-09-12 (+42d) | 2027-08-12 → 2027-09-26 (+45d) | 8d → 0d | CIV-410, CAB-360 → CIV-310, CAB-360 |  |
| CIV-520 | Section 5 - handholes / manholes installation | 2027-08-15 → 2027-09-27 (+43d) | 2027-08-16 → 2027-09-28 (+43d) | 8d → 0d |  | resources Cost Distribution [15664.9]; Civil Crew [16 h] → Cost Distribution [13924.4]; Civil Crew [16 h] |
| CIV-530 | Section 5 - steel & rigid conduits at culverts / track crossings | 2027-08-15 → 2027-09-27 (+43d) | 2027-08-16 → 2027-09-28 (+43d) | 8d → 0d | CIV-510, PRC-CND50, SAR review & issue WP-03 (track crossings / possession) → CIV-510, PRC-CND50, PRM-2120 | resources Cost Distribution [9920.48]; Civil Crew [16 h] → Cost Distribution [11160.5]; Civil Crew [16 h] |
| CAB-510 | Section 5 - Layer 1: lay DSS cable, pre-installed connectors, OTDR test | 2027-08-29 → 2027-09-29 (+31d) | 2027-09-01 → 2027-10-04 (+33d) |  | CIV-520, CIV-530, PRC-DSS50, CAB-460 → CIV-520, CIV-530, PRC-DSS50, CAB-410 | resources Cost Distribution [46987.6]; Cable Crew [32 h] → Cost Distribution [41114.2]; Cable Crew [32 h] |
| CAB-520 | Section 5 - backfill & compaction - layer 1 | 2027-09-02 → 2027-10-05 (+33d) | 2027-09-05 → 2027-10-06 (+31d) |  |  | resources Cost Distribution [39037.3]; Trench Crew [16 h] → Cost Distribution [26024.9]; Trench Crew [16 h] |
| CAB-530 | Section 5 - Layer 2: pull 48-core FO cable (DAS), OTDR test | 2027-09-06 → 2027-10-07 (+31d) | 2027-09-09 → 2027-10-12 (+33d) |  | CAB-520, PRC-FO50 → CAB-520, PRC-FO50, CAB-430 |  |
| SPL-510 | Section 5 - fusion splicing (<=0.1 dB), FO closures & OTDR splice-loss test | 2027-09-12 → 2027-10-13 (+31d) | 2027-09-14 → 2027-10-17 (+33d) |  |  | resources Cost Distribution [15764.8]; Splicing & OTDR Team [24 h] → Cost Distribution [11823.6]; Splicing & OTDR Team [24 h] |
| CAB-540 | Section 5 - backfill & compaction - layer 2 | 2027-09-15 → 2027-10-18 (+33d) | 2027-09-16 → 2027-10-19 (+33d) |  |  | resources Cost Distribution [39037.3]; Trench Crew [16 h] → Cost Distribution [26024.9]; Trench Crew [16 h] |
| CAB-550 | Section 5 - Layer 3: lay TDR coaxial cable, continuity test | 2027-09-19 → 2027-10-20 (+31d) | 2027-09-21 → 2027-10-24 (+33d) |  | CAB-540, PRC-TDRC50 → CAB-540, PRC-TDRC50, CAB-450 |  |
| CAB-560 | Section 5 - final backfill, compaction & reinstatement | 2027-09-22 → 2027-10-25 (+33d) | 2027-09-26 → 2027-10-26 (+30d) |  |  | resources Cost Distribution [39037.3]; Trench Crew [16 h] → Cost Distribution [26024.9]; Trench Crew [16 h] |
| CIV-540 | Section 5 - marker posts, warning tape & route markers | 2027-09-27 → 2027-10-27 (+30d) | 2027-09-27 → 2027-10-27 (+30d) |  |  | resources Cost Distribution [3540]; Civil Crew [8 h] → Cost Distribution [2832]; Civil Crew [8 h] |
| TST-510 | Section 5 - final OTDR certification & test record | 2027-09-27 → 2027-10-27 (+30d) | 2027-09-27 → 2027-10-27 (+30d) |  |  | resources Cost Distribution [1585.92]; Splicing & OTDR Team [8 h] → Cost Distribution [991.2]; Splicing & OTDR Team [8 h] |
| 1.7.3 | **Station Power, Shelter & Field Systems (TDR, Weather, Comms)** | 2027-03-24 → 2027-06-14 (+82d) | 2027-09-28 → 2027-10-28 (+30d) |  |  |  |
| SHL-3410 | Shelter expansion - civil works (if required per assessment) | 2027-03-24 → 2027-06-14 (+82d) | 2027-04-04 → 2027-06-23 (+80d) | 104d → 72d | SAR review & issue WP-04, SAR final approval - IFC package, MOB-3010 → PRM-2120, APR-1560, MOB-3010 | resources Cost Distribution [7552]; Civil Crew [64 h] → Cost Distribution [3776]; Civil Crew [64 h] |
| PWR-3420 | Electrical installation - panels & power upgrade | 2027-04-11 → 2027-06-24 (+74d) | 2027-04-18 → 2027-07-01 (+74d) | 100d → 72d | SHL-3410, PRC-PWR50, SEC review & connection approval (duration TBC) → SHL-3410, PRC-PWR50 | was named Electrical installation - panels & power upgrade (incl. SEC connection) |
| PWR-3430 | UPS installation & 4-hour autonomy test | 2027-04-19 → 2027-07-04 (+76d) | 2027-04-21 → 2027-07-06 (+76d) | 100d → 72d |  | resources Cost Distribution [5664]; Electrical Crew [24 h] → Cost Distribution [3776]; Electrical Crew [24 h] |
| COM-3710 | Communication modules installation | 2027-04-22 → 2027-07-07 (+76d) | 2027-04-25 → 2027-07-08 (+74d) | 104d → 76d |  |  |
| TDR-3510 | TDR system installation - interrogator & antenna | 2027-05-06 → 2027-07-07 (+62d) | 2027-05-12 → 2027-07-13 (+62d) | 90d → 72d |  | resources Cost Distribution [53100]; Commissioning Team [80 h] → Cost Distribution [35400]; Commissioning Team [80 h] |
| WX-3610 | Weather station sensors installation | 2027-04-22 → 2027-07-07 (+76d) | 2027-04-26 → 2027-07-11 (+76d) | 103d → 75d |  |  |
| COM-3720 | SIM activation, alert & e-mail distribution configuration | 2027-04-26 → 2027-07-11 (+76d) | 2027-04-28 → 2027-07-13 (+76d) | 104d → 76d | COM-3710, STC SIM provisioning & activation → COM-3710 |  |
| WX-3620 | Weather station integration with data logger | 2027-04-27 → 2027-07-12 (+76d) | 2027-04-29 → 2027-07-14 (+76d) | 103d → 75d |  | resources Cost Distribution [7965]; Commissioning Team [48 h] → Cost Distribution [5310]; Commissioning Team [48 h] |
| TDR-3520 | TDR configuration, calibration & pre-commissioning | 2027-09-22 → 2027-10-25 (+33d) | 2027-09-28 → 2027-10-28 (+30d) |  |  | resources Cost Distribution [53100]; Commissioning Team [64 h] → Cost Distribution [35400]; Commissioning Team [64 h] |
| 1.7.4 | **Local Cloud, Cybersecurity & Integration Installation** | 2027-05-05 → 2027-06-27 (+53d) | 2027-10-10 → 2027-11-09 (+30d) |  |  |  |
| CLD-3810 | Local KSA cloud infrastructure - provisioning & set-up | 2027-05-05 → 2027-06-27 (+53d) | 2027-05-20 → 2027-07-06 (+47d) | 84d → 70d | PRC-CLD50, SAR final approval - cyber/cloud design → PRC-CLD50, APR-1620 | resources Cost Distribution [152220]; IT/OT Engineers [128 h] → Cost Distribution [65962]; IT/OT Engineers [128 h] |

| ID | Task | Start | Finish | Duration | Total float | Predecessors | Other |
| --- | --- | --- | --- | --- | --- | --- | --- |
| CLD-3820 | Local KSA cloud infrastructure - hardening & connectivity | 2027-05-23 → 2027-07-07 (+45d) | 2027-06-01 → 2027-07-18 (+47d) |  | 84d → 72d |  | resources Cost Distribution [152220]; IT/OT Engineers [128 h] → Cost Distribution [60888]; IT/OT Engineers [128 h] |
| CYB-3920 | Cybersecurity controls implementation & hardening | 2027-05-23 → 2027-07-07 (+45d) | 2027-06-03 → 2027-07-20 (+47d) |  | 99d → 70d | CLD-3810, SAR final approval - cyber/cloud design → CLD-3810, APR-1620 | resources Cost Distribution [226560]; IT/OT Engineers [160 h] → Cost Distribution [169920]; IT/OT Engineers [160 h] |
| INT-4010 | Integration with existing system & iSiteCentral - interfaces & data mapping | 2027-09-29 → 2027-10-31 (+32d) | 2027-10-10 → 2027-11-09 (+30d) |  |  | CLD-3820, APR-1650, Owner NOC & agreed tie-in / outage window, TDR-3520, COM-3720, WX-3620 → CLD-3820, APR-1650, TDR-3520, COM-3720, WX-3620 |  |
| 1.8 | **TESTING, COMMISSIONING & HANDOVER (TC)** | 2027-06-06 → 2027-07-21 (+45d) | 2028-01-02 → 2027-12-20 (-13d) |  |  |  |  |
| 1.8.1 | **Testing & Site Acceptance (OTDR, SAT, Integration, Cyber Audit)** | 2027-06-06 → 2027-07-21 (+45d) | 2027-11-10 → 2027-11-16 (+6d) |  |  |  |  |
| CYB-3930 | Third-party cybersecurity audit | 2027-06-06 → 2027-07-21 (+45d) | 2027-06-17 → 2027-08-03 (+47d) |  | 99d → 70d |  | resources Cost Distribution [113280] → Cost Distribution [283200] |
| CYB-3940 | Audit findings closure & verification | 2027-06-20 → 2027-08-04 (+45d) | 2027-06-23 → 2027-08-09 (+47d) |  | 99d → 70d |  | resources Cost Distribution [56640] → Cost Distribution [113280] |
| TST-4110 | Full-route OTDR certification report & as-installed test records | 2027-09-28 → 2027-10-28 (+30d) | 2027-09-29 → 2027-10-31 (+32d) |  |  |  | resources Cost Distribution [1982.4] → Cost Distribution [4956] |
| INT-4020 | End-to-end integration test with existing system & iSiteCentral (part of SAT) | 2027-11-04 → 2027-11-10 (+6d) | 2027-11-10 → 2027-11-16 (+6d) |  |  | Schedule contingency - time-risk allowance (supplier, weather, Eid-date shift), INT-4010, SAR review & issue WP-05 → MS-070, INT-4010 |  |
| TST-4210 | SAT - site acceptance tests (sensors, power, communications, operational) | 2027-11-04 → 2027-11-10 (+6d) | 2027-11-10 → 2027-11-16 (+6d) |  |  | TST-4110, SAR review & issue WP-05, APR-1670, Schedule contingency - time-risk allowance (supplier, weather, Eid-date shift) → TST-4110, APR-1670, MS-070 | resources Cost Distribution [106200]; Commissioning Team [80 h] → Cost Distribution [88500]; Commissioning Team [80 h] |
| 1.8.2 | **Commissioning & Performance Validation** | 2027-11-11 → 2027-11-17 (+6d) | 2027-12-01 → 2027-12-07 (+6d) |  |  |  |  |
| CMS-4310 | System commissioning & calibration - DAS, DSS, TDR & weather station | 2027-11-11 → 2027-11-17 (+6d) | 2027-11-17 → 2027-11-23 (+6d) |  |  |  |  |
| CMS-4320 | Trial operation - baseline data collection & performance validation | 2027-11-18 → 2027-11-24 (+6d) | 2027-12-01 → 2027-12-07 (+6d) |  | 0d → 2d |  | resources Cost Distribution [31718.4]; Commissioning Team [160 h] → Cost Distribution [75968.4]; Commissioning Team [160 h] |
| 1.8.3 | **Documentation & Training** | 2027-11-18 → 2027-11-24 (+6d) | 2027-12-09 → 2027-12-15 (+6d) |  |  |  |  |
| DOC-5020 | As-built drawings (3 sets, hard + soft) - final revision after SAT | 2027-11-18 → 2027-11-24 (+6d) | 2027-11-25 → 2027-12-01 (+6d) |  | 10d → 0d |  |  |
| DOC-5030 | O&M manuals (3 sets) - final revision | 2027-11-18 → 2027-11-24 (+6d) | 2027-11-25 → 2027-12-01 (+6d) |  | 10d → 0d |  |  |
| DOC-5040 | User training for SAR staff (5 days) | 2027-11-18 → 2027-11-24 (+6d) | 2027-11-24 → 2027-11-30 (+6d) |  | 21d → 8d |  | resources Cost Distribution [38822]; Commissioning Team [80 h] → Cost Distribution [142898]; Commissioning Team [80 h] |
| DOC-5010 | Technical reports - TDR, DAS (seismic), DSS strain, weather data & alerts | 2027-12-02 → 2027-12-08 (+6d) | 2027-12-09 → 2027-12-15 (+6d) |  | 0d → 2d |  | resources Cost Distribution [88500]; Document Control / Tech Writers [96 h] → Cost Distribution [44250]; Document Control / Tech Writers [96 h] |
| 1.8.4 | **Handover Submittals (Contractor)** | 2027-12-12 → 2027-12-02 (-10d) | 2027-12-27 → 2027-12-05 (-22d) |  |  |  |  |
| DOC-5050 | Handover dossier - as-builts, O&M manuals, QA/QC, material test & HSE records - compile & submit | 2027-12-12 → 2027-12-02 (-10d) | 2027-12-13 → 2027-12-05 (-8d) |  |  | DOC-5010, DOC-5020, DOC-5030 → DOC-5020, DOC-5030 | was named Handover dossier - QA/QC, material test & HSE records, reports - compile & submit; resources none → Cost Distribution [3835] |
| 1.8.5 | **SAR Acceptance & Formal Handover** | 2027-12-14 → 2027-12-06 (-8d) | 2028-01-02 → 2027-12-20 (-13d) |  |  |  |  |
| APR-5060 | SAR review & acceptance of handover dossier (as-builts, O&M, reports) | 2027-12-14 → 2027-12-06 (-8d) | 2027-12-22 → 2027-12-19 (-3d) | 7d → 14d |  |  | was named SAR review of handover dossier (as-builts, O&M, reports) |
| HND-5090 | Formal handover & Taking-Over certificate (SAR) | 2028-01-02 → 2027-12-20 (-13d) | 2028-01-02 → 2027-12-20 (-13d) |  |  | SAR final acceptance of handover dossier, DEM-5100 → APR-5060, DEM-5100, DOC-5010 | resources Cost Distribution [16638] → Cost Distribution [61242] |
