# Northern Rail Extension (A) - Demo

How a schedule from Primavera P6 changed from version to version. A marks actual dates.

## Version 1 (data date 2025-01-05, saved 2025-01-05, file Demo_Baseline_Rev0.xer)

Note of the change: Add SAR PCD desktop UI, PDF/Excel reporting, packaging and documentation

| ID | WBS | Task | Duration | Start | Finish | Predecessors | Total float |
| --- | --- | --- | --- | --- | --- | --- | --- |
|  | 0 | **Key Milestones** |  | 2025-01-05 | 2026-11-15 |  |  |
| MS-1010 |  | Notice to Proceed | 0d | 2025-01-05 | 2025-01-05 |  | 0d |
| MS-1020 |  | Design Complete | 0d | 2025-06-11 | 2025-06-11 | ENG-1030, ENG-1060, ENG-1090, ENG-1120, ENG-1150, ENG-1180, ENG-1220 | 365d |
| MS-1030 |  | Earthworks Complete | 0d | 2025-09-17 | 2025-09-17 | CNS-1020, CNS-1080, CNS-1140 | 295d |
| MS-1040 |  | Track Laying Complete | 0d | 2026-03-15 | 2026-03-15 | CNS-1060, CNS-1120, CNS-1180 | 130d |
| MS-1050 |  | Systems Energized | 0d | 2026-07-16 | 2026-07-16 | TST-1040 | 85d |
| MS-1060 |  | Project Completion | 0d | 2026-11-15 | 2026-11-15 | HND-1030, MS-1050, MS-1020 | 0d |
|  | 1 | **Engineering** |  | 2025-01-05 | 2025-07-30 |  |  |
|  | 1 | **Detailed Design** |  | 2025-01-05 | 2025-07-30 |  |  |
| ENG-1010 |  | Detailed Design - Section A | 55d | 2025-01-05 | 2025-03-20 | MS-1010 | 15d |
| ENG-1040 |  | Detailed Design - Section B | 60d | 2025-01-05 | 2025-03-27 | MS-1010 | 0d |
| ENG-1070 |  | Detailed Design - Section C | 65d | 2025-01-05 | 2025-04-08 | MS-1010 | 45d |
| ENG-1190 |  | OCS Detailed Design | 80d | 2025-01-05 | 2025-04-29 | MS-1010 | 0d |
| ENG-1200 |  | Signalling Detailed Design | 80d | 2025-01-05 | 2025-04-29 | MS-1010 | 0d |
| ENG-1210 |  | Telecom Detailed Design | 80d | 2025-01-05 | 2025-04-29 | MS-1010 | 0d |
| ENG-1100 |  | Detailed Design - North Station | 70d | 2025-01-19 | 2025-04-29 | MS-1010 FS+10d | 110d |
| ENG-1130 |  | Detailed Design - Central Station | 70d | 2025-01-19 | 2025-04-29 | MS-1010 FS+10d | 110d |
| ENG-1160 |  | Detailed Design - South Station | 70d | 2025-01-19 | 2025-04-29 | MS-1010 FS+10d | 110d |
| ENG-1230 |  | Design Material Support | 60d | 2025-05-07 | 2025-07-30 | ENG-1220 SS+5d | 330d |
|  | 2 | **Design Review & Approvals** |  | 2025-03-23 | 2025-06-11 |  |  |
| ENG-1020 |  | Design Review - Section A | 20d | 2025-03-23 | 2025-04-22 | ENG-1010 | 15d |
| ENG-1050 |  | Design Review - Section B | 20d | 2025-04-02 | 2025-04-29 | ENG-1040 | 0d |
| ENG-1080 |  | Design Review - Section C | 20d | 2025-04-09 | 2025-05-06 | ENG-1070 | 45d |
| ENG-1030 |  | IFC Drawings - Section A | 10d | 2025-04-23 | 2025-05-06 | ENG-1020 | 55d |
| ENG-1060 |  | IFC Drawings - Section B | 10d | 2025-04-30 | 2025-05-13 | ENG-1050 | 50d |
| ENG-1110 |  | Design Review - North Station | 20d | 2025-04-30 | 2025-05-27 | ENG-1100 | 110d |
| ENG-1140 |  | Design Review - Central Station | 20d | 2025-04-30 | 2025-05-27 | ENG-1130 | 110d |
| ENG-1170 |  | Design Review - South Station | 20d | 2025-04-30 | 2025-05-27 | ENG-1160 | 110d |
| ENG-1220 |  | Design Review - Systems | 25d | 2025-04-30 | 2025-06-03 | ENG-1190, ENG-1200, ENG-1210 | 0d |
| ENG-1090 |  | IFC Drawings - Section C | 10d | 2025-05-07 | 2025-05-20 | ENG-1080 | 45d |
| ENG-1240 |  | Shop Drawings - Track Works | 25d | 2025-05-07 | 2025-06-11 | ENG-1030 | 145d |
| ENG-1120 |  | IFC Drawings - North Station | 10d | 2025-05-28 | 2025-06-11 | ENG-1110 | 110d |
| ENG-1150 |  | IFC Drawings - Central Station | 10d | 2025-05-28 | 2025-06-11 | ENG-1140 | 110d |
| ENG-1180 |  | IFC Drawings - South Station | 10d | 2025-05-28 | 2025-06-11 | ENG-1170 | 110d |
|  | 2 | **Procurement** |  | 2025-02-02 | 2026-03-08 |  |  |
|  | 1 | **Long Lead Items** |  | 2025-04-23 | 2026-03-08 |  |  |
| PRC-1010 |  | Rails - Technical Submittal | 15d | 2025-04-23 | 2025-05-13 | ENG-1020 | 15d |
| PRC-1290 |  | Station Steel - Technical Submittal | 15d | 2025-04-23 | 2025-05-13 | ENG-1020 | 50d |
| PRC-1080 |  | Turnouts - Technical Submittal | 15d | 2025-04-30 | 2025-05-20 | ENG-1050 | 0d |
| PRC-1020 |  | Rails - Submittal Approval | 10d | 2025-05-14 | 2025-05-27 | PRC-1010 | 15d |
| PRC-1300 |  | Station Steel - Submittal Approval | 10d | 2025-05-14 | 2025-05-27 | PRC-1290 | 50d |
| PRC-1090 |  | Turnouts - Submittal Approval | 10d | 2025-05-21 | 2025-06-03 | PRC-1080 | 0d |
| PRC-1030 |  | Rails - Purchase Order | 5d | 2025-05-28 | 2025-06-03 | PRC-1020 | 15d |
| PRC-1310 |  | Station Steel - Purchase Order | 5d | 2025-05-28 | 2025-06-03 | PRC-1300 | 50d |
| PRC-1040 |  | Rails - Manufacturing | 90d | 2025-06-04 | 2025-10-09 | PRC-1030 | 15d |
| PRC-1100 |  | Turnouts - Purchase Order | 5d | 2025-06-04 | 2025-06-11 | PRC-1090 | 0d |
| PRC-1150 |  | Signalling Equipment - Technical Submittal | 15d | 2025-06-04 | 2025-06-25 | ENG-1220 | 0d |
| PRC-1220 |  | OCS Materials - Technical Submittal | 15d | 2025-06-04 | 2025-06-25 | ENG-1220 | 45d |
| PRC-1320 |  | Station Steel - Manufacturing | 60d | 2025-06-04 | 2025-08-27 | PRC-1310 | 50d |
| PRC-1110 |  | Turnouts - Manufacturing | 100d | 2025-06-12 | 2025-10-30 | PRC-1100 | 0d |
| PRC-1160 |  | Signalling Equipment - Submittal Approval | 10d | 2025-06-26 | 2025-07-09 | PRC-1150 | 0d |
| PRC-1230 |  | OCS Materials - Submittal Approval | 10d | 2025-06-26 | 2025-07-09 | PRC-1220 | 45d |
| PRC-1170 |  | Signalling Equipment - Purchase Order | 5d | 2025-07-10 | 2025-07-16 | PRC-1160 | 0d |
| PRC-1240 |  | OCS Materials - Purchase Order | 5d | 2025-07-10 | 2025-07-16 | PRC-1230 | 45d |
| PRC-1180 |  | Signalling Equipment - Manufacturing | 120d | 2025-07-17 | 2026-01-01 | PRC-1170 | 0d |
| PRC-1250 |  | OCS Materials - Manufacturing | 80d | 2025-07-17 | 2025-11-06 | PRC-1240 | 45d |
| PRC-1330 |  | Station Steel - FAT | 5d | 2025-08-28 | 2025-09-03 | PRC-1320 | 50d |
| PRC-1340 |  | Station Steel - Shipping | 30d | 2025-09-04 | 2025-10-16 | PRC-1330 | 50d |
| PRC-1050 |  | Rails - FAT | 5d | 2025-10-12 | 2025-10-16 | PRC-1040 | 15d |
| PRC-1060 |  | Rails - Shipping | 30d | 2025-10-19 | 2025-11-27 | PRC-1050 | 15d |
| PRC-1350 |  | Station Steel - Delivery to Site | 10d | 2025-10-19 | 2025-10-30 | PRC-1340 | 50d |
| PRC-1120 |  | Turnouts - FAT | 5d | 2025-11-02 | 2025-11-06 | PRC-1110 | 0d |
| PRC-1130 |  | Turnouts - Shipping | 30d | 2025-11-09 | 2025-12-18 | PRC-1120 | 0d |
| PRC-1260 |  | OCS Materials - FAT | 5d | 2025-11-09 | 2025-11-13 | PRC-1250 | 45d |
| PRC-1270 |  | OCS Materials - Shipping | 30d | 2025-11-16 | 2025-12-25 | PRC-1260 | 45d |
| PRC-1070 |  | Rails - Delivery to Site | 10d | 2025-11-30 | 2025-12-11 | PRC-1060 | 15d |
| PRC-1140 |  | Turnouts - Delivery to Site | 10d | 2025-12-21 | 2026-01-01 | PRC-1130 | 0d |
| PRC-1280 |  | OCS Materials - Delivery to Site | 10d | 2025-12-28 | 2026-01-08 | PRC-1270 | 45d |
| PRC-1190 |  | Signalling Equipment - FAT | 5d | 2026-01-04 | 2026-01-08 | PRC-1180 | 0d |
| PRC-1200 |  | Signalling Equipment - Shipping | 30d | 2026-01-11 | 2026-02-19 | PRC-1190 | 0d |

| ID | WBS | Task | Duration | Start | Finish | Predecessors | Total float |
| --- | --- | --- | --- | --- | --- | --- | --- |
| PRC-1210 |  | Signalling Equipment - Delivery to Site | 10d | 2026-02-23 | 2026-03-08 | PRC-1200 | 0d |
|  | 2 | **General Materials** |  | 2025-02-02 | 2025-06-25 |  |  |
| PRC-1360 |  | Concrete Supply Contract | 20d | 2025-02-02 | 2025-02-27 | MS-1010 FS+20d | 155d |
| PRC-1370 |  | Ballast Supply - Batch 1 | 40d | 2025-03-02 | 2025-04-29 | PRC-1360 | 195d |
| PRC-1380 |  | Ballast Supply - Batch 2 | 40d | 2025-04-02 | 2025-05-27 | PRC-1360 FS+20d | 175d |
| PRC-1390 |  | Ballast Supply - Batch 3 | 40d | 2025-04-30 | 2025-06-25 | PRC-1360 FS+40d | 155d |
|  | 3 | **Construction** |  | 2025-04-23 | 2026-05-19 |  |  |
|  | 1 | **Earthworks** |  | 2025-04-23 | 2025-09-17 |  |  |
| CNS-1010 |  | Site Mobilization - Section A | 15d | 2025-04-23 | 2025-05-13 | ENG-1030 SS | 55d |
| CNS-1070 |  | Site Mobilization - Section B | 15d | 2025-04-30 | 2025-05-20 | ENG-1060 SS | 50d |
| CNS-1130 |  | Site Mobilization - Section C | 15d | 2025-05-07 | 2025-05-27 | ENG-1090 SS | 45d |
| CNS-1020 |  | Earthworks - Section A | 80d | 2025-05-14 | 2025-09-03 | CNS-1010, ENG-1030 | 55d |
| CNS-1080 |  | Earthworks - Section B | 80d | 2025-05-21 | 2025-09-10 | CNS-1070, ENG-1060 | 50d |
| CNS-1140 |  | Earthworks - Section C | 80d | 2025-05-28 | 2025-09-17 | CNS-1130, ENG-1090 | 45d |
| CNS-1030 |  | Drainage & Culverts - Section A | 50d | 2025-06-12 | 2025-08-20 | CNS-1020 SS+20d | 95d |
| CNS-1090 |  | Drainage & Culverts - Section B | 50d | 2025-06-19 | 2025-08-27 | CNS-1080 SS+20d | 90d |
| CNS-1150 |  | Drainage & Culverts - Section C | 50d | 2025-06-26 | 2025-09-03 | CNS-1140 SS+20d | 85d |
|  | 2 | **Track Works** |  | 2025-09-04 | 2026-03-31 |  |  |
| CNS-1040 |  | Sub-ballast - Section A | 30d | 2025-09-04 | 2025-10-16 | CNS-1020, CNS-1030 FF | 55d |
| CNS-1100 |  | Sub-ballast - Section B | 30d | 2025-09-11 | 2025-10-23 | CNS-1080, CNS-1090 FF | 50d |
| CNS-1160 |  | Sub-ballast - Section C | 30d | 2025-09-18 | 2025-10-30 | CNS-1140, CNS-1150 FF | 45d |
| CNS-1050 |  | Track Installation - Section A | 60d | 2026-01-04 | 2026-03-31 | CNS-1040, PRC-1070, PRC-1140, ENG-1240 | 0d |
| CNS-1110 |  | Track Installation - Section B | 60d | 2026-01-04 | 2026-03-31 | CNS-1100, PRC-1070, PRC-1140, ENG-1240 | 0d |
| CNS-1170 |  | Track Installation - Section C | 60d | 2026-01-04 | 2026-03-31 | CNS-1160, PRC-1070, PRC-1140, ENG-1240 | 0d |
| CNS-1060 |  | Ballast & Tamping - Section A | 30d | 2026-02-01 | 2026-03-15 | CNS-1050 SS+20d, PRC-1370 | 0d |
| CNS-1120 |  | Ballast & Tamping - Section B | 30d | 2026-02-01 | 2026-03-15 | CNS-1110 SS+20d, PRC-1380 | 0d |
| CNS-1180 |  | Ballast & Tamping - Section C | 30d | 2026-02-01 | 2026-03-15 | CNS-1170 SS+20d, PRC-1390 | 0d |
|  | 3 | **Stations & Structures** |  | 2025-06-12 | 2026-05-19 |  |  |
| CNS-1190 |  | Foundations - North Station | 40d | 2025-06-12 | 2025-08-06 | ENG-1120, PRC-1360 | 110d |
| CNS-1240 |  | Foundations - Central Station | 40d | 2025-06-12 | 2025-08-06 | ENG-1150, PRC-1360 | 110d |
| CNS-1290 |  | Foundations - South Station | 40d | 2025-06-12 | 2025-08-06 | ENG-1180, PRC-1360 | 110d |
| CNS-1200 |  | Station Structure - North Station | 80d | 2025-11-02 | 2026-02-19 | CNS-1190, PRC-1350 | 50d |
| CNS-1250 |  | Station Structure - Central Station | 80d | 2025-11-02 | 2026-02-19 | CNS-1240, PRC-1350 | 50d |
| CNS-1300 |  | Station Structure - South Station | 80d | 2025-11-02 | 2026-02-19 | CNS-1290, PRC-1350 | 50d |
| CNS-1220 |  | MEP Installation - North Station | 60d | 2025-12-28 | 2026-03-24 | CNS-1200 SS+40d | 80d |
| CNS-1270 |  | MEP Installation - Central Station | 60d | 2025-12-28 | 2026-03-24 | CNS-1250 SS+40d | 80d |
| CNS-1320 |  | MEP Installation - South Station | 60d | 2025-12-28 | 2026-03-24 | CNS-1300 SS+40d | 80d |
| CNS-1210 |  | Architectural Finishes - North Station | 60d | 2026-02-23 | 2026-05-19 | CNS-1200 | 50d |
| CNS-1260 |  | Architectural Finishes - Central Station | 60d | 2026-02-23 | 2026-05-19 | CNS-1250 | 50d |
| CNS-1310 |  | Architectural Finishes - South Station | 60d | 2026-02-23 | 2026-05-19 | CNS-1300 | 50d |
| CNS-1230 |  | Platform Finishes - North Station | 30d | 2026-03-25 | 2026-05-05 | CNS-1210 SS+20d, CNS-1220 FF | 50d |
| CNS-1280 |  | Platform Finishes - Central Station | 30d | 2026-03-25 | 2026-05-05 | CNS-1260 SS+20d, CNS-1270 FF | 50d |
| CNS-1330 |  | Platform Finishes - South Station | 30d | 2026-03-25 | 2026-05-05 | CNS-1310 SS+20d, CNS-1320 FF | 50d |
|  | 4 | **Systems Installation** |  | 2026-02-15 | 2026-05-19 |  |  |
| CNS-1360 |  | Telecom Installation - Section A | 40d | 2026-02-15 | 2026-04-14 | CNS-1060 SS+10d | 25d |
| CNS-1390 |  | Telecom Installation - Section B | 40d | 2026-02-15 | 2026-04-14 | CNS-1120 SS+10d | 25d |
| CNS-1420 |  | Telecom Installation - Section C | 40d | 2026-02-15 | 2026-04-14 | CNS-1180 SS+10d | 25d |
| CNS-1350 |  | Signalling Installation - Section A | 50d | 2026-03-09 | 2026-05-19 | CNS-1060 SS+10d, PRC-1210 | 0d |
| CNS-1380 |  | Signalling Installation - Section B | 50d | 2026-03-09 | 2026-05-19 | CNS-1120 SS+10d, PRC-1210 | 0d |
| CNS-1410 |  | Signalling Installation - Section C | 50d | 2026-03-09 | 2026-05-19 | CNS-1180 SS+10d, PRC-1210 | 0d |
| CNS-1340 |  | OCS Installation - Section A | 45d | 2026-03-16 | 2026-05-19 | CNS-1060, PRC-1280 | 0d |
| CNS-1370 |  | OCS Installation - Section B | 45d | 2026-03-16 | 2026-05-19 | CNS-1120, PRC-1280 | 0d |
| CNS-1400 |  | OCS Installation - Section C | 45d | 2026-03-16 | 2026-05-19 | CNS-1180, PRC-1280 | 0d |
|  | 4 | **Testing & Commissioning** |  | 2026-05-20 | 2026-11-15 |  |  |
| TST-1010 |  | System Testing - Section A | 30d | 2026-05-20 | 2026-07-02 | CNS-1340, CNS-1350, CNS-1360 | 0d |
| TST-1020 |  | System Testing - Section B | 30d | 2026-05-20 | 2026-07-02 | CNS-1370, CNS-1380, CNS-1390 | 0d |
| TST-1030 |  | System Testing - Section C | 30d | 2026-05-20 | 2026-07-02 | CNS-1400, CNS-1410, CNS-1420 | 0d |
| TST-1040 |  | Energization | 10d | 2026-07-05 | 2026-07-16 | TST-1010, TST-1020, TST-1030 | 0d |
| TST-1050 |  | Integration Testing | 40d | 2026-07-19 | 2026-09-10 | TST-1040, CNS-1230, CNS-1280, CNS-1330 | 0d |
| TST-1060 |  | Trial Running | 45d | 2026-09-13 | 2026-11-15 | TST-1050 | 0d |
|  | 5 | **Handover** |  | 2026-03-16 | 2026-11-15 |  |  |
| HND-1010 |  | As-built Documentation | 40d | 2026-03-16 | 2026-05-12 | MS-1040 | 130d |
| HND-1020 |  | O&M Manuals & Training | 30d | 2026-08-02 | 2026-09-10 | TST-1050 SS+10d | 45d |
| HND-1030 |  | Provisional Acceptance (PAC) | 0d | 2026-11-15 | 2026-11-15 | TST-1060, HND-1010, HND-1020 | 0d |

## Version 2 (data date 2025-11-02, saved 2025-11-02, file Demo_Update_2025-11.xer)

Note of the change: Add SAR PCD desktop UI, PDF/Excel reporting, packaging and documentation

Last finish 2026-11-15 → 2027-01-19 (+65d). Complete tasks 0 → 60.

Added:

| ID | Task | Duration | Start | Finish | Predecessors | Resources |
| --- | --- | --- | --- | --- | --- | --- |
| ENG-1215 | Telecommunications System Detailed Design | 80d | 2025-01-05 A | 2025-05-22 A | MS-1010 | DES Labour [1280 h] |
| CNS-1995 | Additional Drainage Works - Section B | 25d | 2025-07-31 A | 2025-09-08 A | CNS-1080 SS+30d | CIV Labour [400 h] |
| CNS-1251 | Station Structure - Central Station - Part 1 | 45d | 2025-12-15 | 2026-02-15 | CNS-1240, PRC-1350 | STN Labour [720 h] |
| CNS-1252 | Station Structure - Central Station - Part 2 | 45d | 2026-02-16 | 2026-04-22 | CNS-1251 | STN Labour [720 h] |

Removed: ENG-1210 Telecom Detailed Design; PRC-1390 Ballast Supply - Batch 3; CNS-1250 Station Structure - Central Station

Changed:

| ID | Task | Start | Finish | Complete | Total float | Predecessors |
| --- | --- | --- | --- | --- | --- | --- |
| 0 | **Key Milestones** |  | 2026-11-15 → 2027-01-19 (+65d) |  |  |  |
| MS-1010 | Notice to Proceed | 2025-01-05 A | 2025-01-05 A | 0% → 100% | 0d → none |  |
| MS-1020 | Design Complete | 2025-06-11 → 2025-07-13 A (+32d) | 2025-06-11 → 2025-07-13 A (+32d) | 0% → 100% | 365d → none |  |
| MS-1030 | Earthworks Complete | 2025-09-17 → 2025-10-20 A (+33d) | 2025-09-17 → 2025-10-20 A (+33d) | 0% → 100% | 295d → none |  |
| MS-1040 | Track Laying Complete | 2026-03-15 → 2026-05-14 (+60d) | 2026-03-15 → 2026-05-14 (+60d) |  | 130d → 88d |  |
| MS-1050 | Systems Energized | 2026-07-16 → 2026-09-21 (+67d) | 2026-07-16 → 2026-09-21 (+67d) |  | 85d → 38d |  |
| MS-1060 | Project Completion | 2026-11-15 → 2027-01-19 (+65d) | 2026-11-15 → 2027-01-19 (+65d) |  | 0d → -47d |  |
| 1 | **Engineering** |  | 2025-07-30 → 2025-09-16 (+48d) |  |  |  |
| 1 | **Detailed Design** |  | 2025-07-30 → 2025-09-16 (+48d) |  |  |  |
| ENG-1010 | Detailed Design - Section A | 2025-01-05 A | 2025-03-20 → 2025-04-16 A (+27d) | 0% → 100% | 15d → none |  |
| ENG-1040 | Detailed Design - Section B | 2025-01-05 A | 2025-03-27 → 2025-04-23 A (+27d) | 0% → 100% | 0d → none |  |
| ENG-1070 | Detailed Design - Section C | 2025-01-05 A | 2025-04-08 → 2025-04-28 A (+20d) | 0% → 100% | 45d → none |  |
| ENG-1190 | OCS Detailed Design | 2025-01-05 A | 2025-04-29 → 2025-05-11 A (+12d) | 0% → 100% | 0d → none |  |
| ENG-1200 | Signalling Detailed Design | 2025-01-05 A | 2025-04-29 → 2025-05-18 A (+19d) | 0% → 100% | 0d → none |  |
| ENG-1100 | Detailed Design - North Station | 2025-01-19 A | 2025-04-29 → 2025-05-20 A (+21d) | 0% → 100% | 110d → none |  |
| ENG-1130 | Detailed Design - Central Station | 2025-01-19 A | 2025-04-29 → 2025-05-13 A (+14d) | 0% → 100% | 110d → none |  |
| ENG-1160 | Detailed Design - South Station | 2025-01-19 A | 2025-04-29 → 2025-05-18 A (+19d) | 0% → 100% | 110d → none |  |
| ENG-1230 | Design Material Support | 2025-05-07 → 2025-06-01 A (+25d) | 2025-07-30 → 2025-09-16 A (+48d) | 0% → 100% | 330d → none |  |
| 2 | **Design Review & Approvals** | 2025-03-23 → 2025-04-17 (+25d) | 2025-06-11 → 2025-07-13 (+32d) |  |  |  |
| ENG-1020 | Design Review - Section A | 2025-03-23 → 2025-04-17 A (+25d) | 2025-04-22 → 2025-05-15 A (+23d) | 0% → 100% | 15d → none |  |
| ENG-1050 | Design Review - Section B | 2025-04-02 → 2025-04-24 A (+22d) | 2025-04-29 → 2025-05-28 A (+29d) | 0% → 100% | 0d → none |  |
| ENG-1080 | Design Review - Section C | 2025-04-09 → 2025-04-29 A (+20d) | 2025-05-06 → 2025-05-27 A (+21d) | 0% → 100% | 45d → none |  |
| ENG-1140 | Design Review - Central Station | 2025-04-30 → 2025-05-14 A (+14d) | 2025-05-27 → 2025-06-18 A (+22d) | 0% → 100% | 110d → none |  |
| ENG-1030 | IFC Drawings - Section A | 2025-04-23 → 2025-05-18 A (+25d) | 2025-05-06 → 2025-06-01 A (+26d) | 0% → 100% | 55d → none |  |
| ENG-1170 | Design Review - South Station | 2025-04-30 → 2025-05-19 A (+19d) | 2025-05-27 → 2025-06-17 A (+21d) | 0% → 100% | 110d → none |  |
| ENG-1110 | Design Review - North Station | 2025-04-30 → 2025-05-21 A (+21d) | 2025-05-27 → 2025-06-25 A (+29d) | 0% → 100% | 110d → none |  |
| ENG-1220 | Design Review - Systems | 2025-04-30 → 2025-05-25 A (+25d) | 2025-06-03 → 2025-07-02 A (+29d) | 0% → 100% | 0d → none | ENG-1190, ENG-1200, Telecom Detailed Design → ENG-1190, ENG-1200, ENG-1215 |
| ENG-1090 | IFC Drawings - Section C | 2025-05-07 → 2025-05-28 A (+21d) | 2025-05-20 → 2025-06-12 A (+23d) | 0% → 100% | 45d → none |  |
| ENG-1060 | IFC Drawings - Section B | 2025-04-30 → 2025-05-29 A (+29d) | 2025-05-13 → 2025-06-15 A (+33d) | 0% → 100% | 50d → none |  |
| ENG-1240 | Shop Drawings - Track Works | 2025-05-07 → 2025-06-02 A (+26d) | 2025-06-11 → 2025-07-09 A (+28d) | 0% → 100% | 145d → none |  |
| ENG-1180 | IFC Drawings - South Station | 2025-05-28 → 2025-06-18 A (+21d) | 2025-06-11 → 2025-07-02 A (+21d) | 0% → 100% | 110d → none |  |
| ENG-1150 | IFC Drawings - Central Station | 2025-05-28 → 2025-06-19 A (+22d) | 2025-06-11 → 2025-07-06 A (+25d) | 0% → 100% | 110d → none |  |
| ENG-1120 | IFC Drawings - North Station | 2025-05-28 → 2025-06-26 A (+29d) | 2025-06-11 → 2025-07-13 A (+32d) | 0% → 100% | 110d → none |  |
| 2 | **Procurement** |  | 2026-03-08 → 2026-05-14 (+67d) |  |  |  |
| 1 | **Long Lead Items** | 2025-04-23 → 2025-05-18 (+25d) | 2026-03-08 → 2026-05-14 (+67d) |  |  |  |
| PRC-1010 | Rails - Technical Submittal | 2025-04-23 → 2025-05-18 A (+25d) | 2025-05-13 → 2025-06-04 A (+22d) | 0% → 100% | 15d → none |  |
| PRC-1290 | Station Steel - Technical Submittal | 2025-04-23 → 2025-05-18 A (+25d) | 2025-05-13 → 2025-06-11 A (+29d) | 0% → 100% | 50d → none |  |
| PRC-1080 | Turnouts - Technical Submittal | 2025-04-30 → 2025-05-29 A (+29d) | 2025-05-20 → 2025-06-19 A (+30d) | 0% → 100% | 0d → none |  |
| PRC-1020 | Rails - Submittal Approval | 2025-05-14 → 2025-06-05 A (+22d) | 2025-05-27 → 2025-06-22 A (+26d) | 0% → 100% | 15d → none |  |
| PRC-1300 | Station Steel - Submittal Approval | 2025-05-14 → 2025-06-12 A (+29d) | 2025-05-27 → 2025-06-29 A (+33d) | 0% → 100% | 50d → none |  |
| PRC-1090 | Turnouts - Submittal Approval | 2025-05-21 → 2025-06-22 A (+32d) | 2025-06-03 → 2025-07-06 A (+33d) | 0% → 100% | 0d → none |  |
| PRC-1030 | Rails - Purchase Order | 2025-05-28 → 2025-06-23 A (+26d) | 2025-06-03 → 2025-06-29 A (+26d) | 0% → 100% | 15d → none |  |
| PRC-1040 | Rails - Manufacturing | 2025-06-04 → 2025-06-30 A (+26d) | 2025-10-09 → 2025-11-10 (+32d) | 0% → 93% | 15d → -7d |  |
| PRC-1310 | Station Steel - Purchase Order | 2025-05-28 → 2025-06-30 A (+33d) | 2025-06-03 → 2025-07-07 A (+34d) | 0% → 100% | 50d → none |  |
| PRC-1150 | Signalling Equipment - Technical Submittal | 2025-06-04 → 2025-07-03 A (+29d) | 2025-06-25 → 2025-07-22 A (+27d) | 0% → 100% | 0d → none |  |
| PRC-1220 | OCS Materials - Technical Submittal | 2025-06-04 → 2025-07-03 A (+29d) | 2025-06-25 → 2025-07-24 A (+29d) | 0% → 100% | 45d → none |  |
| PRC-1100 | Turnouts - Purchase Order | 2025-06-04 → 2025-07-07 A (+33d) | 2025-06-11 → 2025-07-13 A (+32d) | 0% → 100% | 0d → none |  |
| PRC-1320 | Station Steel - Manufacturing | 2025-06-04 → 2025-07-08 A (+34d) | 2025-08-27 → 2025-10-06 A (+40d) | 0% → 100% | 50d → none |  |
| PRC-1110 | Turnouts - Manufacturing | 2025-06-12 → 2025-07-14 A (+32d) | 2025-10-30 → 2025-12-29 (+60d) | 0% → 65% | 0d → -42d |  |
| PRC-1160 | Signalling Equipment - Submittal Approval | 2025-06-26 → 2025-07-23 A (+27d) | 2025-07-09 → 2025-08-06 A (+28d) | 0% → 100% | 0d → none |  |
| PRC-1230 | OCS Materials - Submittal Approval | 2025-06-26 → 2025-07-27 A (+31d) | 2025-07-09 → 2025-08-07 A (+29d) | 0% → 100% | 45d → none |  |
| PRC-1170 | Signalling Equipment - Purchase Order | 2025-07-10 → 2025-08-07 A (+28d) | 2025-07-16 → 2025-08-14 A (+29d) | 0% → 100% | 0d → none |  |
| PRC-1240 | OCS Materials - Purchase Order | 2025-07-10 → 2025-08-10 A (+31d) | 2025-07-16 → 2025-08-17 A (+32d) | 0% → 100% | 45d → none |  |
| PRC-1180 | Signalling Equipment - Manufacturing | 2025-07-17 → 2025-08-17 A (+31d) | 2026-01-01 → 2026-03-10 (+68d) | 0% → 37% | 0d → -47d |  |
| PRC-1250 | OCS Materials - Manufacturing | 2025-07-17 → 2025-08-18 A (+32d) | 2025-11-06 → 2025-12-14 (+38d) | 0% → 63% | 45d → 19d |  |
| PRC-1330 | Station Steel - FAT | 2025-08-28 → 2025-10-07 A (+40d) | 2025-09-03 → 2025-10-13 A (+40d) | 0% → 100% | 50d → none |  |
| PRC-1340 | Station Steel - Shipping | 2025-09-04 → 2025-10-14 A (+40d) | 2025-10-16 → 2025-11-30 (+45d) | 0% → 38% | 50d → 4d |  |
| PRC-1050 | Rails - FAT | 2025-10-12 → 2025-11-11 (+30d) | 2025-10-16 → 2025-11-17 (+32d) |  | 15d → -7d |  |
| PRC-1060 | Rails - Shipping | 2025-10-19 → 2025-11-18 (+30d) | 2025-11-27 → 2025-12-29 (+32d) |  | 15d → -7d |  |
| PRC-1350 | Station Steel - Delivery to Site | 2025-10-19 → 2025-12-01 (+43d) | 2025-10-30 → 2025-12-14 (+45d) |  | 50d → 4d |  |
| PRC-1260 | OCS Materials - FAT | 2025-11-09 → 2025-12-15 (+36d) | 2025-11-13 → 2025-12-21 (+38d) |  | 45d → 19d |  |
| PRC-1270 | OCS Materials - Shipping | 2025-11-16 → 2025-12-22 (+36d) | 2025-12-25 → 2026-02-01 (+38d) |  | 45d → 19d |  |
| PRC-1070 | Rails - Delivery to Site | 2025-11-30 → 2025-12-30 (+30d) | 2025-12-11 → 2026-01-12 (+32d) |  | 15d → -7d |  |
| PRC-1120 | Turnouts - FAT | 2025-11-02 → 2025-12-30 (+58d) | 2025-11-06 → 2026-01-05 (+60d) |  | 0d → -42d |  |
| PRC-1130 | Turnouts - Shipping | 2025-11-09 → 2026-01-06 (+58d) | 2025-12-18 → 2026-02-16 (+60d) |  | 0d → -42d |  |
| PRC-1280 | OCS Materials - Delivery to Site | 2025-12-28 → 2026-02-02 (+36d) | 2026-01-08 → 2026-02-15 (+38d) |  | 45d → 19d |  |
| PRC-1140 | Turnouts - Delivery to Site | 2025-12-21 → 2026-02-17 (+58d) | 2026-01-01 → 2026-03-03 (+61d) |  | 0d → -42d |  |
| PRC-1190 | Signalling Equipment - FAT | 2026-01-04 → 2026-03-11 (+66d) | 2026-01-08 → 2026-03-17 (+68d) |  | 0d → -47d |  |
| PRC-1200 | Signalling Equipment - Shipping | 2026-01-11 → 2026-03-18 (+66d) | 2026-02-19 → 2026-04-30 (+70d) |  | 0d → -47d |  |
| PRC-1210 | Signalling Equipment - Delivery to Site | 2026-02-23 → 2026-05-03 (+69d) | 2026-03-08 → 2026-05-14 (+67d) |  | 0d → -47d |  |

| ID | Task | Start | Finish | Duration | Complete | Total float | Predecessors | Other |
| --- | --- | --- | --- | --- | --- | --- | --- | --- |
| 2 | **General Materials** |  | 2025-06-25 → 2025-06-10 (-15d) |  |  |  |  |  |
| PRC-1360 | Concrete Supply Contract | 2025-02-02 A | 2025-02-27 → 2025-03-04 A (+5d) |  | 0% → 100% | 155d → none |  |  |
| PRC-1370 | Ballast Supply - Batch 1 | 2025-03-02 → 2025-03-05 A (+3d) | 2025-04-29 → 2025-05-04 A (+5d) |  | 0% → 100% | 195d → none |  |  |
| PRC-1380 | Ballast Supply - Batch 2 | 2025-04-02 → 2025-04-07 A (+5d) | 2025-05-27 → 2025-06-10 A (+14d) |  | 0% → 100% | 175d → none |  |  |
| 3 | **Construction** | 2025-04-23 → 2025-05-18 (+25d) | 2026-05-19 → 2026-07-27 (+69d) |  |  |  |  |  |
| 1 | **Earthworks** | 2025-04-23 → 2025-05-18 (+25d) | 2025-09-17 → 2025-10-20 (+33d) |  |  |  |  |  |
| CNS-1010 | Site Mobilization - Section A | 2025-04-23 → 2025-05-18 A (+25d) | 2025-05-13 → 2025-06-04 A (+22d) |  | 0% → 100% | 55d → none |  |  |
| CNS-1130 | Site Mobilization - Section C | 2025-05-07 → 2025-05-28 A (+21d) | 2025-05-27 → 2025-06-19 A (+23d) |  | 0% → 100% | 45d → none |  |  |
| CNS-1070 | Site Mobilization - Section B | 2025-04-30 → 2025-05-29 A (+29d) | 2025-05-20 → 2025-06-18 A (+29d) |  | 0% → 100% | 50d → none |  |  |
| CNS-1020 | Earthworks - Section A | 2025-05-14 → 2025-06-05 A (+22d) | 2025-09-03 → 2025-10-13 A (+40d) |  | 0% → 100% | 55d → none |  |  |
| CNS-1080 | Earthworks - Section B | 2025-05-21 → 2025-06-19 A (+29d) | 2025-09-10 → 2025-10-20 A (+40d) | 80d → 95d | 0% → 100% | 50d → none |  | resources CIV Labour [1280 h] → CIV Labour [1520 h] |
| CNS-1140 | Earthworks - Section C | 2025-05-28 → 2025-06-22 A (+25d) | 2025-09-17 → 2025-10-01 A (+14d) |  | 0% → 100% | 45d → none |  |  |
| CNS-1030 | Drainage & Culverts - Section A | 2025-06-12 → 2025-07-06 A (+24d) | 2025-08-20 → 2025-09-16 A (+27d) |  | 0% → 100% | 95d → none |  |  |
| CNS-1090 | Drainage & Culverts - Section B | 2025-06-19 → 2025-07-17 A (+28d) | 2025-08-27 → 2025-09-29 A (+33d) |  | 0% → 100% | 90d → none |  |  |
| CNS-1150 | Drainage & Culverts - Section C | 2025-06-26 → 2025-07-20 A (+24d) | 2025-09-03 → 2025-09-25 A (+22d) |  | 0% → 100% | 85d → none |  |  |
| 2 | **Track Works** | 2025-09-04 → 2025-10-02 (+28d) | 2026-03-31 → 2026-06-01 (+62d) |  |  |  |  |  |
| CNS-1160 | Sub-ballast - Section C | 2025-09-18 → 2025-10-02 A (+14d) | 2025-10-30 → 2025-11-16 (+17d) |  | 0% → 66% | 45d → 34d |  |  |
| CNS-1040 | Sub-ballast - Section A | 2025-09-04 → 2025-10-14 A (+40d) | 2025-10-16 → 2025-11-24 (+39d) |  | 0% → 43% | 55d → 28d |  |  |
| CNS-1100 | Sub-ballast - Section B | 2025-09-11 → 2025-10-21 A (+40d) | 2025-10-23 → 2025-11-26 (+34d) |  | 0% → 30% | 50d → 26d | CNS-1080, CNS-1090 FF → CNS-1080, CNS-1090 FF, CNS-1995 |  |
| CNS-1050 | Track Installation - Section A | 2026-01-04 → 2026-03-04 (+59d) | 2026-03-31 → 2026-06-01 (+62d) |  |  | 0d → -42d |  |  |
| CNS-1110 | Track Installation - Section B | 2026-01-04 → 2026-03-04 (+59d) | 2026-03-31 → 2026-06-01 (+62d) |  |  | 0d → -42d |  |  |
| CNS-1170 | Track Installation - Section C | 2026-01-04 → 2026-03-04 (+59d) | 2026-03-31 → 2026-06-01 (+62d) |  |  | 0d → -42d |  |  |
| CNS-1060 | Ballast & Tamping - Section A | 2026-02-01 → 2026-04-05 (+63d) | 2026-03-15 → 2026-05-14 (+60d) |  |  | 0d → -42d |  |  |
| CNS-1120 | Ballast & Tamping - Section B | 2026-02-01 → 2026-04-05 (+63d) | 2026-03-15 → 2026-05-14 (+60d) |  |  | 0d → -42d |  |  |
| CNS-1180 | Ballast & Tamping - Section C | 2026-02-01 → 2026-04-05 (+63d) | 2026-03-15 → 2026-05-14 (+60d) |  |  | 0d → -42d | CNS-1170 SS+20d, Ballast Supply - Batch 3 → CNS-1170 SS+20d, PRC-1380 |  |
| 3 | **Stations & Structures** | 2025-06-12 → 2025-07-03 (+21d) | 2026-05-19 → 2026-07-19 (+61d) |  |  |  |  |  |
| CNS-1290 | Foundations - South Station | 2025-06-12 → 2025-07-03 A (+21d) | 2025-08-06 → 2025-09-03 A (+28d) |  | 0% → 100% | 110d → none |  |  |
| CNS-1240 | Foundations - Central Station | 2025-06-12 → 2025-07-07 A (+25d) | 2025-08-06 → 2025-08-27 A (+21d) |  | 0% → 100% | 110d → none |  |  |
| CNS-1190 | Foundations - North Station | 2025-06-12 → 2025-07-14 A (+32d) | 2025-08-06 → 2025-09-02 A (+27d) |  | 0% → 100% | 110d → none |  |  |
| CNS-1200 | Station Structure - North Station | 2025-11-02 → 2025-12-15 (+43d) | 2026-02-19 → 2026-04-08 (+48d) |  |  | 50d → 19d |  |  |
| CNS-1300 | Station Structure - South Station | 2025-11-02 → 2025-12-15 (+43d) | 2026-02-19 → 2026-04-08 (+48d) |  |  | 50d → 19d |  |  |
| CNS-1220 | MEP Installation - North Station | 2025-12-28 → 2026-02-09 (+43d) | 2026-03-24 → 2026-05-06 (+43d) |  |  | 80d → 49d |  |  |
| CNS-1320 | MEP Installation - South Station | 2025-12-28 → 2026-02-09 (+43d) | 2026-03-24 → 2026-05-06 (+43d) |  |  | 80d → 49d |  |  |
| CNS-1210 | Architectural Finishes - North Station | 2026-02-23 → 2026-04-09 (+45d) | 2026-05-19 → 2026-07-05 (+47d) |  |  | 50d → 19d |  |  |
| CNS-1310 | Architectural Finishes - South Station | 2026-02-23 → 2026-04-09 (+45d) | 2026-05-19 → 2026-07-05 (+47d) |  |  | 50d → 19d |  |  |
| CNS-1270 | MEP Installation - Central Station | 2025-12-28 → 2026-04-16 (+109d) | 2026-03-24 → 2026-07-12 (+110d) |  |  | 80d → 4d | Station Structure - Central Station SS+40d → CNS-1252 SS+40d |  |
| CNS-1260 | Architectural Finishes - Central Station | 2026-02-23 → 2026-04-23 (+59d) | 2026-05-19 → 2026-07-19 (+61d) |  |  | 50d → 9d | Station Structure - Central Station → CNS-1252 |  |
| CNS-1230 | Platform Finishes - North Station | 2026-03-25 → 2026-05-07 (+43d) | 2026-05-05 → 2026-06-21 (+47d) |  |  | 50d → 19d |  |  |
| CNS-1330 | Platform Finishes - South Station | 2026-03-25 → 2026-05-07 (+43d) | 2026-05-05 → 2026-06-21 (+47d) |  |  | 50d → 19d |  |  |
| CNS-1280 | Platform Finishes - Central Station | 2026-03-25 → 2026-06-01 (+68d) | 2026-05-05 → 2026-07-12 (+68d) |  |  | 50d → 4d |  |  |
| 4 | **Systems Installation** | 2026-02-15 → 2026-04-19 (+63d) | 2026-05-19 → 2026-07-27 (+69d) |  |  |  |  |  |
| CNS-1360 | Telecom Installation - Section A | 2026-02-15 → 2026-04-19 (+63d) | 2026-04-14 → 2026-06-15 (+62d) |  |  | 25d → -17d |  |  |
| CNS-1390 | Telecom Installation - Section B | 2026-02-15 → 2026-04-19 (+63d) | 2026-04-14 → 2026-06-15 (+62d) |  |  | 25d → -17d |  |  |
| CNS-1420 | Telecom Installation - Section C | 2026-02-15 → 2026-04-19 (+63d) | 2026-04-14 → 2026-06-15 (+62d) |  |  | 25d → -17d |  |  |
| CNS-1340 | OCS Installation - Section A | 2026-03-16 → 2026-05-17 (+62d) | 2026-05-19 → 2026-07-20 (+62d) |  |  | 0d → -42d |  |  |
| CNS-1350 | Signalling Installation - Section A | 2026-03-09 → 2026-05-17 (+69d) | 2026-05-19 → 2026-07-27 (+69d) |  |  | 0d → -47d |  |  |
| CNS-1370 | OCS Installation - Section B | 2026-03-16 → 2026-05-17 (+62d) | 2026-05-19 → 2026-07-20 (+62d) |  |  | 0d → -42d |  |  |
| CNS-1380 | Signalling Installation - Section B | 2026-03-09 → 2026-05-17 (+69d) | 2026-05-19 → 2026-07-27 (+69d) |  |  | 0d → -47d |  |  |
| CNS-1400 | OCS Installation - Section C | 2026-03-16 → 2026-05-17 (+62d) | 2026-05-19 → 2026-07-20 (+62d) |  |  | 0d → -42d |  |  |
| CNS-1410 | Signalling Installation - Section C | 2026-03-09 → 2026-05-17 (+69d) | 2026-05-19 → 2026-07-27 (+69d) |  |  | 0d → -47d |  |  |
| 4 | **Testing & Commissioning** | 2026-05-20 → 2026-07-28 (+69d) | 2026-11-15 → 2027-01-19 (+65d) |  |  |  |  |  |
| TST-1010 | System Testing - Section A | 2026-05-20 → 2026-07-28 (+69d) | 2026-07-02 → 2026-09-07 (+67d) |  |  | 0d → -47d |  |  |
| TST-1020 | System Testing - Section B | 2026-05-20 → 2026-07-28 (+69d) | 2026-07-02 → 2026-09-07 (+67d) |  |  | 0d → -47d |  |  |
| TST-1030 | System Testing - Section C | 2026-05-20 → 2026-07-28 (+69d) | 2026-07-02 → 2026-09-07 (+67d) |  |  | 0d → -47d |  |  |
| TST-1040 | Energization | 2026-07-05 → 2026-09-08 (+65d) | 2026-07-16 → 2026-09-21 (+67d) |  |  | 0d → -47d |  |  |
| TST-1050 | Integration Testing | 2026-07-19 → 2026-09-22 (+65d) | 2026-09-10 → 2026-11-17 (+68d) |  |  | 0d → -47d |  |  |
| TST-1060 | Trial Running | 2026-09-13 → 2026-11-18 (+66d) | 2026-11-15 → 2027-01-19 (+65d) |  |  | 0d → -47d |  |  |
| 5 | **Handover** | 2026-03-16 → 2026-05-17 (+62d) | 2026-11-15 → 2027-01-19 (+65d) |  |  |  |  |  |
| HND-1010 | As-built Documentation | 2026-03-16 → 2026-05-17 (+62d) | 2026-05-12 → 2026-07-13 (+62d) |  |  | 130d → 88d |  |  |
| HND-1020 | O&M Manuals & Training | 2026-08-02 → 2026-10-07 (+66d) | 2026-09-10 → 2026-11-17 (+68d) |  |  | 45d → -2d |  |  |
| HND-1030 | Provisional Acceptance (PAC) | 2026-11-15 → 2027-01-19 (+65d) | 2026-11-15 → 2027-01-19 (+65d) |  |  | 0d → -47d |  |  |
